# ProjectPlan

How a schedule from MS Project changed from version to version. A marks actual dates.

## Version 1 (saved 2007-10-12)

Note of the change: Initial check in of the project management plan

| ID | WBS | Task | Duration | Start | Finish | Predecessors | Complete | Total float | Constraint |
| --- | --- | --- | --- | --- | --- | --- | --- | --- | --- |
| 1 |  | WebSSO 0.5 Development | 65d | 2007-09-03 | 2007-11-24 |  |  | 5d | start no earlier than 2007-09-03 |
| 2 | 2 | **Requirements analysis** | 24d | 2007-09-03 A | 2007-10-03 A |  | 100% |  |  |
| 3 |  | Gather requirements from CCTS | 14d | 2007-09-03 A | 2007-09-19 A |  | 100% |  | start no earlier than 2007-09-03 |
| 4 |  | Review requirements | 9d | 2007-09-19 A | 2007-10-01 A | 3 | 100% |  | finish no earlier than 2007-09-17 |
| 5 |  | Finalize draft requirements | 7d | 2007-09-25 A | 2007-10-03 A | 4 | 100% |  | finish no earlier than 2007-09-24 |
| 6 | 3 | **Develop scope document** | 11d | 2007-09-28 A | 2007-10-12 |  | 73% | 39d |  |
| 7 |  | Create draft scope document | 6d | 2007-09-28 A | 2007-10-05 A | 4 | 100% |  | start no earlier than 2007-09-17 |
| 8 |  | Review draft scope document | 2d | 2007-10-06 A | 2007-10-09 A | 7 | 100% |  |  |
| 9 |  | Finalize scope document/requirements | 3d | 2007-10-10 | 2007-10-12 | 8 |  | 39d | finish no earlier than 2007-10-12 |
| 10 | 4 | **Develop design** | 21d | 2007-10-11 | 2007-11-05 |  |  | 3d |  |
| 11 |  | Develop a draft deign document | 9d | 2007-10-11 | 2007-10-21 | 8 |  | 3d | start no earlier than 2007-10-11 |
| 12 |  | Review design | 5d | 2007-10-22 | 2007-10-26 | 11 |  | 3d | start no earlier than 2007-10-22 |
| 13 |  | Develop draft interface APIs | 5d | 2007-10-22 | 2007-10-26 | 11 |  | 20d | finish no earlier than 2007-10-22 |
| 14 |  | Finalize design and document | 2d | 2007-10-27 | 2007-10-29 | 12 |  | 3d | start no earlier than 2007-10-27 |
| 15 |  | Review interface APIs | 5d | 2007-10-27 | 2007-11-01 | 13 |  | 20d | finish no earlier than 2007-10-26 |
| 16 |  | Finalize interface APIs | 2d | 2007-11-02 | 2007-11-05 | 15 |  | 20d |  |
| 17 | 5 | **Implementation Development** | 22d | 2007-10-30 | 2007-11-27 |  |  | 1d |  |
| 18 |  | Implementation | 22d | 2007-10-30 | 2007-11-27 | 14 |  | 3d | finish no earlier than 2007-11-23 |
| 19 |  | Integration and Test | 18d | 2007-10-31 | 2007-11-23 |  |  | 0d | finish no earlier than 2007-11-23 |
| 20 | 6 | **Documentation** | 15d | 2007-11-05 | 2007-11-23 |  |  | 6d |  |
| 21 |  | Release | 15d | 2007-11-05 | 2007-11-23 |  |  | 6d | finish no earlier than 2007-11-23 |
| 22 |  | Training | 15d | 2007-11-05 | 2007-11-23 |  |  | 6d | finish no earlier than 2007-11-23 |
| 23 |  | Build and Deployment | 5d | 2007-11-24 | 2007-11-29 | 19 |  | 0d | start no earlier than 2007-11-24 |
| 24 |  | WebSSO 0.5 release | 1d | 2007-11-30 | 2007-11-30 | 23 |  | 0d | finish no earlier than 2007-11-30 |

## Version 2 (saved 2007-10-25)

Note of the change: Change project status

Last finish stays 2007-11-30. Complete tasks 5 → 7.

Changed:

| ID | Task | Start | Finish | Complete | Total float |
| --- | --- | --- | --- | --- | --- |
| 6 | **Develop scope document** |  | 2007-10-12 A | 73% → 100% | 39d → none |
| 9 | Finalize scope document/requirements | 2007-10-10 A | 2007-10-12 A | 0% → 100% | 39d → none |
| 10 | **Develop design** | 2007-10-11 A |  | 0% → 45% | 3d → 20d |
| 11 | Develop a draft deign document | 2007-10-11 A | 2007-10-21 A | 0% → 100% | 3d → none |
| 12 | Review design | 2007-10-22 A |  | 0% → 50% |  |
| 13 | Develop draft interface APIs | 2007-10-22 A |  | 0% → 20% |  |

## Version 3 (saved 2007-11-29)

Note of the change: Update the project status.

Last finish stays 2007-11-30. Complete tasks 7 → 11.

Changed:

| ID | Task | Start | Finish | Complete | Total float |
| --- | --- | --- | --- | --- | --- |
| 10 | **Develop design** |  |  | 45% → 99% |  |
| 12 | Review design |  | 2007-10-26 A | 50% → 100% | 3d → none |
| 13 | Develop draft interface APIs |  | 2007-10-26 A | 20% → 100% | 20d → none |
| 14 | Finalize design and document | 2007-10-27 A | 2007-10-29 A | 0% → 100% | 3d → none |
| 15 | Review interface APIs | 2007-10-27 A | 2007-11-01 A | 0% → 100% | 20d → none |
| 16 | Finalize interface APIs | 2007-11-02 A |  | 0% → 90% |  |
| 17 | **Implementation Development** | 2007-10-30 A |  | 0% → 71% | 1d → 3d |
| 18 | Implementation | 2007-10-30 A |  | 0% → 80% |  |
| 19 | Integration and Test | 2007-10-31 A |  | 0% → 60% |  |

## Version 4 (saved 2007-12-03)

Note of the change: Update the completion % for implementation and integration testing.

Last finish stays 2007-11-30.

Changed:

| ID | Task | Complete |
| --- | --- | --- |
| 17 | **Implementation Development** | 71% → 86% |
| 18 | Implementation | 80% → 90% |
| 19 | Integration and Test | 60% → 80% |
