How a schedule from MS Project MPX changed from version to version. A marks actual dates.

## Version 1 (saved 2011-11-15)

Note of the change: git-svn-id: https://ncisvn.nci.nih.gov/svn/cagrid/trunk/cagrid/Documentation@18376 dd7b0c16-3c94-4492-92de-414b6a06f0b1

| ID | WBS | Task | Duration | Start | Predecessors | Complete | Constraint |
| --- | --- | --- | --- | --- | --- | --- | --- |
| 1 | 1 | **caGrid Release Plan** | 374.83h | 2011-11-16 A |  | 11% |  |
| 2 | 1.1 | **1.4.1 Release** | 167.50h | 2011-11-16 A |  | 26% |  |
| 3 | 1.1.1 | **Development Tasks** | 167.50h | 2011-11-16 A |  | 26% |  |
| 4 |  | Organize tasks in JIRA | 13.33h | 2011-11-16 A |  |  |  |
| 5 |  | Create 1.4.1 Branch from 1.4 branch in SVN | 0.83h | 2011-11-17 A | 4 |  |  |
| 6 |  | Create CI builds for 1.4.1 | 6.67h | 2011-11-17 A | 5 |  |  |
| 7 |  | Update version numbers to 1.4.1 | 13.33h | 2011-11-18 A | 6 |  |  |
| 8 |  | NCI Production LDAP Authentication Service allows user IDs with garbage appended | 26.67h | 2011-11-22 A | 7 | 90% | start no earlier than 2011-11-14 |
| 9 |  | Update authentication Service to include configurable lockout settings | 66.67h | 2011-11-25 A | 8 | 80% |  |
| 10 |  | Add a view for locked out accounts to GAARDS-UI | 13.33h | 2011-12-07 A | 9 |  |  |
| 11 |  | Merge caCORE SDK 4.4 data service style project into caGrid 1.4.1 branch | 26.67h | 2011-12-09 A | 9 |  |  |
| 12 |  | Create upgraders for all services, extensions, and data service styles | 50.00h | 2011-11-25 A |  |  |  |
| 13 | 1.2 | **Documentation** | 50.00h | 2011-12-14 A |  |  |  |
| 14 |  | Update all necessary documentation and guides | 50.00h | 2011-12-14 A |  |  | start no earlier than 2011-11-04 |
| 15 | 1.3 | **Testing** | 66.67h | 2011-12-23 A |  |  |  |
| 16 |  | Unit Testing | 33.33h | 2011-12-23 A |  |  | start no earlier than 2011-11-04 |
| 17 |  | Integration Testing | 33.33h | 2011-12-29 A |  |  | start no earlier than 2011-11-04 |
| 18 | 1.4 | **App Scan** | 28.00h | 2012-01-04 A | 15 |  |  |
| 19 |  | Perform App Scan Process | 8.00h | 2012-01-04 A |  |  | start no earlier than 2011-11-04 |
| 20 |  | Fix App Scan issues | 20.00h | 2012-01-05 A | 19 |  | start no earlier than 2011-11-04 |
| 21 | 1.5 | **Deployment** | 62.67h | 2012-01-10 A | 18 |  |  |
| 22 |  | Move to Training and test | 16.00h | 2012-01-10 A |  |  | start no earlier than 2011-11-04 |
| 23 |  | Move to QA and test | 24.00h | 2012-01-12 A | 22 |  | start no earlier than 2011-11-04 |
| 24 |  | Move to Stage and test | 16.00h | 2012-01-17 A | 23 |  | start no earlier than 2011-11-04 |
| 25 |  | Move to Prod and test | 6.67h | 2012-01-19 A | 24 |  | start no earlier than 2011-11-04 |

## Version 2 (saved 2011-11-16)

Note of the change: git-svn-id: https://ncisvn.nci.nih.gov/svn/cagrid/trunk/cagrid/Documentation@18377 dd7b0c16-3c94-4492-92de-414b6a06f0b1

Changed:

| ID | Task | Start | Duration | Other |
| --- | --- | --- | --- | --- |
| 1 | **caGrid Release Plan** |  | 374.83h → 384.17h |  |
| 16 | Additional Unit Testing |  |  | was named Unit Testing |
| 17 | Additional Integration Testing |  |  | was named Integration Testing |
| 18 | **App Scan** |  | 28.00h → 37.33h |  |
| 19 | Perform App Scan Process |  | 8.00h → 24.00h |  |
| 20 | Fix App Scan issues | 2012-01-05 A → 2012-01-09 A (+4d) | 20.00h → 13.33h |  |
| 21 | **Deployment** | 2012-01-10 A → 2012-01-11 A (+1d) |  |  |
| 22 | Move to Training and test | 2012-01-10 A → 2012-01-11 A (+1d) |  |  |
| 23 | Move to QA and test | 2012-01-12 A → 2012-01-13 A (+1d) |  |  |
| 24 | Move to Stage and test | 2012-01-17 A → 2012-01-18 A (+1d) |  |  |
| 25 | Move to Prod and test | 2012-01-19 A → 2012-01-20 A (+1d) |  |  |
