# caGrid Development

How a schedule from MS Project MPX changed from version to version. A marks actual dates.

## Version 1 (saved 2011-11-03)

Note of the change: git-svn-id: https://ncisvn.nci.nih.gov/svn/cagrid/trunk/cagrid/Documentation@18336 dd7b0c16-3c94-4492-92de-414b6a06f0b1

| ID | WBS | Task | Duration | Start | Predecessors | Complete | Constraint |
| --- | --- | --- | --- | --- | --- | --- | --- |
| 1 | 1 | **caGrid Release Plan** | 133.34h | 2011-11-04 A |  | 5% |  |
| 2 | 1.1 | **Iteration 1** | 93.34h | 2011-11-04 A |  | 12% |  |
| 3 | 1.1.1 | **Bug Fixes** | 93.34h | 2011-11-04 A |  | 34% |  |
| 4 |  | NCI Production LDAP Authentication Service allows user IDs with garbage appended | 26.67h | 2011-11-04 A |  |  | start no earlier than 2011-11-04 |
| 5 |  | Update authentication Service to include configurable lockout settings | 66.67h | 2011-11-09 A | 4 | 80% |  |
| 6 |  | Data Service Upgrader for 1.4 and 1.5 to 1.6 | 20.00h | 2011-11-04 A |  |  | start no earlier than 2011-11-04 |
| 7 |  | Merge caCORE SDK 4.4 data service style project into caGrid 1.5 and trunk | 26.67h | 2011-11-04 A |  | 62% |  |
| 8 |  | Technical Status Report for October 2011 | 6.67h | 2011-11-04 A |  |  | start no earlier than 2011-11-04 |
| 9 |  | Technical Project Plan Update for October 2011 | 13.33h | 2011-11-04 A | 8 |  | start no earlier than 2011-11-04 |
| 10 |  | caCore SDK 4.x data service styles need upgraders to handle swapping out Spring versions for SHA2 support | 26.67h | 2011-11-09 A | 7 |  | start no earlier than 2011-11-04 |
| 11 | 1.1.2 | **Documentation** | 50.00h | 2011-11-04 A |  |  |  |
| 12 |  | Update all necessary documentation and guides | 50.00h | 2011-11-04 A |  |  | start no earlier than 2011-11-04 |
| 13 | 1.1.3 | **Testing** | 33.33h | 2011-11-04 A |  |  |  |
| 14 |  | Unit Testing | 33.33h | 2011-11-04 A |  |  | start no earlier than 2011-11-04 |
| 15 |  | Integration Testing | 33.33h | 2011-11-04 A |  |  | start no earlier than 2011-11-04 |
| 16 | 1.1.4 | **App Scan** | 28.00h | 2011-11-04 A |  |  |  |
| 17 |  | Perform App Scan Process | 8.00h | 2011-11-04 A |  |  | start no earlier than 2011-11-04 |
| 18 |  | Fix App Scan issues | 20.00h | 2011-11-07 A | 17 |  | start no earlier than 2011-11-04 |
| 19 | 1.1.5 | **Deployment** | 62.67h | 2011-11-04 A |  |  |  |
| 20 |  | Move to Training and test | 16.00h | 2011-11-04 A |  |  | start no earlier than 2011-11-04 |
| 21 |  | Move to QA and test | 24.00h | 2011-11-08 A | 20 |  | start no earlier than 2011-11-04 |
| 22 |  | Move to Stage and test | 16.00h | 2011-11-11 A | 21 |  | start no earlier than 2011-11-04 |
| 23 |  | Move to Prod and test | 6.67h | 2011-11-15 A | 22 |  | start no earlier than 2011-11-04 |
| 24 | 1.2 | **Iteration 2** | 133.34h | 2011-11-04 A |  |  |  |
| 25 | 1.2.1 | **Bug Fixes** | 133.34h | 2011-11-04 A |  |  |  |
| 26 |  | caGrid w/ SHA2 release | 133.34h | 2011-11-04 A |  |  | start no earlier than 2011-11-04 |
| 27 |  | SHA-2 support | 8.00h | 2011-11-04 A |  |  | start no earlier than 2011-11-04 |
| 28 |  | Begin 1.5 Production Install | 6.67h | 2011-11-04 A |  |  | start no earlier than 2011-11-04 |
| 29 | 1.2.2 | **Documentation** | 50.00h | 2011-11-04 A |  |  |  |
| 30 |  | Update all necessary documentation and guides | 50.00h | 2011-11-04 A |  |  | start no earlier than 2011-11-04 |
| 31 |  | Create new install documentation | 40.00h | 2011-11-04 A |  |  | start no earlier than 2011-11-04 |
| 32 | 1.2.3 | **Testing** | 66.67h | 2011-11-04 A |  |  |  |
| 33 |  | Unit Testing | 66.67h | 2011-11-04 A |  |  | start no earlier than 2011-11-04 |
| 34 |  | Integration Testing | 66.67h | 2011-11-04 A |  |  | start no earlier than 2011-11-04 |
| 35 | 1.2.4 | **App Scan** | 8.00h | 2011-11-04 A |  |  |  |
| 36 |  | Perform App Scan Process | 8.00h | 2011-11-04 A |  |  | start no earlier than 2011-11-04 |
| 37 |  | Fix App Scan issues | 8.00h | 2011-11-04 A |  |  | start no earlier than 2011-11-04 |
| 38 | 1.2.5 | **Deployment** | 8.00h | 2011-11-04 A |  |  |  |
| 39 |  | Move to Training and test | 8.00h | 2011-11-04 A |  |  | start no earlier than 2011-11-04 |
| 40 |  | Move to QA and test | 8.00h | 2011-11-04 A |  |  | start no earlier than 2011-11-04 |
| 41 |  | Move to Stage and test | 8.00h | 2011-11-04 A |  |  | start no earlier than 2011-11-04 |
| 42 |  | Move to Prod and test | 8.00h | 2011-11-04 A |  |  | start no earlier than 2011-11-04 |
| 43 | 1.3 | **Iteration 3** | 8.00h | 2011-11-04 A |  |  |  |
| 44 | 1.3.1 | **Bug Fixes** | 8.00h | 2011-11-04 A |  |  |  |
| 45 |  | Upgraders for SDK 4.3 data services from 1.5 and 1.4 to 1.6 | 8.00h | 2011-11-04 A |  |  | start no earlier than 2011-11-04 |
| 46 |  | Technical Status Report | 8.00h | 2011-11-04 A |  |  | start no earlier than 2011-11-04 |
| 47 |  | Technical Project Plan | 8.00h | 2011-11-04 A |  |  | start no earlier than 2011-11-04 |
| 48 |  | Plan for a 1.4.1 release to follow 1.4 that adds Tomcat 6 & JBoss 5 support | 8.00h | 2011-11-04 A |  |  | start no earlier than 2011-11-04 |
| 49 |  | Fix projects in caGrid to use WS-Core artifacts from Ivy rather than relying on GLOBUS_LOCATION | 8.00h | 2011-11-04 A |  |  | start no earlier than 2011-11-04 |
| 50 |  | Figure out at what point the SDK data service is failing to serialize results | 8.00h | 2011-11-04 A |  |  | start no earlier than 2011-11-04 |
| 51 |  | FQP performance and scalability enhancements | 8.00h | 2011-11-04 A |  |  | start no earlier than 2011-11-04 |
| 52 |  | Possible bug: Missing jars when producing caCORE SDK 4.1 backed local grid services | 8.00h | 2011-11-04 A |  |  | start no earlier than 2011-11-04 |
| 53 |  | GAARDS UI Target Grid selector needs completely redone | 8.00h | 2011-11-04 A |  |  | start no earlier than 2011-11-04 |
| 54 |  | Error connecting to GridGrouper with an authenticated account | 8.00h | 2011-11-04 A |  |  | start no earlier than 2011-11-04 |
| 55 |  | Identify all secure services on the Production Grid | 8.00h | 2011-11-04 A |  |  | start no earlier than 2011-11-04 |
| 56 |  | Identify all secure services on the Training Grid | 8.00h | 2011-11-04 A |  |  | start no earlier than 2011-11-04 |
| 57 |  | A way to add new target grids to the top-level configure target | 8.00h | 2011-11-04 A |  |  | start no earlier than 2011-11-04 |
| 58 |  | Create new installation documentation | 8.00h | 2011-11-04 A |  |  | start no earlier than 2011-11-04 |
| 59 |  | Create upgrade documentation | 8.00h | 2011-11-04 A |  |  | start no earlier than 2011-11-04 |
| 60 |  | Inconsistent user and host search operation behavior | 8.00h | 2011-11-04 A |  |  | start no earlier than 2011-11-04 |
| 61 |  | Breakup the ws-core ivy module to have finer grain configurations | 8.00h | 2011-11-04 A |  |  | start no earlier than 2011-11-04 |
| 62 |  | Support Viewing/Signing Host Certificate Policies in GAARDS UI | 8.00h | 2011-11-04 A |  |  | start no earlier than 2011-11-04 |
| 63 |  | Implement support for viewing and digitally signing host policy agreement during host certificate request | 8.00h | 2011-11-04 A |  |  | start no earlier than 2011-11-04 |
| 64 |  | Modify build to have a resolver chain specific for target grids, and allow working with external grids | 8.00h | 2011-11-04 A |  |  | start no earlier than 2011-11-04 |
| 65 |  | Add support in installer to work with a list of supported target grid repositories | 8.00h | 2011-11-04 A |  |  | start no earlier than 2011-11-04 |
| 66 | 1.3.2 | **Documentation** | 8.00h | 2011-11-04 A |  |  |  |
| 67 |  | Update all necessary documentation and guides | 8.00h | 2011-11-04 A |  |  | start no earlier than 2011-11-04 |
| 68 | 1.3.3 | **Testing** | 8.00h | 2011-11-04 A |  |  |  |
| 69 |  | Unit Testing | 8.00h | 2011-11-04 A |  |  | start no earlier than 2011-11-04 |
| 70 |  | Integration Testing | 8.00h | 2011-11-04 A |  |  | start no earlier than 2011-11-04 |

| ID | WBS | Task | Duration | Start | Constraint |
| --- | --- | --- | --- | --- | --- |
| 71 | 1.3.4 | **App Scan** | 8.00h | 2011-11-04 A |  |
| 72 |  | Perform App Scan Process | 8.00h | 2011-11-04 A | start no earlier than 2011-11-04 |
| 73 |  | Fix App Scan issues | 8.00h | 2011-11-04 A | start no earlier than 2011-11-04 |
| 74 | 1.3.5 | **Deployment** | 8.00h | 2011-11-04 A |  |
| 75 |  | Move to Training and test | 8.00h | 2011-11-04 A | start no earlier than 2011-11-04 |
| 76 |  | Move to QA and test | 8.00h | 2011-11-04 A | start no earlier than 2011-11-04 |
| 77 |  | Move to Stage and test | 8.00h | 2011-11-04 A | start no earlier than 2011-11-04 |
| 78 |  | Move to Prod and test | 8.00h | 2011-11-04 A | start no earlier than 2011-11-04 |

## Version 2 (saved 2011-11-03)

Note of the change: git-svn-id: https://ncisvn.nci.nih.gov/svn/cagrid/trunk/cagrid/Documentation@18337 dd7b0c16-3c94-4492-92de-414b6a06f0b1

Changed:

| ID | Task | Start | Duration | Predecessors |
| --- | --- | --- | --- | --- |
| 1 | **caGrid Release Plan** |  | 133.34h → 632.03h |  |
| 2 | **Iteration 1** |  | 93.34h → 327.35h |  |
| 3 | **Bug Fixes** |  | 93.34h → 120.01h |  |
| 6 | Data Service Upgrader for 1.4 and 1.5 to 1.6 | 2011-11-04 A → 2011-11-09 A (+5d) |  |  |
| 7 | Merge caCORE SDK 4.4 data service style project into caGrid 1.5 and trunk | 2011-11-04 A → 2011-11-09 A (+5d) |  | none → 9 |
| 10 | caCore SDK 4.x data service styles need upgraders to handle swapping out Spring versions for SHA2 support | 2011-11-09 A → 2011-11-21 A (+12d) |  |  |
| 11 | **Documentation** | 2011-11-04 A → 2011-11-25 A (+21d) |  |  |
| 12 | Update all necessary documentation and guides | 2011-11-04 A → 2011-11-25 A (+21d) |  |  |
| 13 | **Testing** | 2011-11-04 A → 2011-12-05 A (+31d) | 33.33h → 66.67h |  |
| 14 | Unit Testing | 2011-11-04 A → 2011-12-05 A (+31d) |  |  |
| 15 | Integration Testing | 2011-11-04 A → 2011-12-09 A (+35d) |  |  |
| 16 | **App Scan** | 2011-11-04 A → 2011-12-15 A (+41d) |  | none → 13 |
| 17 | Perform App Scan Process | 2011-11-04 A → 2011-12-15 A (+41d) |  |  |
| 18 | Fix App Scan issues | 2011-11-07 A → 2011-12-16 A (+39d) |  |  |
| 19 | **Deployment** | 2011-11-04 A → 2011-12-21 A (+47d) |  | none → 16 |
| 20 | Move to Training and test | 2011-11-04 A → 2011-12-21 A (+47d) |  |  |
| 21 | Move to QA and test | 2011-11-08 A → 2011-12-23 A (+45d) |  |  |
| 22 | Move to Stage and test | 2011-11-11 A → 2011-12-28 A (+47d) |  |  |
| 23 | Move to Prod and test | 2011-11-15 A → 2011-12-30 A (+45d) |  |  |
| 24 | **Iteration 2** | 2011-11-04 A → 2011-12-30 A (+56d) | 133.34h → 296.68h | none → 2 |
| 25 | **Bug Fixes** | 2011-11-04 A → 2011-12-30 A (+56d) | 133.34h → 140.01h |  |
| 26 | caGrid w/ SHA2 release | 2011-11-04 A → 2011-12-30 A (+56d) |  |  |
| 27 | SHA-2 support | 2011-11-04 A → 2011-12-30 A (+56d) |  |  |
| 28 | Begin 1.5 Production Install | 2011-11-04 A → 2012-01-24 A (+81d) |  |  |
| 29 | **Documentation** | 2011-11-04 A → 2012-01-25 A (+82d) | 50.00h → 90.00h |  |
| 30 | Update all necessary documentation and guides | 2011-11-04 A → 2012-01-25 A (+82d) |  |  |
| 31 | Create new install documentation | 2011-11-04 A → 2012-02-02 A (+90d) |  |  |
| 32 | **Testing** | 2011-11-04 A → 2011-12-30 A (+56d) | 66.67h → 296.68h |  |
| 33 | Unit Testing | 2011-11-04 A → 2012-02-09 A (+97d) |  |  |
| 34 | Integration Testing | 2011-11-04 A → 2011-12-30 A (+56d) |  |  |
| 35 | **App Scan** | 2011-11-04 A → 2011-12-30 A (+56d) |  |  |
| 36 | Perform App Scan Process | 2011-11-04 A → 2011-12-30 A (+56d) |  |  |
| 37 | Fix App Scan issues | 2011-11-04 A → 2011-12-30 A (+56d) |  |  |
| 38 | **Deployment** | 2011-11-04 A → 2011-12-30 A (+56d) |  |  |
| 39 | Move to Training and test | 2011-11-04 A → 2011-12-30 A (+56d) |  |  |
| 40 | Move to QA and test | 2011-11-04 A → 2011-12-30 A (+56d) |  |  |
| 41 | Move to Stage and test | 2011-11-04 A → 2011-12-30 A (+56d) |  |  |
| 42 | Move to Prod and test | 2011-11-04 A → 2011-12-30 A (+56d) |  |  |
| 43 | **Iteration 3** | 2011-11-04 A → 2012-02-22 A (+110d) |  | none → 24 |
| 44 | **Bug Fixes** | 2011-11-04 A → 2012-02-22 A (+110d) |  |  |
| 45 | Upgraders for SDK 4.3 data services from 1.5 and 1.4 to 1.6 | 2011-11-04 A → 2012-02-22 A (+110d) |  |  |
| 46 | Technical Status Report | 2011-11-04 A → 2012-02-22 A (+110d) |  |  |
| 47 | Technical Project Plan | 2011-11-04 A → 2012-02-22 A (+110d) |  |  |
| 48 | Plan for a 1.4.1 release to follow 1.4 that adds Tomcat 6 & JBoss 5 support | 2011-11-04 A → 2012-02-22 A (+110d) |  |  |
| 49 | Fix projects in caGrid to use WS-Core artifacts from Ivy rather than relying on GLOBUS_LOCATION | 2011-11-04 A → 2012-02-22 A (+110d) |  |  |
| 50 | Figure out at what point the SDK data service is failing to serialize results | 2011-11-04 A → 2012-02-22 A (+110d) |  |  |
| 51 | FQP performance and scalability enhancements | 2011-11-04 A → 2012-02-22 A (+110d) |  |  |
| 52 | Possible bug: Missing jars when producing caCORE SDK 4.1 backed local grid services | 2011-11-04 A → 2012-02-22 A (+110d) |  |  |
| 53 | GAARDS UI Target Grid selector needs completely redone | 2011-11-04 A → 2012-02-22 A (+110d) |  |  |
| 54 | Error connecting to GridGrouper with an authenticated account | 2011-11-04 A → 2012-02-22 A (+110d) |  |  |
| 55 | Identify all secure services on the Production Grid | 2011-11-04 A → 2012-02-22 A (+110d) |  |  |
| 56 | Identify all secure services on the Training Grid | 2011-11-04 A → 2012-02-22 A (+110d) |  |  |
| 57 | A way to add new target grids to the top-level configure target | 2011-11-04 A → 2012-02-22 A (+110d) |  |  |
| 58 | Create new installation documentation | 2011-11-04 A → 2012-02-22 A (+110d) |  |  |
| 59 | Create upgrade documentation | 2011-11-04 A → 2012-02-22 A (+110d) |  |  |
| 60 | Inconsistent user and host search operation behavior | 2011-11-04 A → 2012-02-22 A (+110d) |  |  |
| 61 | Breakup the ws-core ivy module to have finer grain configurations | 2011-11-04 A → 2012-02-22 A (+110d) |  |  |
| 62 | Support Viewing/Signing Host Certificate Policies in GAARDS UI | 2011-11-04 A → 2012-02-22 A (+110d) |  |  |
| 63 | Implement support for viewing and digitally signing host policy agreement during host certificate request | 2011-11-04 A → 2012-02-22 A (+110d) |  |  |
| 64 | Modify build to have a resolver chain specific for target grids, and allow working with external grids | 2011-11-04 A → 2012-02-22 A (+110d) |  |  |
| 65 | Add support in installer to work with a list of supported target grid repositories | 2011-11-04 A → 2012-02-22 A (+110d) |  |  |
| 66 | **Documentation** | 2011-11-04 A → 2012-02-22 A (+110d) |  |  |
| 67 | Update all necessary documentation and guides | 2011-11-04 A → 2012-02-22 A (+110d) |  |  |
| 68 | **Testing** | 2011-11-04 A → 2012-02-22 A (+110d) |  |  |
| 69 | Unit Testing | 2011-11-04 A → 2012-02-22 A (+110d) |  |  |
| 70 | Integration Testing | 2011-11-04 A → 2012-02-22 A (+110d) |  |  |
| 71 | **App Scan** | 2011-11-04 A → 2012-02-22 A (+110d) |  |  |
| 72 | Perform App Scan Process | 2011-11-04 A → 2012-02-22 A (+110d) |  |  |
| 73 | Fix App Scan issues | 2011-11-04 A → 2012-02-22 A (+110d) |  |  |
| 74 | **Deployment** | 2011-11-04 A → 2012-02-22 A (+110d) |  |  |

| ID | Task | Start |
| --- | --- | --- |
| 75 | Move to Training and test | 2011-11-04 A → 2012-02-22 A (+110d) |
| 76 | Move to QA and test | 2011-11-04 A → 2012-02-22 A (+110d) |
| 77 | Move to Stage and test | 2011-11-04 A → 2012-02-22 A (+110d) |
| 78 | Move to Prod and test | 2011-11-04 A → 2012-02-22 A (+110d) |
