How a schedule from OmniPlan changed from version to version. A marks actual dates.

## Version 1 (saved 2011-11-03)

Note of the change: git-svn-id: https://ncisvn.nci.nih.gov/svn/cagrid/trunk/cagrid/Documentation@18336 dd7b0c16-3c94-4492-92de-414b6a06f0b1

| ID | WBS | Task | Start | Predecessors | Complete |
| --- | --- | --- | --- | --- | --- |
| 1 | 1 | **caGrid Release Plan** | 2001-01-01 |  |  |
| 2 | 1.1 | **Iteration 1** | 2001-01-01 |  |  |
| 3 | 1.1.1 | **Bug Fixes** | 2001-01-01 |  |  |
| 4 |  | NCI Production LDAP Authentication Service allows user IDs with garbage appended |  |  |  |
| 5 |  | Update authentication Service to include configurable lockout settings |  | 4 | 80% |
| 6 |  | Data Service Upgrader for 1.4 and 1.5 to 1.6 |  |  |  |
| 7 |  | Merge caCORE SDK 4.4 data service style project into caGrid 1.5 and trunk |  |  | 62% |
| 8 |  | Technical Status Report for October 2011 |  |  |  |
| 9 |  | Technical Project Plan Update for October 2011 |  | 8 |  |
| 10 |  | caCore SDK 4.x data service styles need upgraders to handle swapping out Spring versions for SHA2 support |  | 7 |  |
| 11 | 1.1.2 | **Documentation** | 2001-01-01 |  |  |
| 12 |  | Update all necessary documentation and guides |  |  |  |
| 13 | 1.1.3 | **Testing** | 2001-01-01 |  |  |
| 14 |  | Unit Testing |  |  |  |
| 15 |  | Integration Testing |  |  |  |
| 16 | 1.1.4 | **App Scan** | 2001-01-01 |  |  |
| 17 |  | Perform App Scan Process |  |  |  |
| 18 |  | Fix App Scan issues |  | 17 |  |
| 19 | 1.1.5 | **Deployment** | 2001-01-01 |  |  |
| 20 |  | Move to Training and test |  |  |  |
| 21 |  | Move to QA and test |  | 20 |  |
| 22 |  | Move to Stage and test |  | 21 |  |
| 23 |  | Move to Prod and test |  | 22 |  |
| 24 | 1.2 | **Iteration 2** | 2001-01-01 |  |  |
| 25 | 1.2.1 | **Bug Fixes** | 2001-01-01 |  |  |
| 26 |  | caGrid w/ SHA2 release |  |  |  |
| 27 |  | SHA-2 support |  |  |  |
| 28 |  | Begin 1.5 Production Install |  |  |  |
| 29 | 1.2.2 | **Documentation** | 2001-01-01 |  |  |
| 30 |  | Update all necessary documentation and guides |  |  |  |
| 31 |  | Create new install documentation |  |  |  |
| 32 | 1.2.3 | **Testing** | 2001-01-01 |  |  |
| 33 |  | Unit Testing |  |  |  |
| 34 |  | Integration Testing |  |  |  |
| 35 | 1.2.4 | **App Scan** | 2001-01-01 |  |  |
| 36 |  | Perform App Scan Process |  |  |  |
| 37 |  | Fix App Scan issues |  |  |  |
| 38 | 1.2.5 | **Deployment** | 2001-01-01 |  |  |
| 39 |  | Move to Training and test |  |  |  |
| 40 |  | Move to QA and test |  |  |  |
| 41 |  | Move to Stage and test |  |  |  |
| 42 |  | Move to Prod and test |  |  |  |
| 43 | 1.3 | **Iteration 3** | 2001-01-01 |  |  |
| 44 | 1.3.1 | **Bug Fixes** | 2001-01-01 |  |  |
| 45 |  | Upgraders for SDK 4.3 data services from 1.5 and 1.4 to 1.6 |  |  |  |
| 46 |  | Technical Status Report |  |  |  |
| 47 |  | Technical Project Plan |  |  |  |
| 48 |  | Plan for a 1.4.1 release to follow 1.4 that adds Tomcat 6 & JBoss 5 support |  |  |  |
| 49 |  | Fix projects in caGrid to use WS-Core artifacts from Ivy rather than relying on GLOBUS_LOCATION |  |  |  |
| 50 |  | Figure out at what point the SDK data service is failing to serialize results |  |  |  |
| 51 |  | FQP performance and scalability enhancements |  |  |  |
| 52 |  | Possible bug: Missing jars when producing caCORE SDK 4.1 backed local grid services |  |  |  |
| 53 |  | GAARDS UI Target Grid selector needs completely redone |  |  |  |
| 54 |  | Error connecting to GridGrouper with an authenticated account |  |  |  |
| 55 |  | Identify all secure services on the Production Grid |  |  |  |
| 56 |  | Identify all secure services on the Training Grid |  |  |  |
| 57 |  | A way to add new target grids to the top-level configure target |  |  |  |
| 58 |  | Create new installation documentation |  |  |  |
| 59 |  | Create upgrade documentation |  |  |  |
| 60 |  | Inconsistent user and host search operation behavior |  |  |  |
| 61 |  | Breakup the ws-core ivy module to have finer grain configurations |  |  |  |
| 62 |  | Support Viewing/Signing Host Certificate Policies in GAARDS UI |  |  |  |
| 63 |  | Implement support for viewing and digitally signing host policy agreement during host certificate request |  |  |  |
| 64 |  | Modify build to have a resolver chain specific for target grids, and allow working with external grids |  |  |  |
| 65 |  | Add support in installer to work with a list of supported target grid repositories |  |  |  |
| 66 | 1.3.2 | **Documentation** | 2001-01-01 |  |  |
| 67 |  | Update all necessary documentation and guides |  |  |  |
| 68 | 1.3.3 | **Testing** | 2001-01-01 |  |  |
| 69 |  | Unit Testing |  |  |  |
| 70 |  | Integration Testing |  |  |  |

| ID | WBS | Task | Start |
| --- | --- | --- | --- |
| 71 | 1.3.4 | **App Scan** | 2001-01-01 |
| 72 |  | Perform App Scan Process |  |
| 73 |  | Fix App Scan issues |  |
| 74 | 1.3.5 | **Deployment** | 2001-01-01 |
| 75 |  | Move to Training and test |  |
| 76 |  | Move to QA and test |  |
| 77 |  | Move to Stage and test |  |
| 78 |  | Move to Prod and test |  |

## Version 2 (saved 2011-11-03)

Note of the change: git-svn-id: https://ncisvn.nci.nih.gov/svn/cagrid/trunk/cagrid/Documentation@18337 dd7b0c16-3c94-4492-92de-414b6a06f0b1

Changed:

| ID | Task | Start | Predecessors |
| --- | --- | --- | --- |
| 1 | **caGrid Release Plan** | 2001-01-01 → none |  |
| 2 | **Iteration 1** | 2001-01-01 → none |  |
| 3 | **Bug Fixes** | 2001-01-01 → none |  |
| 4 | NCI Production LDAP Authentication Service allows user IDs with garbage appended | none → 2011-11-04 |  |
| 5 | Update authentication Service to include configurable lockout settings | none → 2011-11-09 |  |
| 6 | Data Service Upgrader for 1.4 and 1.5 to 1.6 | none → 2011-11-09 |  |
| 7 | Merge caCORE SDK 4.4 data service style project into caGrid 1.5 and trunk | none → 2011-11-09 | none → 9 |
| 8 | Technical Status Report for October 2011 | none → 2011-11-04 |  |
| 9 | Technical Project Plan Update for October 2011 | none → 2011-11-04 |  |
| 10 | caCore SDK 4.x data service styles need upgraders to handle swapping out Spring versions for SHA2 support | none → 2011-11-21 |  |
| 11 | **Documentation** | 2001-01-01 → none |  |
| 12 | Update all necessary documentation and guides | none → 2011-11-25 |  |
| 13 | **Testing** | 2001-01-01 → none |  |
| 14 | Unit Testing | none → 2011-12-05 |  |
| 15 | Integration Testing | none → 2011-12-09 |  |
| 16 | **App Scan** | 2001-01-01 → none | none → 13 |
| 18 | Fix App Scan issues | none → 2011-12-16 |  |
| 19 | **Deployment** | 2001-01-01 → none | none → 16 |
| 23 | Move to Prod and test | none → 2011-12-30 |  |
| 24 | **Iteration 2** | 2001-01-01 → none | none → 2 |
| 25 | **Bug Fixes** | 2001-01-01 → none |  |
| 26 | caGrid w/ SHA2 release | none → 2011-12-30 |  |
| 28 | Begin 1.5 Production Install | none → 2012-01-24 |  |
| 29 | **Documentation** | 2001-01-01 → none |  |
| 30 | Update all necessary documentation and guides | none → 2012-01-25 |  |
| 31 | Create new install documentation | none → 2012-02-02 |  |
| 32 | **Testing** | 2001-01-01 → none |  |
| 33 | Unit Testing | none → 2012-02-09 |  |
| 34 | Integration Testing | none → 2011-12-30 |  |
| 35 | **App Scan** | 2001-01-01 → none |  |
| 38 | **Deployment** | 2001-01-01 → none |  |
| 43 | **Iteration 3** | 2001-01-01 → none | none → 24 |
| 44 | **Bug Fixes** | 2001-01-01 → none |  |
| 66 | **Documentation** | 2001-01-01 → none |  |
| 68 | **Testing** | 2001-01-01 → none |  |
| 71 | **App Scan** | 2001-01-01 → none |  |
| 74 | **Deployment** | 2001-01-01 → none |  |
