# 12ST1121-Technical

How a schedule from MS Project XML changed from version to version. A marks actual dates.

## Version 1 (saved 2013-02-08)

Note of the change: first draft of updated Project Schedule in Merlin2 and Office XML checked in.

| ID | WBS | Task | Duration | Start | Predecessors | Complete | Total float | Constraint |
| --- | --- | --- | --- | --- | --- | --- | --- | --- |
| 1 |  | Operations, Maintenance, and Support | 9mo | 2013-01-22 |  |  | 0d | must finish on 2013-09-30 |
| 2 | 2 | **Iteration 1 - Design Approach** | 0d | 2012-12-14 |  | 3% | 0d | must start on 2013-01-03 |
| 3 |  | Start | 0h | 2013-01-03 A |  | 100% | 0d |  |
| 4 |  | Project Kickoff | 2.5h | 2012-12-14 A | 3 | 100% | 0d |  |
| 5 |  | Mandatory NCI Training and Account Setup | 1.25d | 2012-12-17 A | 4 | 100% | 0d |  |
| 6 |  | Migrate Training Grid to NCI | 45d | 2013-01-03 A | 4 | 7% | 0d |  |
| 7 | 2.5 | **Migrate from Globus to WS* (new tech stack)** | 0d | 2013-01-03 | 4 |  | 0d |  |
| 8 |  | Develop Migration Plan | 3w | 2013-01-03 | 4 |  | 0d |  |
| 9 |  | Design Review Meeting | 2h | 2013-01-24 | 8 |  | 0d |  |
| 10 |  | Begin Development | 1mo | 2013-03-01 | 9 |  | 0d | as late as possible |
| 11 | 2.6 | **Migrate to SHA-2** | 0d | 2013-01-03 | 4 |  | 0d |  |
| 12 |  | Validate Prior SHA-2 work by caGrid team | 1w | 2013-01-03 | 4 |  | 0d |  |
| 13 |  | Design Approach | 1.5w | 2013-01-10 | 12 |  | 0d |  |
| 14 |  | Design Review Meeting | 2h | 2013-01-21 | 13 |  | 0d |  |
| 15 |  | Begin Development | 2mo | 2013-02-01 | 14 |  | 0d | as late as possible |
| 16 | 2.7 | **XACML Authorization** | 0d | 2013-01-10 | 4 |  | 0d |  |
| 17 |  | Design Approach | 2w | 2013-01-10 | 12 |  | 0d |  |
| 18 |  | Design Review Meeting | 2h | 2013-01-24 | 17 |  | 0d |  |
| 19 |  | Migration Plan: caGrid.org to NCI | 2.5d | 2013-01-03 | 4 |  | 0d |  |
| 20 |  | caGrid / NCI Wiki Site | 1w | 2013-01-03 | 4 |  | 0d | finish no later than 2013-01-22 |
| 21 |  | Migration to Open Source Community (OSDI) | 1mo | 2013-01-03 A | 4 | 3% | 0d |  |
| 22 |  | Information Systems Security Plan | 2w | 2013-01-03 | 4 |  | 0d |  |
| 23 |  | Technical Project Plan | 1w | 2013-01-03 A | 4 | 6% | 0d | finish no later than 2013-01-22 |
| 24 |  | Financial Project Plan | 1w | 2013-01-03 | 4 |  | 0d |  |
| 25 |  | Quarterly In-Process Review | 2h | 2013-03-29 | 24, 20, 10, 23, 19, 15, 22 |  | 0d |  |
| 26 |  | End Iteration 1 | 0h | 2013-03-29 | 25 |  | 0d | must finish on 2013-03-29 |
| 27 | 3 | **Iteration 2 - Implementation** | 0d | 2013-04-01 |  |  | 0d | must start on 2013-04-01 |
| 28 |  | Start | 0h | 2013-04-01 | 26 |  | 0d |  |
| 29 | 3.2 | **Migrate from Globus to WS*** | 0d | 2013-04-01 |  |  | 0d |  |
| 30 |  | Software Development | 60d | 2013-04-01 | 10 |  | 0d |  |
| 31 | 3.3 | **Migrate to SHA-2** | 0d | 2013-04-01 |  |  | 0d |  |
| 32 |  | Software Development | 30d | 2013-04-01 | 15 |  | 0d |  |
| 33 | 3.4 | **XACML Authorization** | 0d | 2013-04-01 |  |  | 0d |  |
| 34 |  | Software Development | 30d | 2013-04-01 | 18 |  | 0d |  |
| 35 |  | Simplify use of caGrid in Infrastructure | 20d | 2013-04-01 | 28 |  | 0d |  |
| 36 |  | Quarterly In-Process Review | 2h | 2013-06-24 | 35, 6, 28, 32, 30 |  | 0d |  |
| 37 |  | End Iteration 2 | 0h | 2013-06-24 | 36 |  | 0d |  |
| 38 | 4 | **Iteration 3 - Deployment and Delivery** | 0d | 2013-07-01 |  |  | 0d | must start on 2013-07-01 |
| 39 |  | Start | 0h | 2013-07-01 | 37 |  | 0d |  |
| 40 |  | Operational Readiness Review | 2h | 2013-07-01 | 39 |  | 0d |  |
| 41 | 4.3 | **Migrate to SHA-2** | 0d | 2013-07-01 |  |  | 0d |  |
| 42 |  | Finish Development | 1.5mo | 2013-07-01 | 32 |  | 0d |  |
| 43 | 4.4 | **XACML Authorization** | 0d | 2013-07-01 |  |  | 0d |  |
| 44 |  | Finish Development | 1.5mo | 2013-07-01 | 34 |  | 0d |  |
| 45 |  | Quality Assurance | 3w | 2013-08-12 | 44, 42 |  | 0d |  |
| 46 |  | Documentation | 2w | 2013-08-12 | 44, 30, 42, 26 |  | 0d |  |
| 47 | 4.7 | **Deployment** | 0d | 2013-07-01 |  |  | 0d |  |
| 48 |  | Architecture Review Checklist | 1w | 2013-07-01 | 40 |  | 0d |  |
| 49 |  | Deployment to Stage | 1w | 2013-09-02 | 46, 45 |  | 0d |  |
| 50 |  | Deployment to Production | 1w | 2013-09-09 | 49 |  | 0d |  |
| 51 |  | Quarterly In-Process Review | 2h | 2013-07-01 | 19, 21 |  | 0d |  |
| 52 |  | End Iteration 3 | 0h | 2013-07-01 | 51 |  | 0d |  |
| 53 |  | Project Summary Report | 5d | 2013-10-01 | 1, 52 |  | 0d |  |

## Version 2 (saved 2013-02-15)

Note of the change: updated major tasks, still need to refactor to include QA

Added:

| ID | Task | Duration | Start | Predecessors |
| --- | --- | --- | --- | --- |
| 8 | Investigate WSRF services in CXF | 2w | 2013-01-03 | 4 |
| 17 | XACML Authorization | 1d? | 2013-01-03 | 4 |

Removed: 43 XACML Authorization

Changed:

| ID | Task | Start | Duration | Complete | Predecessors | Other |
| --- | --- | --- | --- | --- | --- | --- |
| 1 | Operations, Maintenance, and Support |  |  |  |  | resources Software Developer → Inventrio Software Developer |
| 2 | **Iteration 1 - Design Approach** |  |  | 3% → 6% |  |  |
| 4 | Project Kickoff |  |  |  |  | resources Software Architect; Project Manager → Inventrio Software Architect; Inventrio Project Manager |
| 6 | Migrate Training Grid to NCI |  |  | 7% → 15% |  | resources Software Architect; Software Developer → Inventrio Software Architect; Inventrio Software Developer |
| 9 | Develop Migration Plan | 2013-01-03 → 2013-01-17 (+14d) | 3w → 2w |  | 4 → 8 | resources Project Manager → Inventrio Project Manager |
| 10 | Design Review Meeting | 2013-01-24 → 2013-01-31 (+7d) |  |  |  | resources SAIC-F Technical Project Manager; Software Architect; Project Manager → SAIC-F Technical Project Manager; Inventrio Software Architect; Inventrio Project Manager |
| 11 | Begin Development | 2013-03-01 → 2013-03-13 (+12d) | 1mo → 2.5w |  |  | resources Software Developer; Software Architect → Inventrio Software Developer; Inventrio Software Architect |
| 13 | Validate Prior SHA-2 work by caGrid team |  |  |  |  | resources Software Architect → Inventrio Software Architect |
| 14 | Design Approach |  |  |  |  | resources Software Developer; Software Architect → Inventrio Software Developer; Inventrio Software Architect |
| 15 | Design Review Meeting |  |  |  |  | resources SAIC-F Technical Project Manager; Project Manager; Software Architect → SAIC-F Technical Project Manager; Inventrio Project Manager; Inventrio Software Architect |
| 16 | Begin Development |  |  |  |  | resources Software Developer → Inventrio Software Developer |
| 18 | Migration Plan: caGrid.org to NCI | 2013-01-03 → 2013-03-07 (+63d) |  |  | 4 → 6 | resources Project Manager; Software Architect → Inventrio Project Manager; Inventrio Software Architect |
| 19 | caGrid / NCI Wiki Site |  |  |  |  | resources Project Manager → Inventrio Project Manager |
| 20 | Migration to Open Source Community (OSDI) |  |  |  |  | resources Software Architect → Inventrio Software Architect |
| 21 | Information Systems Security Plan |  |  |  |  | resources Software Architect → Inventrio Software Architect |
| 22 | Technical Project Plan |  |  |  |  | resources Software Architect; Project Manager → Inventrio Software Architect; Inventrio Project Manager |
| 23 | Financial Project Plan |  |  |  |  | resources Project Manager; Software Architect → Inventrio Project Manager; Inventrio Software Architect |
| 24 | Quarterly In-Process Review |  |  |  |  | resources Software Architect; SAIC-F Technical Project Manager; Project Manager; NCI Project Officer → Inventrio Software Architect; SAIC-F Technical Project Manager; Inventrio Project Manager; NCI Project Officer |
| 29 | Software Development |  |  |  |  | resources Software Developer → Inventrio Software Developer |
| 31 | Software Development |  |  |  |  | resources Software Developer → Inventrio Software Developer |
| 32 | **XACML Authorization** | 2013-01-10 → 2013-04-01 (+81d) |  |  | 4 → none |  |
| 33 | Design Approach | 2013-01-10 → 2013-04-01 (+81d) | 2w → 1w |  | 13 → 27 | resources Software Architect; Software Developer → Inventrio Software Architect; Inventrio Software Developer |
| 34 | Design Review Meeting | 2013-01-24 → 2013-04-08 (+74d) |  |  |  | resources Software Architect; SAIC-F Technical Project Manager; Project Manager → SAIC-F Technical Project Manager; Inventrio Software Architect; Inventrio Project Manager |
| 35 | Software Development | 2013-04-01 → 2013-04-08 (+7d) |  |  |  | resources Software Developer → Inventrio Software Developer |
| 36 | Simplify use of caGrid in Infrastructure |  |  |  |  | resources Software Architect → Inventrio Software Architect |
| 37 | Quarterly In-Process Review |  |  |  |  | resources Project Manager; NCI Project Officer; SAIC-F Technical Project Manager; Software Architect → Inventrio Project Manager; NCI Project Officer; SAIC-F Technical Project Manager; Inventrio Software Architect |
| 41 | Operational Readiness Review |  |  |  |  | resources Project Manager; Software Architect; SAIC-F Technical Project Manager → Inventrio Project Manager; Inventrio Software Architect; SAIC-F Technical Project Manager |
| 43 | Finish Development |  |  |  |  | resources Software Developer → Inventrio Software Developer |
| 44 | **XACML Authorization** | 2013-04-01 → 2013-07-01 (+91d) |  |  |  |  |
| 45 | Finish Development |  |  |  |  | resources Software Developer → Inventrio Software Developer |
| 49 | Architecture Review Checklist |  |  |  |  | resources Project Manager → Inventrio Project Manager |
| 52 | Quarterly In-Process Review |  |  |  |  | resources Software Architect; Project Manager; NCI Project Officer; SAIC-F Technical Project Manager → Inventrio Software Architect; Inventrio Project Manager; NCI Project Officer; SAIC-F Technical Project Manager |
| 54 | Project Summary Report |  |  |  |  | resources Project Manager → Inventrio Project Manager |

## Version 3 (saved 2013-02-15)

Changed:

| ID | Task | Start | Duration | Complete | Predecessors | Other |
| --- | --- | --- | --- | --- | --- | --- |
| 2 | **Iteration 1 - Design Approach** |  |  | 6% → 8% |  |  |
| 7 | **Migrate from Globus to WS* (new tech stack)** | 2013-01-03 → 2013-02-04 (+32d) |  | 0% → 7% |  |  |
| 8 | Investigate WSRF services in CXF | 2013-01-03 → 2013-02-04 A (+32d) | 2w → 3w | 0% → 25% |  |  |
| 9 | Develop Migration Plan | 2013-01-17 → 2013-02-25 (+39d) |  |  |  |  |
| 10 | Design Review Meeting | 2013-01-31 → 2013-03-11 (+39d) |  |  |  |  |
| 12 | **Migrate to SHA-2** |  |  | 0% → 1% |  |  |
| 13 | Validate Prior SHA-2 work by caGrid team | 2013-01-03 A |  | 0% → 20% |  |  |
| 18 | Migrate caGrid.org wiki | 2013-03-07 → 2013-01-28 A (-38d) |  | 0% → 10% | 6 → 5 | was named Migration Plan: caGrid.org to NCI |

## Version 4 (saved 2013-05-24)

Complete tasks 3 → 11.

Added:

| ID | Task | Duration | Start | Predecessors | Resources |
| --- | --- | --- | --- | --- | --- |
| 13 | **Migration to Open Source Community (OSDI)** | 0d | 2013-01-03 | 4 |  |
| 22 | Develop Migration Approach | 2.25mo | 2013-02-25 A |  | Inventrio Project Manager |
| 23 | **Migrate to CXF** | 0d | 2013-04-01 |  |  |
| 24 | Finish Dorian | 2.25mo | 2013-04-01 A | 9 | Inventrio Software Developer |
| 25 | CDS | 2w | 2013-04-30 A | 20 | Inventrio Software Developer |
| 26 | GME | 2w | 2013-04-17 | 20 | Inventrio Software Architect |
| 27 | Authentication Service | 2w | 2013-04-17 | 20 | Inventrio Software Developer |
| 28 | Grid Grouper | 2w | 2013-05-20 A | 20 | Inventrio Software Developer |
| 30 | **Patch to work with 2.0/CXF** | 0d | 2013-04-01 |  |  |

Removed: 11 Begin Development; 17 XACML Authorization; 19 caGrid / NCI Wiki Site; 20 Migration to Open Source Community (OSDI); 42 Migrate to SHA-2; 44 XACML Authorization; 45 Finish Development

Changed:

| ID | Task | Start | Duration | Complete | Total float | Predecessors | Other |
| --- | --- | --- | --- | --- | --- | --- | --- |
| 1 | Operations, Maintenance, and Support | 2013-01-22 A |  | 0% → 5% |  |  |  |
| 2 | **Iteration 1 - Design Approach** |  |  | 8% → 98% |  |  |  |
| 4 | Project Kickoff |  |  |  |  |  | resources Inventrio Software Architect; Inventrio Project Manager → Inventrio Project Manager; Inventrio Software Architect |
| 6 | Migrate Training Grid to NCI |  | 45d → 70d | 15% → 100% | 0d → none |  | resources Inventrio Software Architect; Inventrio Software Developer → Inventrio Software Developer [50%]; Inventrio Software Architect [50%] |
| 7 | **Migrate from Globus to WS* (new tech stack)** |  |  | 7% → 100% |  |  |  |
| 8 | Investigate WSRF services in CXF |  |  | 25% → 100% |  |  |  |
| 9 | Migrate Dorian to CXF (validate approach) | 2013-02-25 → 2013-02-14 A (-11d) | 2w → 1.59mo | 0% → 100% | 0d → none | 8 → 22 | was named Develop Migration Plan; constraint none → as late as possible; resources Inventrio Project Manager → Inventrio Software Architect [50%]; Inventrio Software Developer [50%] |
| 10 | **Migrate to SHA-2** |  |  | 1% → 100% |  |  |  |
| 11 | Validate Prior SHA-2 work by caGrid team |  |  | 20% → 100% |  |  |  |
| 12 | Migrate caGrid.org wiki |  |  | 10% → 100% |  |  | resources Inventrio Project Manager; Inventrio Software Architect → Inventrio Software Architect; Inventrio Project Manager |
| 14 | Start (Kick-off Meeting) | 2013-01-10 → 2013-01-03 A (-7d) | 1.5w → 4h | 0% → 100% |  | 11 → 4 | was named Design Approach; resources Inventrio Software Developer; Inventrio Software Architect → none |
| 15 | Migration of Agreed Repositories | 2013-01-21 → 2013-01-03 A (-18d) | 2h → 3.8w | 0% → 95% |  |  | was named Design Review Meeting; resources SAIC-F Technical Project Manager; Inventrio Project Manager; Inventrio Software Architect → none |
| 16 | Finish (Close-out Meeting) | 2013-02-01 → 2013-01-30 (-2d) | 2mo → 4h |  |  |  | was named Begin Development; constraint as late as possible → none; resources Inventrio Software Developer → none |
| 17 | Quarterly In-Process Review | 2013-03-29 → 2013-04-01 (+3d) |  |  |  | 55, caGrid / NCI Wiki Site, Begin Development, 54, 12, 16, 53 → 11, 9, 12, 54, 4, 53, 55 | resources Inventrio Software Architect; SAIC-F Technical Project Manager; Inventrio Project Manager; NCI Project Officer → Inventrio Software Architect; Inventrio Project Manager; NCI Project Officer; SAIC-F Technical Project Manager |
| 18 | End Iteration 1 | 2013-03-29 → 2013-04-01 (+3d) |  |  |  |  |  |
| 19 | **Iteration 2 - Implementation** | 2013-04-01 → 2013-02-25 (-35d) |  | 0% → 45% |  |  |  |
| 20 | Start | 2013-04-01 → 2013-04-17 A (+16d) |  | 0% → 100% |  |  |  |
| 21 | **Migrate from Globus to WS*** | 2013-04-01 → 2013-02-25 (-35d) |  | 0% → 60% |  |  |  |
| 29 | GTS | 2013-04-01 → 2013-04-17 (+16d) | 60d → 2w |  |  | Begin Development → 20 | was named Software Development |
| 31 | Index Service |  | 30d → 1w |  |  | 16 → none | was named Software Development; resources Inventrio Software Developer → none |
| 32 | FQP |  | 0d → 1w |  |  |  | was named XACML Authorization |
| 33 | Taverna |  |  |  |  | 20 → none | was named Design Approach; resources Inventrio Software Architect; Inventrio Software Developer → none |
| 34 | **Migrate CA to SHA-2** | 2013-04-08 → 2013-04-29 (+21d) | 2h → 0d | 0% → 15% |  | 33 → none | was named Design Review Meeting; resources SAIC-F Technical Project Manager; Inventrio Software Architect; Inventrio Project Manager → none |
| 35 | Software Development | 2013-04-08 → 2013-04-29 A (+21d) | 30d → 45d | 0% → 15% |  | 34 → 22, 11 |  |
| 36 | Design Review Meeting | 2013-03-11 → 2013-04-29 (+49d) |  |  |  | 9 → 22, 11 | resources SAIC-F Technical Project Manager; Inventrio Software Architect; Inventrio Project Manager → Inventrio Software Architect; Inventrio Project Manager; SAIC-F Technical Project Manager |
| 37 | Simplify use of caGrid in Infrastructure | 2013-04-01 → 2013-04-17 (+16d) |  |  |  |  |  |
| 38 | Quarterly In-Process Review | 2013-06-24 → 2013-07-01 (+7d) |  |  |  | 37, 6, 20, 31, 29 → 24, 20, 35, 6, 37 | resources Inventrio Project Manager; NCI Project Officer; SAIC-F Technical Project Manager; Inventrio Software Architect → NCI Project Officer; SAIC-F Technical Project Manager; Inventrio Project Manager; Inventrio Software Architect |
| 39 | End Iteration 2 | 2013-06-24 → 2013-07-01 (+7d) |  |  |  |  |  |
| 42 | Operational Readiness Review |  |  |  |  |  | resources Inventrio Project Manager; Inventrio Software Architect; SAIC-F Technical Project Manager → none |
| 43 | **Migrate to SHA-2** | 2013-04-01 → 2013-07-01 (+91d) |  |  |  |  |  |
| 44 | Finish Development |  |  |  |  | 31 → 35 |  |
| 45 | Quality Assurance |  |  |  |  | Finish Development, 44 → 44 |  |
| 46 | Documentation |  |  |  |  | Finish Development, 29, 44, 18 → 44, 24, 18 |  |
| 51 | Quarterly In-Process Review |  |  |  |  | 12, Migration to Open Source Community (OSDI) → 13, 12 | resources Inventrio Software Architect; Inventrio Project Manager; NCI Project Officer; SAIC-F Technical Project Manager → Inventrio Software Architect; NCI Project Officer; SAIC-F Technical Project Manager; Inventrio Project Manager |
| 53 | Information Systems Security Plan | 2013-01-03 → 2013-01-01 (-2d) |  |  |  |  |  |
| 54 | Technical Project Plan |  | 1w → 2.25d | 6% → 25% |  |  | resources Inventrio Software Architect; Inventrio Project Manager → Inventrio Project Manager; Inventrio Software Architect |
| 55 | Financial Project Plan | 2013-01-03 → 2013-01-01 A (-2d) | 1w → 2.25d | 0% → 25% |  |  |  |

## Version 5 (saved 2013-05-31)

Complete tasks 11 → 12.

Changed:

| ID | Task | Start | Complete | Other |
| --- | --- | --- | --- | --- |
| 6 | Migrate Training Grid to NCI |  |  | resources Inventrio Software Developer [50%]; Inventrio Software Architect [50%] → Inventrio Software Architect [50%]; Inventrio Software Developer [50%] |
| 9 | Migrate Dorian to CXF (validate approach) |  |  | resources Inventrio Software Architect [50%]; Inventrio Software Developer [50%] → Inventrio Software Developer [50%]; Inventrio Software Architect [50%] |
| 17 | Quarterly In-Process Review |  |  | resources Inventrio Software Architect; Inventrio Project Manager; NCI Project Officer; SAIC-F Technical Project Manager → SAIC-F Technical Project Manager; Inventrio Software Architect; Inventrio Project Manager; NCI Project Officer |
| 19 | **Iteration 2 - Implementation** |  | 45% → 58% |  |
| 21 | **Migrate from Globus to WS*** |  | 60% → 69% |  |
| 23 | **Migrate to CXF** |  | 51% → 65% |  |
| 24 | Finish Dorian |  | 85% → 90% |  |
| 25 | CDS |  | 55% → 75% |  |
| 28 | Grid Grouper |  | 55% → 100% |  |
| 29 | GTS | 2013-04-17 A | 0% → 40% |  |
| 34 | **Migrate CA to SHA-2** |  | 15% → 50% |  |
| 35 | Software Development |  | 15% → 50% |  |
| 36 | Design Review Meeting |  |  | resources Inventrio Software Architect; Inventrio Project Manager; SAIC-F Technical Project Manager → Inventrio Project Manager; Inventrio Software Architect; SAIC-F Technical Project Manager |
| 55 | Financial Project Plan |  |  | resources Inventrio Project Manager; Inventrio Software Architect → Inventrio Software Architect; Inventrio Project Manager |

## Version 6 (saved 2013-06-28)

Complete tasks 12 → 11.

Changed:

| ID | Task | Start | Complete | Other |
| --- | --- | --- | --- | --- |
| 4 | Project Kickoff |  |  | resources Inventrio Project Manager; Inventrio Software Architect → Inventrio Software Architect; Inventrio Project Manager |
| 9 | Migrate Dorian to CXF (validate approach) |  |  | resources Inventrio Software Developer [50%]; Inventrio Software Architect [50%] → Inventrio Software Architect [50%]; Inventrio Software Developer [50%] |
| 12 | Migrate caGrid.org wiki |  |  | resources Inventrio Software Architect; Inventrio Project Manager → Inventrio Project Manager; Inventrio Software Architect |
| 17 | Quarterly In-Process Review |  |  | resources SAIC-F Technical Project Manager; Inventrio Software Architect; Inventrio Project Manager; NCI Project Officer → SAIC-F Technical Project Manager; Inventrio Project Manager; Inventrio Software Architect; NCI Project Officer |
| 19 | **Iteration 2 - Implementation** |  | 58% → 65% |  |
| 21 | **Migrate from Globus to WS*** |  | 69% → 79% |  |
| 23 | **Migrate to CXF** |  | 65% → 81% |  |
| 24 | Finish Dorian |  | 90% → 95% |  |
| 25 | CDS |  | 75% → 85% |  |
| 26 | GME | 2013-04-17 A | 0% → 85% |  |
| 28 | Grid Grouper |  | 100% → 95% |  |
| 29 | GTS |  | 40% → 85% |  |
| 51 | Quarterly In-Process Review |  |  | resources Inventrio Software Architect; NCI Project Officer; SAIC-F Technical Project Manager; Inventrio Project Manager → Inventrio Project Manager; SAIC-F Technical Project Manager; NCI Project Officer; Inventrio Software Architect |
| 54 | Technical Project Plan |  |  | resources Inventrio Project Manager; Inventrio Software Architect → Inventrio Software Architect; Inventrio Project Manager |
| 55 | Financial Project Plan |  |  | resources Inventrio Software Architect; Inventrio Project Manager → Inventrio Project Manager; Inventrio Software Architect |

## Version 7 (saved 2013-08-23)

Complete tasks 11 → 21.

Removed: 37 Simplify use of caGrid in Infrastructure

Changed:

| ID | Task | Start | Complete | Predecessors | Other |
| --- | --- | --- | --- | --- | --- |
| 1 | Operations, Maintenance, and Support |  | 5% → 20% |  |  |
| 2 | **Iteration 1 - Design Approach** |  | 98% → 100% |  |  |
| 4 | Project Kickoff |  |  |  | resources Inventrio Software Architect; Inventrio Project Manager → Inventrio Project Manager; Inventrio Software Architect |
| 12 | Migrate caGrid.org wiki |  |  |  | resources Inventrio Project Manager; Inventrio Software Architect → Inventrio Software Architect; Inventrio Project Manager |
| 13 | **Migration to Open Source Community (OSDI)** |  | 92% → 100% |  |  |
| 15 | Migration of Agreed Repositories |  | 95% → 100% |  |  |
| 16 | Finish (Close-out Meeting) | 2013-01-30 A | 0% → 100% |  |  |
| 17 | Quarterly In-Process Review | 2013-04-01 A | 0% → 100% |  | resources SAIC-F Technical Project Manager; Inventrio Project Manager; Inventrio Software Architect; NCI Project Officer → Inventrio Project Manager; Inventrio Software Architect; NCI Project Officer; SAIC-F Technical Project Manager |
| 18 | End Iteration 1 | 2013-04-01 A | 0% → 100% |  |  |
| 19 | **Iteration 2 - Implementation** |  | 65% → 85% |  |  |
| 21 | **Migrate from Globus to WS*** |  | 79% → 80% |  |  |
| 30 | **Patch to work with 2.0/CXF** |  | 0% → 13% |  |  |
| 31 | Index Service | 2013-04-01 A | 0% → 40% |  |  |
| 34 | **Migrate CA to SHA-2** |  | 50% → 100% |  |  |
| 35 | Software Development |  | 50% → 100% |  |  |
| 36 | Design Review Meeting | 2013-04-29 A | 0% → 100% |  | resources Inventrio Project Manager; Inventrio Software Architect; SAIC-F Technical Project Manager → SAIC-F Technical Project Manager; Inventrio Project Manager; Inventrio Software Architect |
| 37 | Quarterly In-Process Review | 2013-07-01 A | 0% → 100% | 20, 35, 6, 24, Simplify use of caGrid in Infrastructure → 6, 24, 20, 35 | resources NCI Project Officer; SAIC-F Technical Project Manager; Inventrio Project Manager; Inventrio Software Architect → Inventrio Project Manager; Inventrio Software Architect; NCI Project Officer; SAIC-F Technical Project Manager |
| 39 | **Iteration 3 - Deployment and Delivery** |  | 0% → 24% |  |  |
| 40 | Start | 2013-07-01 A | 0% → 100% |  |  |
| 41 | Operational Readiness Review | 2013-07-01 A | 0% → 100% |  |  |
| 42 | **Migrate to SHA-2** |  | 0% → 50% |  |  |
| 43 | Finish Development | 2013-07-01 A | 0% → 50% |  |  |
| 44 | Quality Assurance | 2013-08-12 A | 0% → 10% |  |  |
| 45 | Documentation | 2013-08-12 A | 0% → 10% |  |  |
| 50 | Quarterly In-Process Review |  |  |  | resources Inventrio Project Manager; SAIC-F Technical Project Manager; NCI Project Officer; Inventrio Software Architect → NCI Project Officer; SAIC-F Technical Project Manager; Inventrio Project Manager; Inventrio Software Architect |
| 52 | Information Systems Security Plan | 2013-01-01 A | 0% → 100% |  |  |
| 53 | Technical Project Plan |  | 25% → 30% |  | resources Inventrio Software Architect; Inventrio Project Manager → Inventrio Project Manager; Inventrio Software Architect |
| 54 | Financial Project Plan |  | 25% → 30% |  |  |

## Version 8 (saved 2013-09-06)

Complete tasks 21 → 24.

Changed:

| ID | Task | Start | Duration | Complete | Total float | Other |
| --- | --- | --- | --- | --- | --- | --- |
| 12 | Migrate caGrid.org wiki |  |  |  |  | resources Inventrio Software Architect; Inventrio Project Manager → Inventrio Project Manager; Inventrio Software Architect |
| 17 | Quarterly In-Process Review |  |  |  |  | resources Inventrio Project Manager; Inventrio Software Architect; NCI Project Officer; SAIC-F Technical Project Manager → SAIC-F Technical Project Manager; Inventrio Project Manager; Inventrio Software Architect; NCI Project Officer |
| 21 | **Migrate from Globus to WS*** |  |  | 80% → 81% |  |  |
| 23 | **Migrate to CXF** |  |  | 81% → 82% |  |  |
| 25 | CDS |  |  | 85% → 95% |  |  |
| 36 | Design Review Meeting |  |  |  |  | resources SAIC-F Technical Project Manager; Inventrio Project Manager; Inventrio Software Architect → SAIC-F Technical Project Manager; Inventrio Software Architect; Inventrio Project Manager |
| 37 | Quarterly In-Process Review |  |  |  |  | resources Inventrio Project Manager; Inventrio Software Architect; NCI Project Officer; SAIC-F Technical Project Manager → NCI Project Officer; SAIC-F Technical Project Manager; Inventrio Project Manager; Inventrio Software Architect |
| 39 | **Iteration 3 - Deployment and Delivery** |  |  | 24% → 62% |  |  |
| 42 | **Migrate to SHA-2** |  |  | 50% → 100% |  |  |
| 43 | Finish Development |  |  | 50% → 100% |  |  |
| 44 | Quality Assurance | 2013-08-12 A → 2013-09-16 A (+35d) |  | 10% → 0% |  |  |
| 45 | Documentation |  |  | 10% → 40% |  |  |
| 46 | **Deployment** | 2013-07-01 → 2013-07-25 (+24d) |  | 0% → 62% |  |  |
| 47 | Architecture Review Checklist | 2013-07-01 → 2013-07-25 A (+24d) | 1w → 3.4w | 0% → 100% | 0d → none |  |
| 48 | Deployment to Stage | 2013-09-02 → 2013-10-07 (+35d) |  |  |  |  |
| 49 | Deployment to Production | 2013-09-09 → 2013-10-14 (+35d) |  |  |  |  |
| 50 | Quarterly In-Process Review | 2013-07-01 A |  | 0% → 100% |  | resources NCI Project Officer; SAIC-F Technical Project Manager; Inventrio Project Manager; Inventrio Software Architect → Inventrio Software Architect; NCI Project Officer; SAIC-F Technical Project Manager; Inventrio Project Manager |
| 53 | Technical Project Plan |  |  | 30% → 80% |  |  |
| 54 | Financial Project Plan |  |  | 30% → 80% |  | resources Inventrio Project Manager; Inventrio Software Architect → Inventrio Software Architect; Inventrio Project Manager |
