# 13XS487-Technical

How a schedule from MS Project MPX changed from version to version. A marks actual dates.

## Version 1 (saved 2013-11-06)

Note of the change: updated project schedule

| ID | WBS | Task | Duration | Start | Predecessors | Complete | Constraint |
| --- | --- | --- | --- | --- | --- | --- | --- |
| 1 |  | Start | 0d | 2013-10-18 A |  | 100% | start no earlier than 2013-10-18 |
| 2 | 2 | **caGrid Architectural Mentoring** |  | 2013-10-18 | 1 |  |  |
| 3 |  | caGrid Operations & Maintenance | 1y | 2013-10-18 | 1 |  |  |
| 4 | 3 | **caGrid 2.0 Cookbook Development** |  | 2013-10-18 | 1 |  |  |
| 5 |  | Start | 0d | 2013-10-18 | 1 |  |  |
| 6 |  | Upgrading caGrid Services 1.x to SHA-2 | 1w | 2013-10-18 | 5 |  |  |
| 7 |  | Splitting Grid Service Containers <?> | 1w | 2013-10-18 | 5 |  |  |
| 8 |  | Developing services for caGrid 2.0 | 3w | 2013-10-18 | 5 |  |  |
| 9 |  | End | 0d | 2013-11-07 | 6, 8, 7 |  |  |
| 10 | 4 | **caGrid 2.0 Deployment** |  | 2013-07-22 |  | 24% |  |
| 11 |  | Start | 0d | 2013-10-18 A | 1 | 100% |  |
| 12 |  | Documentation | 3w | 2013-10-18 | 11 |  |  |
| 13 | 4.3 | **Deployment** |  | 2013-07-22 |  | 34% |  |
| 14 |  | Architecture Review Checklist | 1w | 2013-07-22 A | 11 | 100% |  |
| 15 |  | Deployment to NCI QA | 1w | 2013-10-21 A | 14 | 100% |  |
| 16 |  | QA Testing | 3w | 2013-10-28 A | 15 | 25% |  |
| 17 |  | App Scan | 3d | 2013-11-18 | 16 |  |  |
| 18 |  | Deployment to NCI Stage | 1w | 2013-11-21 | 17 |  |  |
| 19 |  | Deployment to NCI Production | 1w | 2013-11-28 | 18 |  |  |
| 20 |  | End | 1d | 2013-12-05 | 19, 14, 16, 18, 15 |  |  |
| 21 |  | End | 0d | 2014-09-18 | 4, 3, 2, 20, 9 |  |  |

## Version 2 (saved 2013-12-06)

Complete tasks 4 → 7.

Added:

| ID | Task | Duration | Start | Predecessors |
| --- | --- | --- | --- | --- |
| 21 | **caGrid 2.1 Development** |  | 2013-12-05 |  |
| 22 | Start | 0h | 2013-12-05 | 20 |
| 23 | **Service Development** |  | 2013-12-05 |  |
| 24 | Start | 0h | 2013-12-05 | 22 |
| 25 | MMS Service | 1.2w | 2013-12-06 | 24 |
| 26 | Index Service | 3w | 2013-12-06 | 24 |
| 27 | Authentication Service | 2w | 2013-12-06 | 24 |
| 28 | FQP | 2w | 2013-12-06 | 24 |
| 29 | Taverna | 3w | 2013-12-06 | 24 |
| 30 | ID Prefix | 1w | 2013-12-06 | 24 |
| 31 | ID Naming | 1.2w | 2013-12-06 | 24 |
| 32 | SyncGTS | 2.5w | 2013-12-06 | 24 |
| 34 | **Other Activities** |  | 2013-12-05 |  |
| 35 | Start | 0h | 2013-12-05 | 22 |
| 36 | Project Management | 1w | 2013-12-06 | 35 |
| 37 | Training Grid Update | 1w | 2013-12-30 | 33 |
| 38 | Deployment Documentation | 2w | 2013-12-30 | 33 |
| 39 | SHA-2 | 0h | 2013-12-05 | 35 |
| 40 | WSRF Libraries | 0h | 2013-12-05 | 35 |
| 41 | Testing | 1.5w | 2013-12-30 | 33 |
| 42 | Target Grid | 0h | 2013-12-27 | 33 |
| 43 | Jenkins Setup | 1d | 2013-12-06 | 35 |
| 44 | Deployment Support | 3d | 2014-01-08 | 41 |
| 45 | End | 0h | 2014-01-10 | 40, 36, 38, 42, 39, 43, 37, 41 |
| 46 | End | 0h | 2014-01-10 | 45, 33 |
| 47 | End | 0d | 2014-09-18 | 46, 2, 3, 20, 4, 9 |

Changed:

| ID | Task | Start | Duration | Complete | Predecessors | Other |
| --- | --- | --- | --- | --- | --- | --- |
| 4 | **caGrid 2.0 Cookbook Development** |  |  | 0% → 20% |  |  |
| 5 | Start | 2013-10-18 A |  | 0% → 100% |  |  |
| 6 | Upgrading caGrid Services 1.x to SHA-2 | 2013-10-18 A |  | 0% → 100% |  |  |
| 10 | **caGrid 2.0 Deployment** |  |  | 24% → 69% |  |  |
| 12 | Documentation | 2013-10-18 A |  | 0% → 100% |  |  |
| 13 | **Deployment** |  |  | 34% → 44% |  |  |
| 16 | QA Testing |  |  | 25% → 50% |  | resources none → NCI Quality Assurance |
| 17 | App Scan |  |  |  |  | resources none → NCI Systems |
| 33 | End | 2014-09-18 → 2013-12-27 (-265d) | 0d → 1d |  | 4, 3, 2, 20, 9 → 25, 31, 30, 27, 32, 26, 29, 28 |  |

## Version 3 (saved 2014-01-02)

Complete tasks 7 → 18.

Added:

| ID | Task | Duration | Start | Predecessors | Resources |
| --- | --- | --- | --- | --- | --- |
| 18 | **Training Grid** |  | 2013-10-18 |  |  |
| 20 | Dorian | 1d | 2013-10-18 A | 19 | Lantern Three Software Architect |
| 21 | Master GTS | 1d | 2013-10-18 A | 19 | Lantern Three Software Architect |
| 22 | Slave GTS | 1d | 2013-10-18 A | 19 | Lantern Three Software Architect |
| 23 | Index | 1d | 2013-10-18 A | 19 | Lantern Three Software Architect |
| 24 | Grid Grouper | 1d | 2013-10-18 A | 19 | Lantern Three Software Architect |
| 25 | MMS | 1d | 2013-10-18 A | 19 | Lantern Three Software Architect |
| 26 | GME | 1d | 2013-10-18 A | 19 | Lantern Three Software Architect |
| 42 | Start | 0h | 2013-12-30 | 33 |  |
| 51 | Deployment Support | 3d | 2014-01-29 | 48 |  |
| 54 | End | 0d | 2014-09-18 | 53, 4, 9, 31, 3, 2 |  |

Removed: 28 FQP; 29 Taverna; 30 ID Prefix; 31 ID Naming

Changed:

| ID | Task | Start | Duration | Complete | Predecessors | Other |
| --- | --- | --- | --- | --- | --- | --- |
| 3 | caGrid Operations & Maintenance |  |  |  |  | resources Lantern Three Software Architect; Lantern Three Project Manager → Lantern Three Project Manager; Lantern Three Software Architect |
| 10 | **caGrid 2.0 Deployment** |  |  | 69% → 95% |  |  |
| 13 | **Deployment** |  |  | 44% → 95% |  |  |
| 16 | QA Testing |  |  | 50% → 100% |  |  |
| 19 | Start | 2013-12-05 → 2013-10-18 A (-48d) |  | 0% → 100% | 27 → 11 |  |
| 27 | End | 2013-12-05 → 2013-10-18 A (-48d) | 1d → 0h | 0% → 100% | 16, 28, 15, 29, 14 → 21, 25, 20, 23, 24, 22, 26 | resources none → Lantern Three Software Architect |
| 30 | Deployment Support | 2014-01-08 → 2013-12-05 (-34d) | 3d → 1.4w |  | 48 → 16, 15, 17, 28, 29 |  |
| 31 | End | 2013-12-27 → 2013-12-13 (-14d) | 1d → 0h |  | 36, ID Naming, ID Prefix, 38, 39, 37, Taverna, FQP → 15, 29, 28, 16, 14, 30 |  |
| 32 | **caGrid 2.1 Development** | 2013-12-05 → 2013-12-30 (+25d) |  | 0% → 2% |  |  |
| 33 | Start | 2013-12-05 → 2013-12-30 A (+25d) |  | 0% → 100% | 19 → 31 |  |
| 34 | **Service Development** | 2013-12-05 → 2013-12-30 (+25d) |  | 0% → 5% |  |  |
| 35 | Start | 2013-12-05 → 2013-12-30 (+25d) |  |  | 19 → 33 |  |
| 36 | MMS Service | 2013-12-06 → 2013-12-30 (+24d) |  |  | 33 → 35 |  |
| 37 | Index Service | 2013-12-06 → 2013-12-30 (+24d) |  |  | 33 → 35 |  |
| 38 | Authentication Service | 2013-12-06 → 2013-12-30 (+24d) |  |  | 33 → 35 |  |
| 39 | SyncGTS | 2013-12-06 → 2013-12-30 A (+24d) | 2.5w → 2w | 0% → 20% | 33 → 35 |  |
| 40 | End | 2014-01-10 → 2014-01-17 (+7d) |  |  | 47, 43, 45, 49, 46, 50, 44, 48 → 36, 39, 37, 38 |  |
| 41 | **Other Activities** | 2013-12-05 → 2013-12-30 (+25d) |  |  |  |  |
| 43 | Project Management | 2013-12-06 → 2013-12-30 (+24d) |  |  | 35 → 42 |  |
| 44 | Training Grid Update | 2013-12-30 → 2014-01-20 (+21d) |  |  | 31 → 40 |  |
| 45 | Deployment Documentation | 2013-12-30 → 2014-01-20 (+21d) |  |  | 31 → 40 |  |
| 46 | SHA-2 | 2013-12-05 → 2013-12-30 (+25d) |  |  | 35 → 42 |  |
| 47 | WSRF Libraries | 2013-12-05 → 2013-12-30 (+25d) |  |  | 35 → 42 |  |
| 48 | Testing | 2013-12-30 → 2014-01-20 (+21d) |  |  | 31 → 40 |  |
| 49 | Target Grid | 2013-12-27 → 2014-01-17 (+21d) |  |  | 31 → 40 |  |
| 50 | Jenkins Setup | 2013-12-06 → 2013-12-30 (+24d) |  |  | 35 → 42 |  |
| 52 | End | 2014-01-10 → 2014-01-31 (+21d) |  |  | 40, 31 → 50, 48, 49, 46, 45, 43, 47, 44 |  |
| 53 | End | 2014-09-18 → 2014-01-31 (-230d) | 0d → 0h |  | 52, 2, 3, 27, 4, 9 → 52, 40 |  |
