# 13XS487-Technical

How a schedule from MS Project XML changed from version to version. A marks actual dates.

## Version 1 (saved 2013-11-01)

| ID | WBS | Task | Duration | Start | Predecessors | Complete | Total float | Constraint |
| --- | --- | --- | --- | --- | --- | --- | --- | --- |
| 1 |  | Start | 0h | 2013-10-18 A |  | 100% |  | start no earlier than 2013-10-18 |
| 2 |  | caGrid Operations & Maintenance | 240d | 2013-10-31 | 1 |  | 0d |  |
| 3 |  | caGrid Architectural Mentoring | 0h | 2013-10-31 | 1 |  | 0d |  |
| 4 |  | caGrid 2.0 Cookbook Development | 0h | 2013-10-31 | 1 |  | 0d |  |
| 5 | 5 | **caGrid 2.0 Deployment** | 0d | 2013-07-22 |  | 24% | 0d |  |
| 6 |  | Start | 0h | 2013-10-18 A | 1 | 100% |  |  |
| 7 |  | Documentation | 3w | 2013-10-31 | 6 |  | 0d |  |
| 8 | 5.3 | **Deployment** | 0d | 2013-07-22 |  | 34% | 0d |  |
| 9 |  | Architecture Review Checklist | 4.75d | 2013-07-22 A | 6 | 100% |  |  |
| 10 |  | Deployment to NCI QA | 4.75d | 2013-10-21 A | 9 | 100% |  |  |
| 11 |  | QA Testing | 3w | 2013-10-28 A | 10 | 25% | 0d |  |
| 12 |  | App Scan | 3d | 2013-11-18 | 11 |  | 0d |  |
| 13 |  | Deployment to NCI Stage | 1w | 2013-11-21 | 12 |  | 0d |  |
| 14 |  | Deployment to NCI Production | 1w | 2013-11-28 | 13 |  | 0d |  |
| 15 |  | End | 1d? | 2013-12-05 | 13, 9, 14, 10, 11 |  | 0d |  |
| 16 |  | End | 0h | 2014-10-01 | 15, 4, 2, 3 |  | 0d |  |

## Version 2 (saved 2013-11-29)

Note of the change: updated 29-NOV-2013

Complete tasks 4 → 6.

Added:

| ID | Task | Duration | Start | Predecessors | Resources |
| --- | --- | --- | --- | --- | --- |
| 2 | **caGrid Architectural Mentoring** | 0d | 2013-10-18 | 1 |  |
| 6 | Upgrading caGrid Services 1.x to SHA-2 | 1w | 2013-10-18 A | 5 | Lantern Three Software Architect |
| 7 | Splitting Grid Service Containers <?> | 1w | 2013-10-18 | 5 | Lantern Three Software Architect |
| 8 | Developing services for caGrid 2.0 | 3w | 2013-10-18 | 5 | Lantern Three Software Architect |
| 11 | Start | 0h | 2013-10-18 A | 1 |  |
| 21 | **caGrid 2.1 Development** | 0d | 2013-12-05 |  |  |
| 22 | Start | 0h | 2013-12-05 | 20 |  |
| 23 | **Service Development** | 0d | 2013-12-05 |  |  |
| 24 | Start | 0h | 2013-12-05 | 22 |  |
| 25 | MMS Service | 1.25w | 2013-12-06 | 24 |  |
| 26 | Index Service | 3w | 2013-12-06 | 24 |  |
| 27 | Authentication Service | 2w | 2013-12-06 | 24 |  |
| 28 | FQP | 2w | 2013-12-06 | 24 |  |
| 29 | Taverna | 3w | 2013-12-06 | 24 |  |
| 30 | ID Prefix | 1w | 2013-12-06 | 24 |  |
| 31 | ID Naming | 1.25w | 2013-12-06 | 24 |  |
| 32 | SyncGTS | 2.5w | 2013-12-06 | 24 |  |
| 33 | End | 1d? | 2013-12-27 | 31, 30, 27, 32, 29, 25, 26, 28 |  |
| 34 | **Other Activities** | 0d | 2013-12-05 |  |  |
| 35 | Start | 0h | 2013-12-05 | 22 |  |
| 36 | Project Management | 1w | 2013-12-06 | 35 |  |
| 37 | Training Grid Update | 1w | 2013-12-30 | 33 |  |
| 38 | Deployment Documentation | 2w | 2013-12-30 | 33 |  |
| 39 | SHA-2 | 0h | 2013-12-05 | 35 |  |
| 40 | WSRF Libraries | 0h | 2013-12-05 | 35 |  |
| 41 | Testing | 1.5w | 2013-12-30 | 33 |  |
| 42 | Target Grid | 0h | 2013-12-27 | 33 |  |
| 43 | Jenkins Setup | 1d | 2013-12-06 | 35 |  |
| 44 | Deployment Support | 3d | 2014-01-08 | 41 |  |
| 45 | End | 0h | 2014-01-10 | 38, 36, 43, 37, 39, 41, 40, 42 |  |
| 46 | End | 0h | 2014-01-10 | 45, 33 |  |
| 47 | End | 0h | 2014-09-18 | 2, 3, 20, 46, 9, 4 |  |

Removed: 3 caGrid Architectural Mentoring

Changed:

| ID | Task | Start | Duration | Complete | Predecessors |
| --- | --- | --- | --- | --- | --- |
| 3 | caGrid Operations & Maintenance | 2013-10-31 → 2013-10-18 (-13d) |  |  |  |
| 4 | **caGrid 2.0 Cookbook Development** | 2013-10-31 → 2013-10-18 (-13d) | 0h → 0d | 0% → 20% |  |
| 9 | End | 2013-12-05 → 2013-11-07 (-28d) | 1d? → 0h |  | 18, 14, 19, 15, 16 → 7, 8, 6 |
| 10 | **caGrid 2.0 Deployment** |  |  | 24% → 57% |  |
| 12 | Documentation | 2013-10-31 → 2013-10-18 A (-13d) |  | 0% → 90% | 5 → 11 |
| 13 | **Deployment** |  |  | 34% → 44% |  |
| 14 | Architecture Review Checklist |  |  |  | 5 → 11 |
| 16 | QA Testing |  |  | 25% → 50% |  |
| 20 | End | 2014-10-01 → 2013-12-05 (-300d) | 0h → 1d? |  | 9, 4, 3, caGrid Architectural Mentoring → 14, 16, 18, 19, 15 |

## Version 3 (saved 2013-12-06)

Complete tasks 6 → 7.

Changed:

| ID | Task | Duration | Complete | Total float | Other |
| --- | --- | --- | --- | --- | --- |
| 10 | **caGrid 2.0 Deployment** |  | 57% → 69% |  |  |
| 12 | Documentation | 3w → 1.6mo | 90% → 100% | 0d → none |  |
| 16 | QA Testing |  |  |  | resources none → NCI Quality Assurance |
| 17 | App Scan |  |  |  | resources none → NCI Systems |

## Version 4 (saved 2014-01-14)

Complete tasks 7 → 18.

Added:

| ID | Task | Duration | Start | Predecessors | Resources |
| --- | --- | --- | --- | --- | --- |
| 18 | **Training Grid** | 0d | 2013-10-18 |  |  |
| 20 | Dorian | 2.15mo? | 2013-10-18 A | 19 | Lantern Three Software Architect |
| 21 | Master GTS | 2.15mo? | 2013-10-18 A | 19 | Lantern Three Software Architect |
| 22 | Slave GTS | 2.15mo? | 2013-10-18 A | 19 | Lantern Three Software Architect |
| 23 | Index | 2.15mo? | 2013-10-18 A | 19 | Lantern Three Software Architect |
| 24 | Grid Grouper | 2.3mo? | 2013-10-18 A | 19 | Lantern Three Software Architect |
| 25 | MMS | 2.3mo? | 2013-10-18 A | 19 | Lantern Three Software Architect |
| 26 | GME | 2.35mo? | 2013-10-18 A | 19 | Lantern Three Software Architect |
| 42 | Start | 0h | 2013-12-30 | 33 |  |
| 51 | Deployment Support | 3d | 2014-01-29 | 48 |  |
| 54 | End | 0h | 2014-09-18 | 31, 3, 9, 4, 53, 2 |  |

Removed: 28 FQP; 29 Taverna; 30 ID Prefix; 31 ID Naming

Changed:

| ID | Task | Start | Duration | Complete | Total float | Predecessors | Other |
| --- | --- | --- | --- | --- | --- | --- | --- |
| 10 | **caGrid 2.0 Deployment** |  |  | 69% → 95% |  |  |  |
| 13 | **Deployment** |  |  | 44% → 95% |  |  |  |
| 16 | QA Testing |  |  | 50% → 100% |  |  |  |
| 19 | Start | 2013-12-05 → 2013-10-18 A (-48d) | 0h → 2.15mo | 0% → 100% | 0d → none | 27 → 11 |  |
| 27 | End | 2013-12-05 → 2013-10-18 A (-48d) | 1d? → 2.3mo | 0% → 100% | 0d → none | 16, 28, 15, 29, 14 → 22, 23, 24, 20, 25, 21, 26 | resources none → Lantern Three Software Architect |
| 28 | Deployment to NCI Stage |  | 1w → 5d |  |  |  |  |
| 29 | Deployment to NCI Production |  | 1w → 5d |  |  |  |  |
| 30 | Deployment Support | 2014-01-08 → 2013-12-05 (-34d) | 3d → 1.38w |  |  | 48 → 29, 16, 15, 28, 17 |  |
| 31 | End | 2013-12-27 → 2013-12-13 (-14d) | 1d? → 0h |  |  | 36, ID Naming, ID Prefix, 38, 39, 37, Taverna, FQP → 28, 30, 15, 29, 14, 16 |  |
| 32 | **caGrid 2.1 Development** | 2013-12-05 → 2013-12-30 (+25d) |  | 0% → 2% |  |  |  |
| 33 | Start | 2013-12-05 → 2013-12-30 A (+25d) |  | 0% → 100% |  | 19 → 31 |  |
| 34 | **Service Development** | 2013-12-05 → 2013-12-30 (+25d) |  | 0% → 5% |  |  |  |
| 35 | Start | 2013-12-05 → 2013-12-30 A (+25d) |  | 0% → 8% |  | 19 → 33 |  |
| 36 | MMS Service | 2013-12-06 → 2013-12-30 (+24d) |  |  |  | 33 → 35 |  |
| 37 | Index Service | 2013-12-06 → 2013-12-30 (+24d) |  |  |  | 33 → 35 |  |
| 38 | Authentication Service | 2013-12-06 → 2013-12-30 (+24d) |  |  |  | 33 → 35 |  |
| 39 | SyncGTS | 2013-12-06 → 2013-12-30 A (+24d) | 2.5w → 2.1w | 0% → 20% |  | 33 → 35 |  |
| 40 | End | 2014-01-10 → 2014-01-17 (+7d) |  |  |  | 47, 43, 45, 49, 46, 50, 44, 48 → 38, 36, 39, 37 |  |
| 41 | **Other Activities** | 2013-12-05 → 2013-12-30 (+25d) |  |  |  |  |  |
| 43 | Project Management | 2013-12-06 → 2013-12-30 (+24d) |  |  |  | 35 → 42 |  |
| 44 | Training Grid Update | 2013-12-30 → 2014-01-20 (+21d) |  |  |  | 31 → 40 |  |
| 45 | Deployment Documentation | 2013-12-30 → 2014-01-20 (+21d) |  |  |  | 31 → 40 |  |
| 46 | SHA-2 | 2013-12-05 → 2013-12-30 (+25d) |  |  |  | 35 → 42 |  |
| 47 | WSRF Libraries | 2013-12-05 → 2013-12-30 (+25d) |  |  |  | 35 → 42 |  |
| 48 | Testing | 2013-12-30 → 2014-01-20 (+21d) |  |  |  | 31 → 40 |  |
| 49 | Target Grid | 2013-12-27 → 2014-01-17 (+21d) |  |  |  | 31 → 40 |  |
| 50 | Jenkins Setup | 2013-12-06 → 2013-12-30 (+24d) |  |  |  | 35 → 42 |  |
| 52 | End | 2014-01-10 → 2014-01-31 (+21d) |  |  |  | 40, 31 → 48, 44, 47, 43, 45, 49, 50, 46 |  |
| 53 | End | 2014-09-18 → 2014-01-31 (-230d) |  |  |  | 52, 2, 3, 27, 4, 9 → 52, 40 |  |
