# 13XS487-Technical

How a schedule from MS Project changed from version to version. A marks actual dates.

## Version 1 (saved 2014-03-06)

Note of the change: Adding caGrid project schedule

| ID | WBS | Task | Duration | Start | Finish | Predecessors | Complete | Total float | Constraint |
| --- | --- | --- | --- | --- | --- | --- | --- | --- | --- |
| 1 |  | Start | 0h | 2013-10-18 A | 2013-10-18 |  | 99% | 8d | start no earlier than 2013-10-18 |
| 2 | 2 | **caGrid Architectural Support** | 240d | 2013-10-18 A | 2014-09-18 | 1 |  | 8d |  |
| 3 |  | caGrid Operations & Maintenance | 240d | 2013-10-18 A | 2014-09-18 | 1 |  | 8d |  |
| 4 | 3 | **caGrid Project Management** | 248d? | 2013-10-18 | 2014-09-30 |  |  | 0d |  |
| 5 |  | caGrid Project Management | 0d? | 2013-10-18 | 2013-10-18 |  |  | 0d | must start on 2013-10-18 |
| 6 |  | caGrid Project Management | 0d? | 2014-09-30 | 2014-09-30 |  |  | 0d | must finish on 2014-09-30 |
| 7 |  | Weekly Status Meeting | 248d | 2013-10-18 | 2014-09-30 |  |  | 0d | finish no earlier than 2014-09-30 |
| 8 |  | Monthly Status reports | 248d | 2013-10-18 | 2014-09-30 |  |  | 0d | start no earlier than 2013-10-18 |
| 9 |  | Project Summary Report | 22d | 2014-09-01 | 2014-09-30 |  |  | 0d | finish no earlier than 2014-09-30 |
| 10 | 4 | **caGrid 2.0** | 186d? | 2013-07-19 A | 2014-04-04 |  | 60% | 127d |  |
| 11 |  | Start | 0h | 2013-10-18 A | 2013-10-18 | 1 | 99% | 248d |  |
| 12 | 4.2 | **Documentation** | 158d? | 2013-07-19 A | 2014-02-25 |  | 99% | 0d |  |
| 13 |  | Obtaining a SHA2 credential | 62d | 2013-07-22 A | 2013-10-15 A |  | 100% |  | finish no earlier than 2013-10-15 |
| 14 |  | Patching a caGrid 1.4 Distributions | 62d | 2013-07-22 A | 2013-10-15 A |  | 100% |  | finish no earlier than 2013-10-15 |
| 15 |  | Patching caGrid 1.x Services to Support SHA2 | 63d | 2013-07-19 A | 2013-10-15 A |  | 100% |  | finish no earlier than 2013-10-15 |
| 16 |  | Create a Trust Fabirc CA | 62d | 2013-07-22 A | 2013-10-15 A |  | 100% |  | finish no earlier than 2013-10-15 |
| 17 | 4.2.5 | **Administrator Guides** | 26d? | 2014-01-21 A | 2014-02-25 A |  | 100% |  |  |
| 18 |  | Dorian | 5d | 2014-01-21 A | 2014-01-27 A |  | 100% |  | finish no earlier than 2014-01-27 |
| 19 |  | Grid Trust Service (GTS) | 5d | 2014-01-28 A | 2014-02-03 A | 18 | 100% |  | finish no earlier than 2014-02-03 |
| 20 |  | Global Model Exchange (GME) | 5d | 2014-01-28 A | 2014-02-03 A |  | 100% |  | finish no earlier than 2014-02-03 |
| 21 |  | Support documentation on Wiki | 1d? | 2014-02-04 A | 2014-02-04 A | 20 | 100% |  | start no earlier than 2014-01-28 |
| 22 |  | Grid Grouper | 10d | 2014-02-05 A | 2014-02-18 A | 19, 21 | 100% |  | finish no earlier than 2014-02-10 |
| 23 |  | Credential Delegation Service (CDS) | 5d | 2014-02-19 A | 2014-02-25 A | 22 | 100% |  |  |
| 24 | 4.3 | **Deployment** | 120d | 2013-10-18 A | 2014-04-03 |  | 14% | 128d |  |
| 25 |  | Architecture Review Checklist | 4.75d | 2013-10-28 A | 2013-11-01 A | 11 | 100% |  |  |
| 26 |  | Deployment to NCI QA | 19.75d | 2013-10-21 A | 2013-11-15 A | 11 | 100% |  |  |
| 27 |  | Supporting QA Team | 70d | 2013-10-28 A | 2014-01-31 |  |  | 172d | start no earlier than 2013-10-28 |
| 28 | 4.3.4 | **QA Testing** | 43d | 2014-01-02 A | 2014-03-03 | 26 |  | 130d |  |
| 29 | 4.3.4.1 | **Iteration 1** | 5d | 2014-01-02 | 2014-01-08 |  |  | 163d |  |
| 30 |  | QA App Scan | 5d | 2014-01-02 | 2014-01-08 |  |  | 163d | start no earlier than 2014-01-02 |
| 31 |  | Iteration 2 | 5d | 2014-02-25 A | 2014-03-03 | 29 |  | 130d | start no earlier than 2014-01-20 |
| 32 | 4.3.5 | **Training Grid** | 8d | 2013-10-18 A | 2013-10-29 A |  | 100% |  |  |
| 33 | 4.3.5.1 | **Iteration 1** | 8d | 2013-10-18 A | 2013-10-29 A |  | 100% |  |  |
| 34 |  | Start | 0d | 2013-10-18 A | 2013-10-18 A | 29 | 100% |  |  |
| 35 |  | Dorian | 1d | 2013-10-21 A | 2013-10-21 A | 34 | 100% |  |  |
| 36 |  | Master GTS | 1d | 2013-10-22 A | 2013-10-22 A | 34 | 100% |  |  |
| 37 |  | Slave GTS | 1d | 2013-10-23 A | 2013-10-23 A | 34 | 100% |  |  |
| 38 |  | Index | 1d | 2013-10-24 A | 2013-10-24 A | 34 | 100% |  |  |
| 39 |  | Grid Grouper | 1d | 2013-10-25 A | 2013-10-25 A | 34 | 100% |  |  |
| 40 |  | MMS | 1d | 2013-10-28 A | 2013-10-28 A | 34 | 100% |  |  |
| 41 |  | GME | 1d | 2013-10-29 A | 2013-10-29 A | 34 | 100% |  |  |
| 42 |  | End | 0d | 2013-10-29 A | 2013-10-29 A | 37, 38, 39, 35, 40, 36, 41 | 100% |  |  |
| 43 |  | QA report for stage deployment | 4d | 2014-03-04 A | 2014-03-07 | 31 | 75% | 127d | finish no earlier than 2014-02-07 |
| 44 |  | Deployment to NCI Stage | 5d | 2014-03-10 | 2014-03-14 | 43 |  | 127d |  |
| 45 |  | Stage App Scan | 3d | 2014-03-17 | 2014-03-19 | 44 |  | 127d |  |
| 46 |  | QA report for production deployment | 6d | 2014-03-20 | 2014-03-27 | 45 |  | 127d | finish no earlier than 2014-02-07 |
| 47 |  | Deployment to NCI Production | 5d | 2014-03-28 | 2014-04-03 | 46 |  | 127d |  |
| 48 |  | Deployment Support | 21.3w | 2013-11-01 | 2014-04-01 | 25 |  | 130.75d | start no earlier than 2013-10-21 |
| 49 |  | Release Support | 1d | 2014-04-04 | 2014-04-04 | 47 |  | 127d |  |
| 50 |  | End | 0h | 2014-04-03 | 2014-04-03 | 26, 47, 25, 28 |  | 128d | start no earlier than 2014-02-20 |
| 51 | 5 | **caGrid 2.1** | 190d | 2013-12-30 A | 2014-09-19 |  | 14% | 7d |  |
| 52 |  | Start | 0h | 2013-12-30 A | 2013-12-30 A |  | 100% |  |  |
| 53 | 5.2 | **Service Development** | 131d | 2013-12-30 A | 2014-06-30 |  | 30% | 52d |  |
| 54 |  | Start | 0h | 2013-12-30 A | 2013-12-30 A | 52 | 100% |  |  |
| 55 |  | SyncGTS | 13.2w | 2013-12-30 A | 2014-03-31 | 54 | 50% | 117d | finish no earlier than 2014-03-31 |
| 56 |  | MMS Service | 12.8w | 2014-01-01 A | 2014-03-31 |  | 75% | 117d | finish no earlier than 2014-03-31 |
| 57 |  | Index Service | 15.8w | 2014-02-11 | 2014-05-30 |  |  | 73d | finish no earlier than 2014-05-30 |
| 58 |  | Authentication Service | 13w | 2014-04-01 | 2014-06-30 |  |  | 52d | finish no earlier than 2014-06-30 |
| 59 |  | End | 0h | 2014-06-30 | 2014-06-30 | 58, 56, 55, 57 |  | 52d |  |
| 60 | 5.3 | **Cookbooks** | 150d | 2014-02-24 A | 2014-09-19 |  | 7% | 7d |  |
| 61 |  | Define cookbook scope | 10d | 2014-02-24 A | 2014-03-07 A |  | 100% |  | start no earlier than 2014-02-24 |
| 62 |  | Developing Maven Archtypes project | 30d | 2014-03-10 | 2014-04-18 | 61 |  | 7d |  |
| 63 |  | How to develop a caGrid 2.0 analytical service | 50d | 2014-04-21 | 2014-06-27 | 62 |  | 7d |  |
| 64 |  | How to Develop a Secure caGrid 2.1 Service (Cookbook) | 30d | 2014-06-30 | 2014-08-08 | 63 |  | 7d | finish no earlier than 2014-07-31 |
| 65 |  | How to upgrade caGrid 1.4 analytical service to caGrid 2.0 analytical service | 30d | 2014-08-11 | 2014-09-19 | 64 |  | 7d |  |
| 66 | 5.4 | **Documentation** | 106d | 2014-03-31 | 2014-08-25 |  |  | 26d |  |
| 67 |  | Requirements Document | 5d | 2014-03-31 | 2014-04-04 |  |  | 127d | start no earlier than 2014-03-31 |
| 68 |  | QA/System Installation/Upgrade Guide | 25d | 2014-06-17 | 2014-07-21 |  |  | 7d | start no earlier than 2014-06-17 |
| 69 | 5.4.3 | **Developer Guides** | 14d | 2014-07-01 | 2014-07-18 |  |  | 52d |  |
| 70 |  | Authentication Service | 14d | 2014-07-01 | 2014-07-18 | 59 |  | 52d | finish no earlier than 2013-08-20 |

| ID | WBS | Task | Duration | Start | Finish | Predecessors | Complete | Total float | Constraint |
| --- | --- | --- | --- | --- | --- | --- | --- | --- | --- |
| 71 | 5.4.4 | **Administrator Guides** | 25d | 2014-07-22 | 2014-08-25 | 68 |  | 26d |  |
| 72 |  | Dorian | 10d | 2014-07-22 | 2014-08-04 |  |  | 41d | finish no earlier than 2014-08-04 |
| 73 |  | Grid Trust Service (GTS) | 11d | 2014-08-04 | 2014-08-18 |  |  | 26d | finish no earlier than 2014-08-18 |
| 74 |  | Grid Grouper | 5d | 2014-08-19 | 2014-08-25 | 73 |  | 26d | start no earlier than 2014-08-19 |
| 75 |  | Credential Delegation Service (CDS) | 5d | 2014-07-22 | 2014-07-28 |  |  | 31d | finish no earlier than 2014-07-28 |
| 76 |  | Global Model Exchange (GME) | 5d | 2014-07-29 | 2014-08-04 | 75 |  | 31d | finish no earlier than 2014-08-04 |
| 77 |  | Index Service | 10d | 2014-08-05 | 2014-08-18 | 76 |  | 31d | start no earlier than 2014-08-05 |
| 78 |  | Authentication Service | 10d | 2014-07-22 | 2014-08-04 |  |  | 31d | finish no earlier than 2014-08-04 |
| 79 |  | MMS Service | 10d | 2014-08-05 | 2014-08-18 | 78 |  | 31d | start no earlier than 2014-08-05 |
| 80 | 5.5 | **Deployment** | 43d | 2014-07-22 | 2014-09-18 |  |  | 7d |  |
| 81 |  | Architecture Review Checklist | 4d | 2014-07-22 | 2014-07-25 | 68 |  | 9d |  |
| 82 |  | Deployment to NCI QA | 1w | 2014-07-22 | 2014-07-28 | 68 |  | 7d |  |
| 83 |  | Supporting QA Team | 2w | 2014-07-22 | 2014-08-04 | 68 |  | 41d |  |
| 84 | 5.5.4 | **QA Testing** | 25d | 2014-07-29 | 2014-09-01 |  |  | 7d |  |
| 85 |  | Iteration 1 | 10d | 2014-07-29 | 2014-08-11 | 82 |  | 7d |  |
| 86 |  | QA AppScan for iteration#1 | 5d | 2014-08-12 | 2014-08-18 | 85 |  | 7d |  |
| 87 |  | Iteration 2 | 6d | 2014-08-19 | 2014-08-26 | 86 |  | 7d |  |
| 88 |  | QA AppScan for iteration#2 | 4d | 2014-08-27 | 2014-09-01 | 87 |  | 7d |  |
| 89 | 5.5.5 | **Training Grid** | 7d | 2014-08-18 | 2014-08-27 |  |  | 24d |  |
| 90 | 5.5.5.1 | **Iteration 1** | 7d | 2014-08-18 | 2014-08-27 |  |  | 24d |  |
| 91 |  | Start | 0d | 2014-08-18 | 2014-08-18 | 86 |  | 24d |  |
| 92 |  | Dorian | 1d | 2014-08-19 | 2014-08-19 | 91 |  | 24d |  |
| 93 |  | Master GTS | 1d | 2014-08-20 | 2014-08-20 | 92 |  | 24d |  |
| 94 |  | Slave GTS | 1d | 2014-08-21 | 2014-08-21 | 93 |  | 24d |  |
| 95 |  | Index | 1d | 2014-08-22 | 2014-08-22 | 94 |  | 24d |  |
| 96 |  | Grid Grouper | 1d | 2014-08-25 | 2014-08-25 | 95 |  | 24d |  |
| 97 |  | MMS | 1d | 2014-08-26 | 2014-08-26 | 96 |  | 24d |  |
| 98 |  | GME | 1d | 2014-08-27 | 2014-08-27 | 97 |  | 24d |  |
| 99 |  | End | 0d | 2014-08-27 | 2014-08-27 | 91, 92, 93, 94, 95, 96, 97, 98 |  | 24d |  |
| 100 |  | Deployment to NCI Stage | 5d | 2014-09-02 | 2014-09-08 | 88 |  | 7d |  |
| 101 |  | Stage App Scan | 3d | 2014-09-09 | 2014-09-11 | 100 |  | 7d |  |
| 102 |  | Deployment to NCI Production | 5d | 2014-09-12 | 2014-09-18 | 101 |  | 7d |  |
| 103 |  | Deployment Support | 38d | 2014-07-28 | 2014-09-17 | 81 |  | 9d | finish no earlier than 2014-07-02 |
| 104 |  | Release Support | 1d | 2014-09-19 | 2014-09-19 | 102 |  | 7d |  |
| 105 |  | End | 0h | 2014-09-19 | 2014-09-19 | 104 |  | 7d |  |
| 106 | 6 | **caGrid Portal** | 96d | 2014-02-03 A | 2014-06-16 |  | 4% | 76d |  |
| 107 |  | Start | 0d | 2014-02-03 | 2014-02-03 |  |  | 172d | start no earlier than 2014-02-03 |
| 108 | 6.2 | **Portal Development** | 45d | 2014-03-03 A | 2014-05-02 |  | 11% | 76d |  |
| 109 |  | Start | 0d | 2014-03-03 | 2014-03-03 |  |  | 81d | start no earlier than 2014-03-03 |
| 110 |  | Requirements Document | 10d | 2014-03-03 A | 2014-03-14 | 109 | 50% | 76d |  |
| 111 |  | caGrid Portal Framework setup | 10d | 2014-03-17 | 2014-03-28 | 110 |  | 76d |  |
| 112 |  | Account Registration/Management | 20d | 2014-03-31 | 2014-04-25 | 111 |  | 76d |  |
| 113 |  | Unit Testing | 5d | 2014-04-28 | 2014-05-02 | 112 |  | 76d |  |
| 114 |  | End | 0d | 2014-05-02 | 2014-05-02 | 113 |  | 76d |  |
| 115 | 6.3 | **Documentation** | 5d | 2014-05-05 | 2014-05-09 |  |  | 102d |  |
| 116 |  | User Guide | 5d | 2014-05-05 | 2014-05-09 | 114 |  | 102d |  |
| 117 | 6.4 | **Deployment** | 31d | 2014-05-05 | 2014-06-16 |  |  | 76d |  |
| 118 |  | Architecture Review Checklist | 1d | 2014-05-05 | 2014-05-05 | 114 |  | 76d |  |
| 119 |  | Deployment to NCI QA | 5d | 2014-05-06 | 2014-05-12 | 118 |  | 77d |  |
| 120 |  | Supporting QA Team | 5d | 2014-05-06 | 2014-05-12 | 118 |  | 101d |  |
| 121 | 6.4.4 | **QA Testing** | 3d | 2014-05-13 | 2014-05-15 |  |  | 77d |  |
| 122 |  | Iteration 1 | 3d | 2014-05-13 | 2014-05-15 | 119 |  | 77d |  |
| 123 |  | QA App Scan | 5d | 2014-05-16 | 2014-05-22 | 122 |  | 77d |  |
| 124 |  | Deployment to NCI Stage | 5d | 2014-05-23 | 2014-05-29 | 123 |  | 77d |  |
| 125 |  | Stage App Scan | 5d | 2014-05-30 | 2014-06-05 | 124 |  | 77d |  |
| 126 |  | Deployment to NCI Production | 5d | 2014-06-06 | 2014-06-12 | 125 |  | 77d |  |
| 127 |  | Deployment Support | 30d | 2014-05-06 | 2014-06-16 | 118 |  | 76d | start no earlier than 2014-02-26 |
| 128 |  | Release Support | 1d | 2014-06-13 | 2014-06-13 | 126 |  | 77d |  |
| 129 |  | End | 0d | 2014-06-13 | 2014-06-13 | 128 |  | 77d |  |
| 130 |  | End | 0d | 2014-09-30 | 2014-09-30 |  |  | 1d | start no earlier than 2014-09-30 |

## Version 2 (saved 2014-03-07)

Note of the change: Adding caGrid project schedule

Last finish stays 2014-09-30. Complete tasks 24 → 27.

Added:

| ID | Task | Duration | Start | Finish | Constraint |
| --- | --- | --- | --- | --- | --- |
| 49 | Jenkins setup | 5d | 2014-02-21 A | 2014-02-27 A | start no earlier than 2014-02-21 |

Changed:

| ID | Task | Start | Finish | Duration | Complete | Total float | Other |
| --- | --- | --- | --- | --- | --- | --- | --- |
| 5 | caGrid Project Management |  |  |  |  |  | baseline start none → 2013-10-18; baseline finish none → 2013-10-18 |
| 6 | caGrid Project Management |  |  |  |  |  | baseline start none → 2014-09-30; baseline finish none → 2014-09-30 |
| 10 | **caGrid 2.0** |  |  |  | 60% → 63% |  | baseline finish 2014-02-20 → 2014-04-04 |
| 12 | **Documentation** |  | 2014-02-25 A |  | 99% → 100% | 0d → none | baseline finish 2014-02-14 → 2014-02-25 |
| 17 | **Administrator Guides** |  |  |  |  |  | baseline start 2014-02-10 → 2014-01-21; baseline finish 2014-02-14 → 2014-02-25 |
| 18 | Dorian |  |  |  |  |  | baseline start none → 2014-01-21; baseline finish none → 2014-01-27 |
| 19 | Grid Trust Service (GTS) |  |  |  |  |  | baseline start none → 2014-01-28; baseline finish none → 2014-02-03 |
| 20 | Global Model Exchange (GME) |  |  |  |  |  | baseline start none → 2014-01-28; baseline finish none → 2014-02-03 |
| 21 | Support documentation on Wiki |  |  |  |  |  | baseline start none → 2014-02-04; baseline finish none → 2014-02-04 |
| 22 | Grid Grouper |  |  |  |  |  | baseline start none → 2014-02-05; baseline finish none → 2014-02-18 |
| 23 | Credential Delegation Service (CDS) |  |  |  |  |  | baseline start none → 2014-02-19; baseline finish none → 2014-02-25 |
| 24 | **Deployment** |  |  |  | 14% → 20% |  | baseline finish 2014-02-19 → 2014-04-03 |
| 28 | **QA Testing** |  |  |  | 0% → 99% | 130d → 0d | baseline start 2013-10-28 → 2014-01-02; baseline finish 2014-01-31 → 2014-03-03 |
| 29 | **Iteration 1** | 2014-01-02 A | 2014-01-08 A |  | 0% → 100% | 163d → none | baseline start 2013-10-28 → 2014-01-02; baseline finish 2013-11-15 → 2014-01-08 |
| 30 | QA App Scan | 2014-01-02 A | 2014-01-08 A |  | 0% → 100% | 163d → none |  |
| 31 | Iteration 2 |  | 2014-03-03 A |  | 0% → 100% | 130d → none | baseline start 2014-01-20 → 2014-02-25; baseline finish 2014-01-31 → 2014-03-03 |
| 32 | **Training Grid** |  |  |  |  |  | baseline finish 2014-02-11 → 2013-10-29 |
| 33 | **Iteration 1** |  |  |  |  |  | baseline finish 2014-02-11 → 2013-10-29 |
| 43 | QA report for stage deployment |  |  |  |  |  | baseline start none → 2014-03-04; baseline finish none → 2014-03-07 |
| 44 | Deployment to NCI Stage |  |  |  |  |  | baseline start 2014-02-03 → 2014-03-10; baseline finish 2014-02-07 → 2014-03-14 |
| 45 | Stage App Scan |  |  |  |  |  | baseline start 2014-02-10 → 2014-03-17; baseline finish 2014-02-12 → 2014-03-19 |
| 46 | QA report for production deployment |  |  |  |  |  | baseline start none → 2014-03-20; baseline finish none → 2014-03-27 |
| 47 | Deployment to NCI Production |  |  |  |  |  | baseline start 2014-02-13 → 2014-03-28; baseline finish 2014-02-19 → 2014-04-03 |
| 48 | Deployment Support |  |  |  |  |  | baseline start 2013-10-21 → 2013-11-01; baseline finish 2014-02-19 → 2014-04-01 |
| 50 | Release Support |  |  |  |  |  | baseline start 2014-02-20 → 2014-04-04; baseline finish 2014-02-20 → 2014-04-04 |
| 51 | End |  |  |  |  |  | baseline start 2014-02-20 → 2014-04-03; baseline finish 2014-02-20 → 2014-04-03 |
| 52 | **caGrid 2.1** |  |  |  | 14% → 15% |  | baseline start 2013-07-22 → 2013-12-30; baseline finish 2014-07-04 → 2014-09-19 |
| 53 | Start |  |  |  |  |  | baseline finish 2014-02-10 → 2013-12-30 |
| 54 | **Service Development** |  | 2014-06-30 → 2014-05-30 (-31d) | 131d → 110d | 30% → 35% | 52d → 73d | baseline finish 2014-05-09 → 2014-05-30 |
| 56 | SyncGTS |  |  |  | 50% → 54% |  | baseline finish 2014-01-31 → 2014-03-31 |
| 57 | MMS Service |  |  |  |  |  | baseline start 2014-02-03 → 2014-01-01; baseline finish 2014-02-28 → 2014-03-31 |
| 58 | Index Service |  |  |  |  |  | baseline start 2014-03-03 → 2014-02-11; baseline finish 2014-04-11 → 2014-05-30 |
| 59 | Authentication Service | 2014-04-01 → 2014-03-17 (-15d) | 2014-06-30 → 2014-04-30 (-61d) | 13w → 6.6w |  | 52d → 95d | constraint finish no earlier than 2014-06-30 → finish no earlier than 2014-04-30; baseline start 2014-04-14 → 2014-03-17; baseline finish 2014-05-09 → 2014-04-30 |
| 60 | End | 2014-06-30 → 2014-05-30 (-31d) | 2014-06-30 → 2014-05-30 (-31d) |  |  | 52d → 73d | baseline start 2014-05-09 → 2014-05-30; baseline finish 2014-05-09 → 2014-05-30 |
| 61 | **Cookbooks** |  |  |  |  |  | baseline start none → 2014-02-24; baseline finish none → 2014-09-19 |
| 62 | Define cookbook scope |  |  |  |  |  | baseline start none → 2014-02-24; baseline finish none → 2014-03-07 |
| 63 | Developing Maven Archtypes project |  |  |  |  |  | baseline start none → 2014-03-10; baseline finish none → 2014-04-18 |
| 64 | How to develop a caGrid 2.0 analytical service |  |  |  |  |  | baseline start none → 2014-04-21; baseline finish none → 2014-06-27 |
| 65 | How to Develop a Secure caGrid 2.1 Service (Cookbook) |  |  |  |  |  | baseline start none → 2014-06-30; baseline finish none → 2014-08-08 |
| 66 | How to upgrade caGrid 1.4 analytical service to caGrid 2.0 analytical service |  |  |  |  |  | baseline start none → 2014-08-11; baseline finish none → 2014-09-19 |
| 67 | **Documentation** | 2014-03-31 → 2014-03-10 (-21d) |  | 106d → 121d |  |  | baseline start 2014-05-12 → 2014-03-10; baseline finish 2014-07-04 → 2014-08-25 |
| 68 | Requirements Document | 2014-03-31 → 2014-03-10 (-21d) | 2014-04-04 → 2014-03-14 (-21d) |  |  | 127d → 142d | constraint start no earlier than 2014-03-31 → start no earlier than 2014-03-10; baseline start none → 2014-03-10; baseline finish none → 2014-03-14 |
| 69 | QA/System Installation/Upgrade Guide |  |  |  |  |  | baseline start none → 2014-06-17; baseline finish none → 2014-07-21 |
| 70 | **Developer Guides** | 2014-07-01 → 2014-06-02 (-29d) | 2014-07-18 → 2014-06-19 (-29d) |  |  | 52d → 73d | baseline start 2014-05-19 → 2014-06-02; baseline finish 2014-06-13 → 2014-06-19 |
| 71 | Authentication Service | 2014-07-01 → 2014-06-02 (-29d) | 2014-07-18 → 2014-06-19 (-29d) |  |  | 52d → 73d | baseline start none → 2014-06-02; baseline finish none → 2014-06-19 |
| 72 | **Administrator Guides** |  |  |  |  |  | baseline start 2014-06-16 → 2014-07-22; baseline finish 2014-07-04 → 2014-08-25 |
| 73 | Dorian |  |  |  |  |  | baseline start none → 2014-07-22; baseline finish none → 2014-08-04 |
| 74 | Grid Trust Service (GTS) |  |  |  |  |  | baseline start none → 2014-08-04; baseline finish none → 2014-08-18 |
| 75 | Grid Grouper |  |  |  |  |  | baseline start none → 2014-08-19; baseline finish none → 2014-08-25 |
| 76 | Credential Delegation Service (CDS) |  |  |  |  |  | baseline start none → 2014-07-22; baseline finish none → 2014-07-28 |
| 77 | Global Model Exchange (GME) |  |  |  |  |  | baseline start none → 2014-07-29; baseline finish none → 2014-08-04 |
| 78 | Index Service |  |  |  |  |  | baseline start none → 2014-08-05; baseline finish none → 2014-08-18 |
| 79 | Authentication Service |  |  |  |  |  | baseline start none → 2014-07-22; baseline finish none → 2014-08-04 |
| 80 | MMS Service |  |  |  |  |  | baseline start none → 2014-08-05; baseline finish none → 2014-08-18 |
| 81 | **Deployment** |  |  |  |  |  | baseline start 2014-05-09 → 2014-07-22; baseline finish 2014-07-02 → 2014-09-18 |
| 82 | Architecture Review Checklist |  |  |  |  |  | baseline start 2014-05-09 → 2014-07-22; baseline finish 2014-05-09 → 2014-07-25 |
| 83 | Deployment to NCI QA |  |  |  |  |  | baseline start 2014-05-12 → 2014-07-22; baseline finish 2014-05-16 → 2014-07-28 |
| 84 | Supporting QA Team |  |  |  |  |  | baseline start 2014-05-12 → 2014-07-22; baseline finish 2014-05-23 → 2014-08-04 |
| 85 | **QA Testing** |  |  |  |  |  | baseline start 2014-05-12 → 2014-07-29; baseline finish 2014-06-06 → 2014-09-01 |
| 86 | Iteration 1 |  |  |  |  |  | baseline start 2014-05-12 → 2014-07-29; baseline finish 2014-05-23 → 2014-08-11 |
| 87 | QA AppScan for iteration#1 |  |  |  |  |  | baseline start none → 2014-08-12; baseline finish none → 2014-08-18 |
| 88 | Iteration 2 |  |  |  |  |  | baseline start 2014-05-26 → 2014-08-19; baseline finish 2014-06-06 → 2014-08-26 |
| 89 | QA AppScan for iteration#2 |  |  |  |  |  | baseline start none → 2014-08-27; baseline finish none → 2014-09-01 |
| 90 | **Training Grid** |  |  |  |  |  | baseline start 2014-05-26 → 2014-08-18; baseline finish 2014-06-17 → 2014-08-27 |
| 91 | **Iteration 1** |  |  |  |  |  | baseline start 2014-05-26 → 2014-08-18; baseline finish 2014-06-04 → 2014-08-27 |
| 92 | Start |  |  |  |  |  | baseline start 2014-05-26 → 2014-08-18; baseline finish 2014-05-26 → 2014-08-18 |
| 93 | Dorian |  |  |  |  |  | baseline start 2014-05-27 → 2014-08-19; baseline finish 2014-05-27 → 2014-08-19 |
| 94 | Master GTS |  |  |  |  |  | baseline start 2014-05-28 → 2014-08-20; baseline finish 2014-05-28 → 2014-08-20 |
| 95 | Slave GTS |  |  |  |  |  | baseline start 2014-05-29 → 2014-08-21; baseline finish 2014-05-29 → 2014-08-21 |
| 96 | Index |  |  |  |  |  | baseline start 2014-05-30 → 2014-08-22; baseline finish 2014-05-30 → 2014-08-22 |

| ID | Task | Other |
| --- | --- | --- |
| 97 | Grid Grouper | baseline start 2014-06-02 → 2014-08-25; baseline finish 2014-06-02 → 2014-08-25 |
| 98 | MMS | baseline start 2014-06-03 → 2014-08-26; baseline finish 2014-06-03 → 2014-08-26 |
| 99 | GME | baseline start 2014-06-04 → 2014-08-27; baseline finish 2014-06-04 → 2014-08-27 |
| 100 | End | baseline start 2014-06-04 → 2014-08-27; baseline finish 2014-06-04 → 2014-08-27 |
| 101 | Deployment to NCI Stage | baseline start 2014-06-16 → 2014-09-02; baseline finish 2014-06-20 → 2014-09-08 |
| 102 | Stage App Scan | baseline start 2014-06-23 → 2014-09-09; baseline finish 2014-06-25 → 2014-09-11 |
| 103 | Deployment to NCI Production | baseline start 2014-06-26 → 2014-09-12; baseline finish 2014-07-02 → 2014-09-18 |
| 104 | Deployment Support | baseline start 2014-05-12 → 2014-07-28; baseline finish 2014-07-02 → 2014-09-17 |
| 105 | Release Support | baseline start 2013-07-22 → 2014-09-19; baseline finish 2013-07-23 → 2014-09-19 |
| 106 | End | baseline start 2013-07-22 → 2014-09-19; baseline finish 2013-07-22 → 2014-09-19 |
| 107 | **caGrid Portal** | baseline start 2013-07-22 → 2014-02-03; baseline finish 2014-04-09 → 2014-06-16 |
| 109 | **Portal Development** | baseline start 2014-02-03 → 2014-03-03; baseline finish 2014-02-24 → 2014-05-02 |
| 110 | Start | baseline start 2014-02-03 → 2014-03-03; baseline finish 2014-02-03 → 2014-03-03 |
| 111 | Requirements Document | baseline start 2014-02-03 → 2014-03-03; baseline finish 2014-02-05 → 2014-03-14 |
| 112 | caGrid Portal Framework setup | baseline start 2014-02-06 → 2014-03-17; baseline finish 2014-02-12 → 2014-03-28 |
| 113 | Account Registration/Management | baseline start 2014-02-13 → 2014-03-31; baseline finish 2014-02-19 → 2014-04-25 |
| 114 | Unit Testing | baseline start 2014-02-20 → 2014-04-28; baseline finish 2014-02-24 → 2014-05-02 |
| 115 | End | baseline start 2014-02-24 → 2014-05-02; baseline finish 2014-02-24 → 2014-05-02 |
| 116 | **Documentation** | baseline start 2014-02-25 → 2014-05-05; baseline finish 2014-03-04 → 2014-05-09 |
| 117 | User Guide | baseline start 2014-02-25 → 2014-05-05; baseline finish 2014-02-27 → 2014-05-09 |
| 118 | **Deployment** | baseline start 2013-07-22 → 2014-05-05; baseline finish 2014-04-08 → 2014-06-16 |
| 119 | Architecture Review Checklist | baseline start 2014-02-25 → 2014-05-05; baseline finish 2014-02-25 → 2014-05-05 |
| 120 | Deployment to NCI QA | baseline start 2014-02-26 → 2014-05-06; baseline finish 2014-03-04 → 2014-05-12 |
| 121 | Supporting QA Team | baseline start 2013-07-22 → 2014-05-06; baseline finish 2013-07-23 → 2014-05-12 |
| 122 | **QA Testing** | baseline start 2014-03-05 → 2014-05-13; baseline finish 2014-03-11 → 2014-05-15 |
| 123 | Iteration 1 | baseline start 2014-03-05 → 2014-05-13; baseline finish 2014-03-07 → 2014-05-15 |
| 124 | QA App Scan | baseline start 2014-03-12 → 2014-05-16; baseline finish 2014-03-18 → 2014-05-22 |
| 125 | Deployment to NCI Stage | baseline start 2014-03-19 → 2014-05-23; baseline finish 2014-03-25 → 2014-05-29 |
| 126 | Stage App Scan | baseline start 2014-03-26 → 2014-05-30; baseline finish 2014-04-01 → 2014-06-05 |
| 127 | Deployment to NCI Production | baseline start 2014-04-02 → 2014-06-06; baseline finish 2014-04-08 → 2014-06-12 |
| 128 | Deployment Support | baseline start 2014-02-26 → 2014-05-06; baseline finish 2014-04-08 → 2014-06-16 |
| 129 | Release Support | baseline start 2014-04-09 → 2014-06-13; baseline finish 2014-04-09 → 2014-06-13 |
| 130 | End | baseline start 2014-04-09 → 2014-06-13; baseline finish 2014-04-09 → 2014-06-13 |

## Version 3 (saved 2014-03-12)

Last finish stays 2014-09-30.

Changed:

| ID | Task | Complete |
| --- | --- | --- |
| 52 | **caGrid 2.1** | 15% → 18% |
| 54 | **Service Development** | 35% → 42% |
| 56 | SyncGTS | 54% → 65% |
| 57 | MMS Service | 75% → 90% |

## Version 4 (saved 2014-03-21)

Note of the change: Weekly status update

Last finish stays 2014-09-30.

Changed:

| ID | Task | Start | Duration | Complete | Other |
| --- | --- | --- | --- | --- | --- |
| 52 | **caGrid 2.1** |  |  | 18% → 20% |  |
| 54 | **Service Development** |  |  | 42% → 48% |  |
| 58 | Index Service | 2014-02-11 → 2014-03-24 (+41d) | 15.8w → 10w |  | constraint finish no earlier than 2014-05-30 → start no earlier than 2014-03-24 |
| 59 | Authentication Service | 2014-03-17 A |  | 0% → 5% |  |
| 67 | **Documentation** | 2014-03-10 A |  | 0% → 4% |  |
| 68 | Requirements Document | 2014-03-10 A |  | 0% → 85% |  |

## Version 5 (saved 2014-04-18)

Note of the change: Project schedule updates

Last finish stays 2014-09-30. Complete tasks 27 → 31.

Added:

| ID | Task | Duration | Start | Finish | Predecessors | Resources |
| --- | --- | --- | --- | --- | --- | --- |
| 47 | Review QA Report for Approval | 5d | 2014-03-28 | 2014-04-03 | 46 | Ian Fore |
| 70 | Review requirements | 5d | 2014-03-17 | 2014-03-21 | 69 | Ian Fore |
| 114 | Review requirements | 5d | 2014-03-17 | 2014-03-21 | 113 | Ian Fore |

Changed:

| ID | Task | Start | Finish | Duration | Complete | Total float | Predecessors | Other |
| --- | --- | --- | --- | --- | --- | --- | --- | --- |
| 10 | **caGrid 2.0** |  | 2014-04-04 → 2014-04-11 (+7d) | 186d? → 191d? | 63% → 62% | 127d → 122d |  |  |
| 24 | **Deployment** |  | 2014-04-03 → 2014-04-10 (+7d) | 120d → 125d |  | 128d → 123d |  |  |
| 48 | Deployment to NCI Production | 2014-03-28 → 2014-04-04 (+7d) | 2014-04-03 → 2014-04-10 (+7d) |  |  | 127d → 122d | 46 → 47 |  |
| 51 | Release Support | 2014-04-04 → 2014-04-11 (+7d) | 2014-04-04 → 2014-04-11 (+7d) |  |  | 127d → 122d |  |  |
| 52 | End | 2014-04-03 → 2014-04-10 (+7d) | 2014-04-03 → 2014-04-10 (+7d) |  |  | 128d → 123d |  |  |
| 53 | **caGrid 2.1** |  | 2014-09-19 → 2014-09-24 (+5d) | 190d → 193d | 20% → 27% | 7d → 4d |  |  |
| 55 | **Service Development** |  |  |  | 48% → 62% |  |  |  |
| 57 | SyncGTS |  | 2014-03-31 A |  | 65% → 100% | 117d → none |  |  |
| 58 | MMS Service |  | 2014-03-31 A |  | 90% → 100% | 117d → none |  |  |
| 59 | Index Service | 2014-03-24 A |  |  | 0% → 10% |  |  |  |
| 60 | Authentication Service |  | 2014-04-30 → 2014-05-15 (+15d) | 6.6w → 8.8w | 5% → 10% | 95d → 84d |  | constraint finish no earlier than 2014-04-30 → finish no earlier than 2014-05-15 |
| 62 | **Cookbooks** |  | 2014-09-19 → 2014-09-24 (+5d) | 150d → 153d | 7% → 10% | 7d → 4d |  |  |
| 64 | Developing Maven Archtypes project | 2014-03-10 → 2014-04-10 A (+31d) | 2014-04-18 → 2014-05-21 (+33d) |  | 0% → 10% | 7d → 4d | 63 → none | constraint none → start no earlier than 2014-04-10; resources none → Prasad Konka |
| 65 | How to develop a caGrid 2.0 analytical service | 2014-04-21 → 2014-05-22 (+31d) | 2014-06-27 → 2014-07-02 (+5d) | 50d → 30d |  | 7d → 4d |  |  |
| 66 | How to Develop a Secure caGrid 2.1 Service (Cookbook) | 2014-06-30 → 2014-07-03 (+3d) | 2014-08-08 → 2014-08-13 (+5d) |  |  | 7d → 4d |  |  |
| 67 | How to upgrade caGrid 1.4 analytical service to caGrid 2.0 analytical service | 2014-08-11 → 2014-08-14 (+3d) | 2014-09-19 → 2014-09-24 (+5d) |  |  | 7d → 4d |  |  |
| 68 | **Documentation** |  |  |  | 4% → 6% |  |  |  |
| 69 | Requirements Document |  | 2014-03-14 A |  | 85% → 100% | 142d → none |  |  |
| 74 | **Administrator Guides** | 2014-07-22 → 2014-04-01 A (-112d) |  | 25d → 105d | 0% → 3% |  |  |  |
| 82 | MMS Service | 2014-08-05 → 2014-04-01 A (-126d) | 2014-08-18 → 2014-04-25 (-115d) | 10d → 19d | 0% → 10% | 31d → none | 81 → 58 | constraint start no earlier than 2014-08-05 → finish no earlier than 2014-04-25 |
| 109 | **caGrid Portal** |  | 2014-06-16 → 2014-06-23 (+7d) | 96d → 101d | 4% → 8% | 76d → 71d |  |  |
| 111 | **Portal Development** |  | 2014-05-02 → 2014-05-09 (+7d) | 45d → 50d | 11% → 20% | 76d → 102d |  |  |
| 113 | Requirements Document |  | 2014-03-14 A |  | 50% → 100% | 76d → none |  |  |
| 115 | caGrid Portal Framework setup | 2014-03-17 → 2014-03-24 (+7d) | 2014-03-28 → 2014-04-04 (+7d) |  |  | 76d → 71d | 113 → 114 |  |
| 116 | Account Registration/Management | 2014-03-31 → 2014-04-07 (+7d) | 2014-04-25 → 2014-05-02 (+7d) |  |  | 76d → 71d |  |  |
| 117 | Unit Testing | 2014-04-28 → 2014-05-05 (+7d) | 2014-05-02 → 2014-05-09 (+7d) |  |  | 76d → 71d |  |  |
| 118 | End | 2014-05-02 → 2014-05-09 (+7d) | 2014-05-02 → 2014-05-09 (+7d) |  |  | 76d → 71d |  |  |
| 119 | **Documentation** | 2014-05-05 → 2014-05-12 (+7d) | 2014-05-09 → 2014-05-16 (+7d) |  |  | 102d → 97d |  |  |
| 120 | User Guide | 2014-05-05 → 2014-05-12 (+7d) | 2014-05-09 → 2014-05-16 (+7d) |  |  | 102d → 97d |  |  |
| 121 | **Deployment** | 2014-05-05 → 2014-05-12 (+7d) | 2014-06-16 → 2014-06-23 (+7d) |  |  | 76d → 71d |  |  |
| 122 | Architecture Review Checklist | 2014-05-05 → 2014-05-12 (+7d) | 2014-05-05 → 2014-05-12 (+7d) |  |  | 76d → 71d |  |  |
| 123 | Deployment to NCI QA | 2014-05-06 → 2014-05-13 (+7d) | 2014-05-12 → 2014-05-19 (+7d) |  |  | 77d → 72d |  |  |
| 124 | Supporting QA Team | 2014-05-06 → 2014-05-13 (+7d) | 2014-05-12 → 2014-05-19 (+7d) |  |  | 101d → 96d |  |  |
| 125 | **QA Testing** | 2014-05-13 → 2014-05-20 (+7d) | 2014-05-15 → 2014-05-22 (+7d) |  |  | 77d → 72d |  |  |
| 126 | Iteration 1 | 2014-05-13 → 2014-05-20 (+7d) | 2014-05-15 → 2014-05-22 (+7d) |  |  | 77d → 72d |  |  |
| 127 | QA App Scan | 2014-05-16 → 2014-05-23 (+7d) | 2014-05-22 → 2014-05-29 (+7d) |  |  | 77d → 72d |  |  |
| 128 | Deployment to NCI Stage | 2014-05-23 → 2014-05-30 (+7d) | 2014-05-29 → 2014-06-05 (+7d) |  |  | 77d → 72d |  |  |
| 129 | Stage App Scan | 2014-05-30 → 2014-06-06 (+7d) | 2014-06-05 → 2014-06-12 (+7d) |  |  | 77d → 72d |  |  |
| 130 | Deployment to NCI Production | 2014-06-06 → 2014-06-13 (+7d) | 2014-06-12 → 2014-06-19 (+7d) |  |  | 77d → 72d |  |  |
| 131 | Deployment Support | 2014-05-06 → 2014-05-13 (+7d) | 2014-06-16 → 2014-06-23 (+7d) |  |  | 76d → 71d |  |  |
| 132 | Release Support | 2014-06-13 → 2014-06-20 (+7d) | 2014-06-13 → 2014-06-20 (+7d) |  |  | 77d → 72d |  |  |
| 133 | End | 2014-06-13 → 2014-06-20 (+7d) | 2014-06-13 → 2014-06-20 (+7d) |  |  | 77d → 72d |  |  |

## Version 6 (saved 2014-04-25)

Note of the change: Schedule update

Last finish stays 2014-09-30.

Changed:

| ID | Task | Start | Finish | Complete | Total float | Predecessors |
| --- | --- | --- | --- | --- | --- | --- |
| 44 | Review QA Report for Approval | 2014-03-28 → 2014-03-10 (-18d) | 2014-04-03 → 2014-03-14 (-20d) |  |  | 47 → 43 |
| 45 | Deployment to NCI Stage | 2014-03-10 → 2014-03-17 (+7d) | 2014-03-14 → 2014-03-21 (+7d) |  | 127d → 122d | 43 → 44 |
| 46 | Stage App Scan | 2014-03-17 → 2014-03-24 (+7d) | 2014-03-19 → 2014-03-26 (+7d) |  | 127d → 122d |  |
| 47 | QA report for production deployment | 2014-03-20 → 2014-03-27 (+7d) | 2014-03-27 → 2014-04-03 (+7d) |  | 127d → 122d |  |
| 48 | Deployment to NCI Production |  |  |  |  | 44 → 44, 47 |
| 53 | **caGrid 2.1** |  |  | 27% → 28% |  |  |
| 62 | **Cookbooks** |  |  | 10% → 13% |  |  |
| 64 | Developing Maven Archtypes project |  |  | 10% → 25% |  |  |

## Version 7 (saved 2014-05-02)

Note of the change: Project schedule update

Last finish stays 2014-09-30.

Changed:

| ID | Task | Start | Finish | Duration | Complete | Total float | Other |
| --- | --- | --- | --- | --- | --- | --- | --- |
| 10 | **caGrid 2.0** |  | 2014-04-11 → 2014-05-06 (+25d) | 191d? → 208d? |  | 122d → 105d |  |
| 24 | **Deployment** |  | 2014-04-10 → 2014-05-05 (+25d) | 125d → 142d |  | 123d → 106d |  |
| 44 | Review QA Report for Approval | 2014-03-10 → 2014-04-02 A (+23d) | 2014-03-14 → 2014-04-08 (+25d) |  |  | 122d → 105d |  |
| 45 | Deployment to NCI Stage | 2014-03-17 → 2014-04-09 (+23d) | 2014-03-21 → 2014-04-15 (+25d) |  |  | 122d → 105d |  |
| 46 | Stage App Scan | 2014-03-24 → 2014-04-16 (+23d) | 2014-03-26 → 2014-04-18 (+23d) |  |  | 122d → 105d |  |
| 47 | QA report for production deployment | 2014-03-27 → 2014-04-21 (+25d) | 2014-04-03 → 2014-04-28 (+25d) |  |  | 122d → 105d |  |
| 48 | Deployment to NCI Production | 2014-04-04 → 2014-04-29 (+25d) | 2014-04-10 → 2014-05-05 (+25d) |  |  | 122d → 105d |  |
| 51 | Release Support | 2014-04-11 → 2014-05-06 (+25d) | 2014-04-11 → 2014-05-06 (+25d) |  |  | 122d → 105d |  |
| 52 | End | 2014-04-10 → 2014-05-05 (+25d) | 2014-04-10 → 2014-05-05 (+25d) |  |  | 123d → 106d |  |
| 53 | **caGrid 2.1** |  |  |  | 28% → 32% |  |  |
| 55 | **Service Development** |  | 2014-05-30 → 2014-06-03 (+4d) | 110d → 112d | 62% → 69% | 73d → 71d |  |
| 60 | Authentication Service | 2014-03-17 A → 2014-04-30 A (+44d) | 2014-05-15 → 2014-06-03 (+19d) | 8.8w → 5w | 10% → 25% | 84d → 71d | resources Stephen Langella; Prasad Konka → Prasad Konka; Scott Oster |
| 61 | End | 2014-05-30 → 2014-06-03 (+4d) | 2014-05-30 → 2014-06-03 (+4d) |  |  | 73d → 71d |  |
| 68 | **Documentation** |  |  |  | 6% → 18% |  |  |
| 72 | **Developer Guides** | 2014-06-02 → 2014-06-04 (+2d) | 2014-06-19 → 2014-06-23 (+4d) |  |  | 73d → 71d |  |
| 73 | Authentication Service | 2014-06-02 → 2014-06-04 (+2d) | 2014-06-19 → 2014-06-23 (+4d) |  |  | 73d → 71d |  |
| 74 | **Administrator Guides** |  |  |  | 3% → 23% |  |  |
| 82 | MMS Service |  |  |  | 10% → 90% |  |  |
| 109 | **caGrid Portal** |  | 2014-06-23 → 2014-07-28 (+35d) | 101d → 126d |  | 71d → 46d |  |
| 111 | **Portal Development** |  | 2014-05-09 → 2014-06-13 (+35d) | 50d → 75d |  | 102d → 77d |  |
| 114 | Review requirements | 2014-03-17 → 2014-04-21 A (+35d) | 2014-03-21 → 2014-04-25 (+35d) |  |  | 71d → 46d |  |
| 115 | caGrid Portal Framework setup | 2014-03-24 → 2014-04-28 (+35d) | 2014-04-04 → 2014-05-09 (+35d) |  |  | 71d → 46d |  |
| 116 | Account Registration/Management | 2014-04-07 → 2014-05-12 (+35d) | 2014-05-02 → 2014-06-06 (+35d) |  |  | 71d → 46d |  |
| 117 | Unit Testing | 2014-05-05 → 2014-06-09 (+35d) | 2014-05-09 → 2014-06-13 (+35d) |  |  | 71d → 46d |  |
| 118 | End | 2014-05-09 → 2014-06-13 (+35d) | 2014-05-09 → 2014-06-13 (+35d) |  |  | 71d → 46d |  |
| 119 | **Documentation** | 2014-05-12 → 2014-06-16 (+35d) | 2014-05-16 → 2014-06-20 (+35d) |  |  | 97d → 72d |  |
| 120 | User Guide | 2014-05-12 → 2014-06-16 (+35d) | 2014-05-16 → 2014-06-20 (+35d) |  |  | 97d → 72d |  |
| 121 | **Deployment** | 2014-05-12 → 2014-06-16 (+35d) | 2014-06-23 → 2014-07-28 (+35d) |  |  | 71d → 46d |  |
| 122 | Architecture Review Checklist | 2014-05-12 → 2014-06-16 (+35d) | 2014-05-12 → 2014-06-16 (+35d) |  |  | 71d → 46d |  |
| 123 | Deployment to NCI QA | 2014-05-13 → 2014-06-17 (+35d) | 2014-05-19 → 2014-06-23 (+35d) |  |  | 72d → 47d |  |
| 124 | Supporting QA Team | 2014-05-13 → 2014-06-17 (+35d) | 2014-05-19 → 2014-06-23 (+35d) |  |  | 96d → 71d |  |
| 125 | **QA Testing** | 2014-05-20 → 2014-06-24 (+35d) | 2014-05-22 → 2014-06-26 (+35d) |  |  | 72d → 47d |  |
| 126 | Iteration 1 | 2014-05-20 → 2014-06-24 (+35d) | 2014-05-22 → 2014-06-26 (+35d) |  |  | 72d → 47d |  |
| 127 | QA App Scan | 2014-05-23 → 2014-06-27 (+35d) | 2014-05-29 → 2014-07-03 (+35d) |  |  | 72d → 47d |  |
| 128 | Deployment to NCI Stage | 2014-05-30 → 2014-07-04 (+35d) | 2014-06-05 → 2014-07-10 (+35d) |  |  | 72d → 47d |  |
| 129 | Stage App Scan | 2014-06-06 → 2014-07-11 (+35d) | 2014-06-12 → 2014-07-17 (+35d) |  |  | 72d → 47d |  |
| 130 | Deployment to NCI Production | 2014-06-13 → 2014-07-18 (+35d) | 2014-06-19 → 2014-07-24 (+35d) |  |  | 72d → 47d |  |
| 131 | Deployment Support | 2014-05-13 → 2014-06-17 (+35d) | 2014-06-23 → 2014-07-28 (+35d) |  |  | 71d → 46d |  |
| 132 | Release Support | 2014-06-20 → 2014-07-25 (+35d) | 2014-06-20 → 2014-07-25 (+35d) |  |  | 72d → 47d |  |
| 133 | End | 2014-06-20 → 2014-07-25 (+35d) | 2014-06-20 → 2014-07-25 (+35d) |  |  | 72d → 47d |  |

## Version 8 (saved 2014-05-16)

Note of the change: Project schedule update

Last finish stays 2014-09-30. Complete tasks 31 → 32.

Changed:

| ID | Task | Start | Finish | Duration | Complete | Total float | Other |
| --- | --- | --- | --- | --- | --- | --- | --- |
| 53 | **caGrid 2.1** |  | 2014-09-24 → 2014-09-26 (+2d) | 193d → 195d | 32% → 34% | 4d → 2d |  |
| 55 | **Service Development** |  |  |  | 69% → 75% |  |  |
| 59 | Index Service |  |  |  | 10% → 30% |  |  |
| 60 | Authentication Service |  |  |  | 25% → 35% |  |  |
| 62 | **Cookbooks** |  | 2014-09-24 → 2014-09-26 (+2d) | 153d → 155d |  | 4d → 2d |  |
| 64 | Developing Maven Archtypes project |  | 2014-05-21 → 2014-06-06 (+16d) | 30d → 42d | 25% → 18% | 4d → 2d | constraint start no earlier than 2014-04-10 → finish no earlier than 2014-06-06 |
| 65 | How to develop a caGrid 2.0 analytical service | 2014-05-22 → 2014-06-09 (+18d) | 2014-07-02 → 2014-07-11 (+9d) | 30d → 25d |  | 4d → 2d |  |
| 66 | How to Develop a Secure caGrid 2.1 Service (Cookbook) | 2014-07-03 → 2014-07-14 (+11d) | 2014-08-13 → 2014-08-15 (+2d) | 30d → 25d |  | 4d → 2d |  |
| 67 | How to upgrade caGrid 1.4 analytical service to caGrid 2.0 analytical service | 2014-08-14 → 2014-08-18 (+4d) | 2014-09-24 → 2014-09-26 (+2d) |  |  | 4d → 2d |  |
| 109 | **caGrid Portal** |  |  |  | 8% → 17% |  |  |
| 111 | **Portal Development** |  |  |  | 20% → 40% |  |  |
| 115 | caGrid Portal Framework setup | 2014-04-28 A | 2014-05-09 A |  | 0% → 100% | 46d → none |  |
