# caGrid_Development1

How a schedule from MS Project changed from version to version. A marks actual dates.

## Version 1 (saved 2006-05-04, file caGridProjectTimeline_05-03-06.mpp)

Note of the change: *** empty log message ***

| ID | WBS | Task | Duration | Start | Finish | Predecessors | Total float | Constraint |
| --- | --- | --- | --- | --- | --- | --- | --- | --- |
| 1 | 1 | **caGrid 1.0 Development** | 261d? | 2006-04-17 | 2007-04-16 |  | 0d |  |
| 2 | 1.1 | **Monthly Status/Financial Report** | 240d | 2006-05-10 | 2007-04-10 |  | 4d |  |
| 3 |  | Monthly Status/Financial Report 1 | 1d | 2006-05-10 | 2006-05-10 |  | 243d | start no earlier than 2006-05-10 |
| 4 |  | Monthly Status/Financial Report 2 | 1d | 2006-06-09 | 2006-06-09 |  | 221d | start no earlier than 2006-06-09 |
| 5 |  | Monthly Status/Financial Report 3 | 1d | 2006-07-10 | 2006-07-10 |  | 200d | start no earlier than 2006-07-10 |
| 6 |  | Monthly Status/Financial Report 4 | 1d | 2006-08-10 | 2006-08-10 |  | 177d | start no earlier than 2006-08-10 |
| 7 |  | Monthly Status/Financial Report 5 | 1d | 2006-09-08 | 2006-09-08 |  | 156d | start no earlier than 2006-09-08 |
| 8 |  | Monthly Status/Financial Report 6 | 1d | 2006-10-10 | 2006-10-10 |  | 134d | start no earlier than 2006-10-10 |
| 9 |  | Monthly Status/Financial Report 7 | 1d | 2006-11-10 | 2006-11-10 |  | 111d | start no earlier than 2006-11-10 |
| 10 |  | Monthly Status/Financial Report 8 | 1d | 2006-12-08 | 2006-12-08 |  | 91d | start no earlier than 2006-12-08 |
| 11 |  | Monthly Status/Financial Report 9 | 1d | 2007-01-10 | 2007-01-10 |  | 68d | start no earlier than 2007-01-10 |
| 12 |  | Monthly Status/Financial Report 10 | 1d | 2007-02-09 | 2007-02-09 |  | 46d | start no earlier than 2007-02-09 |
| 13 |  | Monthly Status/Financial Report 11 | 1d | 2007-03-09 | 2007-03-09 |  | 26d | start no earlier than 2007-03-09 |
| 14 |  | Monthly Status/Financial Report 12 | 1d | 2007-04-10 | 2007-04-10 |  | 4d | start no earlier than 2007-04-10 |
| 15 | 1.2 | **Software Development Cycle 1** | 73d? | 2006-04-17 | 2006-07-26 |  | 53d |  |
| 16 | 1.2.1 | **Inception** | 10d | 2006-04-17 | 2006-04-28 |  | 251d |  |
| 17 |  | Orientation Briefing | 1d | 2006-04-17 | 2006-04-17 |  | 260d | start no earlier than 2006-04-17 |
| 18 |  | Project Plan | 2d | 2006-04-17 | 2006-04-18 |  | 251d | start no earlier than 2006-04-17 |
| 19 |  | Phase and Iteration Plan | 1d | 2006-04-19 | 2006-04-19 | 18 | 251d |  |
| 20 |  | Requirement and Specifications Collection | 5d | 2006-04-20 | 2006-04-26 | 19 | 251d |  |
| 21 |  | Draft Use Case Model | 2d | 2006-04-27 | 2006-04-28 | 20 | 251d |  |
| 22 |  | Draft Test Plan | 10d | 2006-04-17 | 2006-04-28 |  | 251d | start no earlier than 2006-04-17 |
| 23 |  | Create Risks List | 5d | 2006-04-24 | 2006-04-28 |  | 251d | start no earlier than 2006-04-24 |
| 24 | 1.2.2 | **Elaboration** | 30d? | 2006-05-01 | 2006-06-09 |  | 221d |  |
| 25 | 1.2.2.1 | **Iteration I** | 15d? | 2006-05-01 | 2006-05-19 |  | 236d |  |
| 26 | 1.2.2.1.1 | **Design, develop and test integration of caCORE SDK generated system** | 15d | 2006-05-01 | 2006-05-19 |  | 236d |  |
| 27 |  | Finalize CQL Schema | 5d | 2006-05-01 | 2006-05-05 |  | 246d | start no earlier than 2006-05-01 |
| 28 |  | Develop test cases to validate CQL schema | 5d | 2006-05-01 | 2006-05-05 |  | 246d | finish no earlier than 2006-05-05 |
| 29 |  | Create runtime class diagram | 3d | 2006-05-17 | 2006-05-19 |  | 236d | start no earlier than 2006-05-17 |
| 30 | 1.2.2.1.2 | **Design, develop and test caGrid 1.0 Installer and Deployment Wizard** | 15d? | 2006-05-01 | 2006-05-19 |  | 236d |  |
| 31 |  | Requirments Analysis | 15d | 2006-05-01 | 2006-05-19 |  | 236d | start no earlier than 2006-05-01 |
| 32 |  | Evaluate existing open source Installer toolkits | 10d? | 2006-05-01 | 2006-05-12 |  | 241d | start no earlier than 2006-05-01 |
| 33 |  | Create UML Artifacts - Use Case Model and Activity Diagram | 15d | 2006-05-01 | 2006-05-19 |  | 236d | finish no earlier than 2006-05-19 |
| 34 |  | Prototype | 10d | 2006-05-03 | 2006-05-16 |  | 239d | start no earlier than 2006-05-03 |
| 35 | 1.2.2.2 | **Iteration II** | 15d? | 2006-05-22 | 2006-06-09 |  | 221d |  |
| 36 | 1.2.2.2.1 | **Implement and test integration of caCORE SDK generated system** | 7d | 2006-05-22 | 2006-05-30 |  | 229d |  |
| 37 |  | Update UML Artifacts | 2d | 2006-05-22 | 2006-05-23 |  | 229d | start no earlier than 2006-05-22 |
| 38 |  | Code and Test | 5d | 2006-05-24 | 2006-05-30 | 37 | 229d | finish no earlier than 2006-05-30 |
| 39 | 1.2.2.2.2 | **Enhance caGrid 1.0 Installer and Deployment Wizard Prototype** | 15d | 2006-05-22 | 2006-06-09 |  | 221d |  |
| 40 |  | Update UML Artifacts | 2d | 2006-05-22 | 2006-05-23 |  | 234d | start no earlier than 2006-05-22 |
| 41 |  | Code and Test | 15d | 2006-05-22 | 2006-06-09 |  | 221d | start no earlier than 2006-05-22 |
| 42 | 1.2.2.2.3 | **Design, develop and test integration of CSM in caGrid 1.0** | 15d | 2006-05-22 | 2006-06-09 |  | 221d |  |
| 43 |  | Requirements Analysis | 10d | 2006-05-22 | 2006-06-02 |  | 226d | start no earlier than 2006-05-22 |
| 44 |  | Create UML artifacts - Use Case Model, Sequence and Class Diagrams | 10d | 2006-05-29 | 2006-06-09 |  | 221d | start no earlier than 2006-05-29 |
| 45 | 1.2.2.2.4 | **Design, develop and test caDSR integration in caGrid 1.0** | 10d? | 2006-05-22 | 2006-06-02 |  | 226d |  |
| 46 |  | Requirements Analysis | 5d? | 2006-05-22 | 2006-05-26 |  | 231d | start no earlier than 2006-05-22 |
| 47 |  | Create UML artifacts | 10d | 2006-05-22 | 2006-06-02 |  | 226d | start no earlier than 2006-05-22 |
| 48 | 1.2.3 | **Construction** | 20d? | 2006-06-13 | 2006-07-10 |  | 12d |  |
| 49 |  | Implement caGrid 1.0 Installer and Deployment Wizard | 20d? | 2006-06-13 | 2006-07-10 |  | 12d | start no earlier than 2006-06-13 |
| 50 |  | Implement and test integration of CSM in caGrid 1.0 | 20d | 2006-06-13 | 2006-07-10 |  | 12d | start no earlier than 2006-06-13 |
| 51 |  | Implement and test caDSR integration in caGrid 1.0 | 10d | 2006-06-13 | 2006-06-26 |  | 22d | start no earlier than 2006-06-13 |
| 52 | 1.2.4 | **Transition** | 10d | 2006-07-13 | 2006-07-26 | 48 | 10d |  |
| 53 |  | Update software architecture design document | 5d | 2006-07-13 | 2006-07-19 |  | 15d | start no earlier than 2006-07-13 |
| 54 |  | Update design documents | 3d | 2006-07-13 | 2006-07-17 |  | 17d | start no earlier than 2006-07-13 |
| 55 |  | System Testing | 10d | 2006-07-13 | 2006-07-26 |  | 10d | start no earlier than 2006-07-13 |
| 56 | 1.3 | **Software Development Cycle 2** | 65d | 2006-07-27 | 2006-10-25 | 52 | 0d |  |
| 57 | 1.3.1 | **Inception** | 10d | 2006-07-27 | 2006-08-09 |  | 10d |  |
| 58 |  | Update Project Plan | 1d | 2006-07-27 | 2006-07-27 |  | 10d |  |
| 59 |  | Phase and Iteration Plan | 1d | 2006-07-28 | 2006-07-28 | 58 | 10d |  |
| 60 |  | Requirements and Specifications Collection | 5d | 2006-07-31 | 2006-08-04 | 59 | 10d |  |
| 61 |  | Draft Use Case Model | 3d | 2006-08-07 | 2006-08-09 | 60 | 10d |  |
| 62 |  | Update Test Plan | 3d | 2006-07-27 | 2006-07-31 |  | 62d |  |
| 63 | 1.3.2 | **Elaboration** | 30d | 2006-08-10 | 2006-09-20 | 61 | 10d |  |
| 64 | 1.3.2.1 | **Iteration I** | 15d | 2006-08-10 | 2006-08-30 |  | 10d |  |
| 65 | 1.3.2.1.1 | **Design for migrating grid enabled caBIO and caArray data services to caGrid 1.0** | 15d | 2006-08-10 | 2006-08-30 |  | 10d |  |
| 66 |  | Create UML Artifacts | 7d | 2006-08-10 | 2006-08-18 |  | 10d |  |
| 67 |  | Code and Test | 10d | 2006-08-10 | 2006-08-23 |  | 15d | start no earlier than 2006-07-17 |
| 68 |  | Prepare detailed design document | 8d | 2006-08-21 | 2006-08-30 | 66 | 10d |  |
| 69 | 1.3.2.1.2 | **Design caGrid Installer and Deployment Wizard** | 8d | 2006-08-10 | 2006-08-21 |  | 32d |  |
| 70 |  | UML Artifacts | 7d | 2006-08-10 | 2006-08-18 |  | 33d |  |

| ID | WBS | Task | Duration | Start | Finish | Predecessors | Total float | Constraint |
| --- | --- | --- | --- | --- | --- | --- | --- | --- |
| 71 |  | Design document | 8d | 2006-08-10 | 2006-08-21 |  | 32d |  |
| 72 |  | Update Risk List | 1d | 2006-08-10 | 2006-08-10 |  | 39d | start no earlier than 2006-07-25 |
| 73 | 1.3.2.2 | **Iteration II** | 15d | 2006-08-31 | 2006-09-20 | 65 | 10d |  |
| 74 |  | Implement migration of caBIO and caArray data services from caGrid 0.5 to caGrid 1.0 | 15d | 2006-08-31 | 2006-09-20 |  | 10d |  |
| 75 |  | Design and create prototypes for Installer and Deployment Wizard | 15d | 2006-08-31 | 2006-09-20 |  | 10d |  |
| 76 |  | Update Risk List | 1d | 2006-09-20 | 2006-09-20 |  | 10d | start no earlier than 2006-09-20 |
| 77 | 1.3.3 | **Construction** | 20d | 2006-09-21 | 2006-10-18 | 63 | 0d |  |
| 78 | 1.3.3.1 | **Iteration I** | 20d | 2006-09-21 | 2006-10-18 |  | 0d |  |
| 79 | 1.3.3.1.1 | **Migration of caGrid 0.5 users to caGrid 1.0** | 10d | 2006-09-21 | 2006-10-04 |  | 10d |  |
| 80 |  | UML Artifacts | 10d | 2006-09-21 | 2006-10-04 |  | 10d |  |
| 81 |  | Design and SOP document | 10d | 2006-09-21 | 2006-10-04 |  | 10d |  |
| 82 | 1.3.3.1.2 | **Implement caGrid 1.0 Installer and Deployment Wizard** | 20d | 2006-09-21 | 2006-10-18 | 79 | 0d |  |
| 83 |  | Code and Test | 10d | 2006-09-21 | 2006-10-04 |  | 10d |  |
| 84 |  | Update Risk List | 1d | 2006-10-18 | 2006-10-18 |  | 0d | start no earlier than 2006-10-18 |
| 85 | 1.3.4 | **Transition** | 5d | 2006-10-19 | 2006-10-25 | 77 | 0d |  |
| 86 |  | Update design document for caGrid installer and deployer | 5d | 2006-10-19 | 2006-10-25 |  | 0d |  |
| 87 |  | Update document for migration of caGrid 0.5 user credentials to caGrid 1.0 | 5d | 2006-10-19 | 2006-10-25 |  | 0d |  |
| 88 |  | System Testing | 5d | 2006-10-19 | 2006-10-25 |  | 0d |  |
| 89 |  | Update software architecture document | 5d | 2006-10-19 | 2006-10-25 |  | 0d |  |
| 90 | 1.4 | **Software Development Cycle 3** | 123d | 2006-10-26 | 2007-04-16 | 56 | 0d |  |
| 91 | 1.4.1 | **Inception** | 10d | 2006-10-26 | 2006-11-08 |  | 0d |  |
| 92 | 1.4.1.1 | **Iteration I** | 10d | 2006-10-26 | 2006-11-08 |  | 0d |  |
| 93 |  | Requirement collection for caGrid Browser | 5d | 2006-10-26 | 2006-11-01 |  | 0d |  |
| 94 |  | Use Case Model for caGrid Browser | 5d | 2006-11-02 | 2006-11-08 | 93 | 0d |  |
| 95 | 1.4.1.2 | **Iteration II** | 2d | 2006-10-26 | 2006-10-27 |  | 8d |  |
| 96 |  | Use Case Specification Review and Adjustment | 2d | 2006-10-26 | 2006-10-27 |  | 8d |  |
| 97 | 1.4.2 | **Elaboration** | 36d | 2006-11-09 | 2006-12-28 | 91 | 0d |  |
| 98 | 1.4.2.1 | **Iteration I** | 15d | 2006-11-09 | 2006-11-29 |  | 0d |  |
| 99 | 1.4.2.1.1 | **Design for caGrid Browser enhancements** | 15d | 2006-11-09 | 2006-11-29 |  | 0d |  |
| 100 |  | UML Artifacts | 10d | 2006-11-09 | 2006-11-22 |  | 0d |  |
| 101 |  | Design document | 5d | 2006-11-23 | 2006-11-29 | 100 | 0d |  |
| 102 |  | Migration document and SOP for data services and analytical services from caGrid 0.5 to caGrid 1.0 | 15d | 2006-11-09 | 2006-11-29 |  | 0d |  |
| 103 |  | Update Risk List | 1d | 2006-11-15 | 2006-11-15 |  | 10d | start no earlier than 2006-11-15 |
| 104 | 1.4.2.2 | **Iteration II** | 21d | 2006-11-30 | 2006-12-28 | 98 | 0d |  |
| 105 | 1.4.2.2.1 | **Implement caGrid 1.0 Browser** | 21d | 2006-11-30 | 2006-12-28 |  | 0d |  |
| 106 |  | Code and test | 21d | 2006-11-30 | 2006-12-28 |  | 0d |  |
| 107 | 1.4.2.2.2 | **Implementation of migration of NCICB users from caGrid 0.5 to caGrid 1.0** | 15d | 2006-11-30 | 2006-12-20 |  | 6d |  |
| 108 |  | Code and test | 15d | 2006-11-30 | 2006-12-20 |  | 6d |  |
| 109 | 1.4.3 | **Construction** | 40d | 2006-12-29 | 2007-02-22 | 97 | 0d |  |
| 110 | 1.4.3.1 | **Iteration I** | 20d | 2006-12-29 | 2007-01-25 |  | 0d |  |
| 111 | 1.4.3.1.1 | **caGrid 1.0 Browser Release 2 Implementation** | 20d | 2006-12-29 | 2007-01-25 |  | 0d |  |
| 112 |  | Code and test | 20d | 2006-12-29 | 2007-01-25 |  | 0d |  |
| 113 | 1.4.3.2 | **Iteration II** | 20d | 2007-01-26 | 2007-02-22 | 110 | 0d |  |
| 114 | 1.4.3.2.1 | **System Test Plan and Results** | 20d | 2007-01-26 | 2007-02-22 |  | 0d |  |
| 115 |  | Develop test cases | 15d | 2007-01-26 | 2007-02-15 |  | 5d |  |
| 116 |  | Conduct testing | 15d | 2007-01-26 | 2007-02-15 |  | 5d |  |
| 117 |  | Continuous defect fixing | 20d | 2007-01-26 | 2007-02-22 |  | 0d |  |
| 118 | 1.4.4 | **Transition** | 37d | 2007-02-23 | 2007-04-16 | 109 | 0d |  |
| 119 | 1.4.4.1 | **Iteration I** | 30d | 2007-02-23 | 2007-04-05 |  | 0d |  |
| 120 |  | Technical Guide | 20d | 2007-02-23 | 2007-03-22 |  | 0d |  |
| 121 |  | User Guide | 10d | 2007-03-23 | 2007-04-05 | 120 | 0d |  |
| 122 |  | System Testing | 10d | 2007-02-23 | 2007-03-08 |  | 20d |  |
| 123 | 1.4.4.2 | **Iteration II** | 7d | 2007-04-06 | 2007-04-16 | 119 | 0d |  |
| 124 |  | Lesson learned | 5d | 2007-04-06 | 2007-04-12 |  | 0d | start no earlier than 2007-04-06 |
| 125 |  | Release notes | 2d | 2007-04-13 | 2007-04-16 | 124 | 0d |  |

## Version 2 (saved 2006-07-27, file caGridProjectTimeline_07-27-06.mpp)

Note of the change: *** empty log message ***

Last finish 2007-04-16 → 2007-04-18 (+2d). Complete tasks 0 → 31.

Added:

| ID | Task | Duration | Start | Finish | Constraint |
| --- | --- | --- | --- | --- | --- |
| 48 | **Design, develop and test Identity Provider service integration in caGrid 1.0** | 21d? | 2006-06-02 A | 2006-06-30 A |  |
| 49 | Requirements Analysis | 11d? | 2006-06-02 A | 2006-06-16 A |  |
| 50 | Create Design document | 11d? | 2006-06-16 A | 2006-06-30 A | finish no earlier than 2006-06-30 |
| 51 | Design, develop and test caBIO BigID service | 32d? | 2006-06-16 A | 2006-07-31 | finish no earlier than 2006-07-31 |
| 52 | Support Silver Level Compatibility document development | 10d | 2006-06-23 A | 2006-07-06 | start no earlier than 2006-06-23 |
| 57 | Implement and test integration of 'Grouper' external component | 30d? | 2006-07-24 A | 2006-09-01 | finish no earlier than 2006-09-01 |
| 58 | Implement and test integration of Identity Provider (IDP) service | 31d? | 2006-07-07 A | 2006-08-18 | finish no earlier than 2006-08-18 |
| 59 | Implement and test caBIO BigID service | 23d? | 2006-08-01 A | 2006-08-31 | finish no earlier than 2006-08-31 |
| 62 | IDP | 1d? | 2006-04-17 A | 2006-04-17 A |  |
| 63 | CSM Integration | 1d? | 2006-04-17 A | 2006-04-17 A |  |
| 64 | caGrid Authorization | 1d? | 2006-04-17 A | 2006-04-17 A |  |
| 65 | caBIO BigID | 1d? | 2006-04-17 A | 2006-04-17 A |  |

Removed: 53 Update software architecture design document; 59 Phase and Iteration Plan

Changed:

| ID | Task | Start | Finish | Duration | Complete | Total float | Predecessors | Other |
| --- | --- | --- | --- | --- | --- | --- | --- | --- |
| 1 | **caGrid 1.0 Development** | 2006-04-17 A | 2007-04-16 → 2007-04-18 (+2d) | 261d? → 263d? | 0% → 35% |  |  |  |
| 2 | **Monthly Status/Financial Report** | 2006-05-10 A |  |  | 0% → 25% | 4d → 6d |  | resources none → VB |
| 3 | Monthly Status/Financial Report 1 | 2006-05-10 A | 2006-05-10 A |  | 0% → 100% | 243d → none |  |  |
| 4 | Monthly Status/Financial Report 2 | 2006-06-09 A | 2006-06-09 A |  | 0% → 100% | 221d → none |  |  |
| 5 | Monthly Status/Financial Report 3 | 2006-07-10 A | 2006-07-10 A |  | 0% → 100% | 200d → none |  |  |
| 15 | **Software Development Cycle 1** | 2006-04-17 A | 2006-07-26 → 2006-09-01 (+37d) | 73d? → 100d? | 0% → 62% | 53d → 163d |  |  |
| 16 | **Inception** | 2006-04-17 A | 2006-04-28 A |  | 0% → 100% | 251d → none |  |  |
| 17 | Orientation Briefing | 2006-04-17 A | 2006-04-17 A |  | 0% → 100% | 260d → none |  |  |
| 18 | Project Plan | 2006-04-17 A | 2006-04-18 A |  | 0% → 100% | 251d → none |  |  |
| 19 | Phase and Iteration Plan | 2006-04-19 A | 2006-04-19 A |  | 0% → 100% | 251d → none |  |  |
| 20 | Requirement and Specifications Collection | 2006-04-20 A | 2006-04-26 A |  | 0% → 100% | 251d → none |  |  |
| 21 | Draft Use Case Model | 2006-04-27 A | 2006-04-28 A |  | 0% → 100% | 251d → none |  |  |
| 22 | Draft Test Plan | 2006-04-17 A | 2006-04-28 A |  | 0% → 100% | 251d → none |  |  |
| 23 | Create Risks List | 2006-04-24 A | 2006-04-28 A |  | 0% → 100% | 251d → none |  |  |
| 24 | **Elaboration** | 2006-05-01 A | 2006-06-09 → 2006-08-04 (+56d) | 30d? → 70d? | 0% → 81% | 221d → 183d |  |  |
| 25 | **Iteration I** | 2006-05-01 A | 2006-05-19 A |  | 0% → 100% | 236d → none |  |  |
| 26 | **Design, develop and test integration of caCORE SDK generated system** | 2006-05-01 A | 2006-05-19 A |  | 0% → 100% | 236d → none |  |  |
| 27 | Finalize CQL Schema | 2006-05-01 A | 2006-05-05 A |  | 0% → 100% | 246d → none |  |  |
| 28 | Develop test cases to validate CQL schema | 2006-05-01 A | 2006-05-05 A |  | 0% → 100% | 246d → none |  |  |
| 29 | Create runtime class diagram | 2006-05-17 A | 2006-05-19 A |  | 0% → 100% | 236d → none |  |  |
| 30 | **Design, develop and test caGrid 1.0 Installer and Deployment Wizard** | 2006-05-01 A | 2006-05-19 A |  | 0% → 100% | 236d → none |  |  |
| 31 | Requirements Analysis | 2006-05-01 A | 2006-05-19 A |  | 0% → 100% | 236d → none |  | was named Requirments Analysis |
| 32 | Evaluate existing open source Installer toolkits | 2006-05-01 A | 2006-05-12 A |  | 0% → 100% | 241d → none |  |  |
| 33 | Create UML Artifacts - Use Case Model and Activity Diagram | 2006-05-01 A | 2006-05-19 A |  | 0% → 100% | 236d → none |  |  |
| 34 | Prototype | 2006-05-03 A | 2006-05-16 A |  | 0% → 100% | 239d → none |  |  |
| 35 | **Iteration II** | 2006-05-22 A | 2006-06-09 → 2006-08-04 (+56d) | 15d? → 55d? | 0% → 73% | 221d → 183d |  |  |
| 36 | **Implement and test integration of caCORE SDK generated system** | 2006-05-22 A | 2006-05-30 A |  | 0% → 100% | 229d → none |  |  |
| 37 | Update UML Artifacts | 2006-05-22 A | 2006-05-23 A |  | 0% → 100% | 229d → none |  |  |
| 38 | Code and Test | 2006-05-24 A | 2006-05-30 A |  | 0% → 100% | 229d → none |  |  |
| 39 | **Enhance caGrid 1.0 Installer and Deployment Wizard Prototype** | 2006-05-22 A | 2006-06-09 A |  | 0% → 100% | 221d → none |  |  |
| 40 | Update UML Artifacts | 2006-05-22 A | 2006-05-23 A |  | 0% → 100% | 234d → none |  |  |
| 41 | Code and Test | 2006-05-22 A | 2006-06-09 A |  | 0% → 100% | 221d → none |  |  |
| 42 | **Design, develop and test integration of CSM in caGrid 1.0** | 2006-05-22 A | 2006-06-09 A |  | 0% → 100% | 221d → none |  |  |
| 43 | Requirements Analysis | 2006-05-22 A | 2006-06-02 A |  | 0% → 100% | 226d → none |  |  |
| 44 | Create UML artifacts - Use Case Model, Sequence and Class Diagrams | 2006-05-29 A | 2006-06-09 A |  | 0% → 100% | 221d → none |  |  |
| 45 | **Design, develop and test caDSR integration in caGrid 1.0** | 2006-05-22 A | 2006-06-02 → 2006-08-04 (+63d) | 10d? → 55d? | 0% → 80% | 226d → 183d |  | resources none → RC |
| 46 | Requirements Analysis | 2006-05-22 A | 2006-05-26 → 2006-07-21 (+56d) | 5d? → 45d? | 0% → 80% | 231d → 193d |  | constraint start no earlier than 2006-05-22 → finish no earlier than 2006-07-21 |
| 47 | Create caDSR-GME Mapping document | 2006-05-22 → 2006-07-24 A (+63d) | 2006-06-02 → 2006-08-04 (+63d) |  | 0% → 80% | 226d → 183d |  | was named Create UML artifacts; constraint start no earlier than 2006-05-22 → finish no earlier than 2006-08-04 |
| 53 | **Construction** | 2006-06-13 A | 2006-07-10 → 2006-09-01 (+53d) | 20d? → 59d? | 0% → 25% | 12d → 163d |  |  |
| 54 | Implement caGrid 1.0 Installer and Deployment Framework Wizard for Beta Release | 2006-06-13 A | 2006-07-10 A |  | 0% → 100% | 12d → none |  | was named Implement caGrid 1.0 Installer and Deployment Wizard |
| 55 | Implement and test integration of CSM in caGrid 1.0 | 2006-06-13 A | 2006-07-10 → 2006-08-11 (+32d) | 20d → 44d | 0% → 20% | 12d → 178d |  | constraint start no earlier than 2006-06-13 → finish no earlier than 2006-08-11 |
| 56 | Implement and test caDSR integration in caGrid 1.0 | 2006-06-13 → 2006-07-24 A (+41d) | 2006-06-26 → 2006-08-04 (+39d) |  | 0% → 60% | 22d → 183d |  | constraint start no earlier than 2006-06-13 → finish no earlier than 2006-08-04 |
| 60 | **Transition** | 2006-07-13 → 2006-04-17 A (-87d) | 2006-07-26 A | 10d → 73d? | 0% → 100% | 10d → none |  |  |
| 61 | **Update design documents** | 2006-07-13 → 2006-04-17 A (-87d) | 2006-07-17 → 2006-04-17 A (-91d) | 3d → 1d? | 0% → 100% | 17d → none |  | constraint start no earlier than 2006-07-13 → none |
| 66 | System Testing | 2006-07-13 A | 2006-07-26 A |  | 0% → 100% | 10d → none |  | resources none → DW |
| 67 | **Software Development Cycle 2** | 2006-07-27 A | 2006-10-25 → 2006-10-27 (+2d) | 65d → 67d | 0% → 4% |  |  |  |
| 68 | **Inception** | 2006-07-27 A | 2006-08-09 → 2006-08-08 (-1d) | 10d → 9d | 0% → 44% | 10d → 58d |  |  |
| 69 | Update Project Plan | 2006-07-27 A |  |  | 0% → 80% | 10d → 17.5d |  | resources none → Team |
| 70 | Requirements and Specifications Collection | 2006-07-31 → 2006-07-28 A (-3d) | 2006-08-04 → 2006-08-03 (-1d) |  | 0% → 90% | 10d → 13d | Phase and Iteration Plan → 69 | resources none → VK |
| 71 | Draft Use Case Model | 2006-08-07 → 2006-08-04 (-3d) | 2006-08-09 → 2006-08-08 (-1d) |  |  | 10d → 13d |  | resources none → VK |
| 72 | Update Test Plan for components Unit testing |  |  |  |  | 62d → 64d |  | was named Update Test Plan; resources none → VK |
| 73 | **Elaboration** | 2006-08-10 → 2006-08-09 (-1d) | 2006-09-20 → 2006-10-06 (+16d) | 30d → 43d |  | 10d → 0d |  |  |
| 74 | **Iteration I** | 2006-08-10 → 2006-08-09 (-1d) | 2006-08-30 → 2006-08-29 (-1d) |  |  | 10d → 13d |  |  |
| 75 | **Design for migrating grid enabled caBIO and caArray data services to caGrid 1.0** | 2006-08-10 → 2006-08-09 (-1d) | 2006-08-30 → 2006-08-29 (-1d) |  |  | 10d → 13d |  |  |
| 76 | Create UML Artifacts | 2006-08-10 → 2006-08-09 (-1d) | 2006-08-18 → 2006-08-17 (-1d) |  |  | 10d → 13d |  |  |
| 77 | Code and Test | 2006-08-10 → 2006-08-09 (-1d) | 2006-08-23 → 2006-08-22 (-1d) |  |  | 15d → 18d |  |  |
| 78 | Prepare detailed design document | 2006-08-21 → 2006-08-18 (-3d) | 2006-08-30 → 2006-08-29 (-1d) |  |  | 10d → 13d |  |  |
| 79 | **Design caGrid Installer and Deployment Wizard** | 2006-08-10 → 2006-08-09 (-1d) | 2006-08-21 → 2006-08-18 (-3d) |  |  | 32d → 35d |  |  |
| 80 | Update UML Artifacts | 2006-08-10 → 2006-08-09 (-1d) | 2006-08-18 → 2006-08-17 (-1d) |  |  | 33d → 36d |  | was named UML Artifacts |
| 81 | Update Design document | 2006-08-10 → 2006-08-09 (-1d) | 2006-08-21 → 2006-08-18 (-3d) |  |  | 32d → 35d |  | was named Design document |
| 82 | Update Risk List | 2006-08-10 → 2006-08-09 (-1d) | 2006-08-10 → 2006-08-09 (-1d) |  |  | 39d → 40d |  |  |
| 83 | **Iteration II** | 2006-08-31 → 2006-08-30 (-1d) | 2006-09-20 → 2006-10-06 (+16d) | 15d → 28d |  | 10d → 0d |  |  |
| 84 | Implement migration of caBIO and caArray data services from caGrid 0.5 to caGrid 1.0 | 2006-08-31 → 2006-08-30 (-1d) | 2006-09-20 → 2006-09-19 (-1d) |  |  | 10d → 13d |  |  |
| 85 | Design and create prototypes for component services for Installer and Deployment Wizard | 2006-08-31 → 2006-08-30 (-1d) | 2006-09-20 → 2006-09-19 (-1d) |  |  | 10d → 13d |  | was named Design and create prototypes for Installer and Deployment Wizard |
| 86 | Update Risk List |  | 2006-09-20 → 2006-10-06 (+16d) | 1d → 13d |  | 10d → 0d |  | constraint start no earlier than 2006-09-20 → finish no earlier than 2006-10-06 |
| 87 | **Construction** | 2006-09-21 → 2006-10-09 (+18d) | 2006-10-18 → 2006-10-20 (+2d) | 20d → 10d |  |  |  |  |
| 88 | **Iteration I** | 2006-09-21 → 2006-10-09 (+18d) | 2006-10-18 → 2006-10-20 (+2d) | 20d → 10d |  |  |  |  |
| 89 | **Migration of caGrid 0.5 users to caGrid 1.0** | 2006-09-21 → 2006-10-09 (+18d) | 2006-10-04 → 2006-10-20 (+16d) |  |  | 10d → 0d |  |  |
| 90 | UML Artifacts | 2006-09-21 → 2006-10-09 (+18d) | 2006-10-04 → 2006-10-20 (+16d) |  |  | 10d → 0d |  |  |
| 91 | Design and SOP document | 2006-09-21 → 2006-10-09 (+18d) | 2006-10-04 → 2006-10-20 (+16d) |  |  | 10d → 0d |  |  |

| ID | Task | Start | Finish | Duration | Complete | Total float | Other |
| --- | --- | --- | --- | --- | --- | --- | --- |
| 92 | **Implement caGrid 1.0 Installer and Deployment Wizard** | 2006-09-21 → 2006-10-09 (+18d) | 2006-10-18 → 2006-10-20 (+2d) | 20d → 10d |  |  |  |
| 93 | Code and Test | 2006-09-21 → 2006-10-09 (+18d) | 2006-10-04 → 2006-10-20 (+16d) |  |  | 10d → 0d |  |
| 95 | **Transition** | 2006-10-19 → 2006-10-23 (+4d) | 2006-10-25 → 2006-10-27 (+2d) |  |  |  |  |
| 96 | Update design document for caGrid installer and deployer | 2006-10-19 → 2006-10-23 (+4d) | 2006-10-25 → 2006-10-27 (+2d) |  |  |  |  |
| 97 | Update document for migration of caGrid 0.5 user credentials to caGrid 1.0 | 2006-10-19 → 2006-10-23 (+4d) | 2006-10-25 → 2006-10-27 (+2d) |  |  |  |  |
| 98 | System Testing | 2006-10-19 → 2006-10-23 (+4d) | 2006-10-25 → 2006-10-27 (+2d) |  |  |  | resources none → DW |
| 99 | Update software architecture document | 2006-10-19 → 2006-10-23 (+4d) | 2006-10-25 → 2006-10-27 (+2d) |  |  |  |  |
| 100 | **Software Development Cycle 3** | 2006-10-26 → 2006-10-30 A (+4d) | 2007-04-16 → 2007-04-18 (+2d) |  |  |  |  |
| 101 | **Inception** | 2006-10-26 → 2006-10-30 A (+4d) | 2006-11-08 → 2006-11-10 (+2d) |  | 0% → 1% |  |  |
| 102 | **Iteration I** | 2006-10-26 → 2006-10-30 A (+4d) | 2006-11-08 → 2006-11-10 (+2d) |  | 0% → 1% |  |  |
| 103 | Requirement collection for caGrid Browser | 2006-10-26 → 2006-10-30 A (+4d) | 2006-11-01 → 2006-11-03 (+2d) |  | 0% → 2% |  | resources none → VK |
| 104 | Use Case Model for caGrid Browser | 2006-11-02 → 2006-11-06 (+4d) | 2006-11-08 → 2006-11-10 (+2d) |  |  |  |  |
| 105 | **Iteration II** | 2006-10-26 → 2006-10-30 (+4d) | 2006-10-27 → 2006-10-31 (+4d) |  |  |  |  |
| 106 | Use Case Specification Review and Adjustment | 2006-10-26 → 2006-10-30 (+4d) | 2006-10-27 → 2006-10-31 (+4d) |  |  |  |  |
| 107 | **Elaboration** | 2006-11-09 → 2006-11-13 (+4d) | 2006-12-28 → 2007-01-01 (+4d) |  |  |  |  |
| 108 | **Iteration I** | 2006-11-09 → 2006-11-13 (+4d) | 2006-11-29 → 2006-12-01 (+2d) |  |  |  |  |
| 109 | **Design for caGrid Browser enhancements** | 2006-11-09 → 2006-11-13 (+4d) | 2006-11-29 → 2006-12-01 (+2d) |  |  |  |  |
| 110 | UML Artifacts | 2006-11-09 → 2006-11-13 (+4d) | 2006-11-22 → 2006-11-24 (+2d) |  |  |  |  |
| 111 | Design document | 2006-11-23 → 2006-11-27 (+4d) | 2006-11-29 → 2006-12-01 (+2d) |  |  |  |  |
| 112 | Migration document and SOP for data services and analytical services from caGrid 0.5 to caGrid 1.0 | 2006-11-09 → 2006-11-13 (+4d) | 2006-11-29 → 2006-12-01 (+2d) |  |  |  |  |
| 114 | **Iteration II** | 2006-11-30 → 2006-12-04 (+4d) | 2006-12-28 → 2007-01-01 (+4d) |  |  |  |  |
| 115 | **Implement caGrid 1.0 Browser** | 2006-11-30 → 2006-12-04 (+4d) | 2006-12-28 → 2007-01-01 (+4d) |  |  |  |  |
| 116 | Code and test | 2006-11-30 → 2006-12-04 (+4d) | 2006-12-28 → 2007-01-01 (+4d) |  |  |  |  |
| 117 | **Implementation of migration of NCICB users from caGrid 0.5 to caGrid 1.0** | 2006-11-30 → 2006-12-04 (+4d) | 2006-12-20 → 2006-12-22 (+2d) |  |  |  |  |
| 118 | Code and test | 2006-11-30 → 2006-12-04 (+4d) | 2006-12-20 → 2006-12-22 (+2d) |  |  |  |  |
| 119 | **Construction** | 2006-12-29 → 2007-01-02 (+4d) | 2007-02-22 → 2007-02-26 (+4d) |  |  |  |  |
| 120 | **Iteration I** | 2006-12-29 → 2007-01-02 (+4d) | 2007-01-25 → 2007-01-29 (+4d) |  |  |  |  |
| 121 | **caGrid 1.0 Browser Release 2 Implementation** | 2006-12-29 → 2007-01-02 (+4d) | 2007-01-25 → 2007-01-29 (+4d) |  |  |  |  |
| 122 | Code and test | 2006-12-29 → 2007-01-02 (+4d) | 2007-01-25 → 2007-01-29 (+4d) |  |  |  |  |
| 123 | **Iteration II** | 2007-01-26 → 2007-01-30 (+4d) | 2007-02-22 → 2007-02-26 (+4d) |  |  |  |  |
| 124 | **System Test Plan and Results** | 2007-01-26 → 2007-01-30 (+4d) | 2007-02-22 → 2007-02-26 (+4d) |  |  |  |  |
| 125 | Develop test cases | 2007-01-26 → 2007-01-30 (+4d) | 2007-02-15 → 2007-02-19 (+4d) |  |  |  |  |
| 126 | Conduct testing | 2007-01-26 → 2007-01-30 (+4d) | 2007-02-15 → 2007-02-19 (+4d) |  |  |  |  |
| 127 | Continuous defect fixing | 2007-01-26 → 2007-01-30 (+4d) | 2007-02-22 → 2007-02-26 (+4d) |  |  |  |  |
| 128 | **Transition** | 2007-02-23 → 2007-02-27 (+4d) | 2007-04-16 → 2007-04-18 (+2d) |  |  |  |  |
| 129 | **Iteration I** | 2007-02-23 → 2007-02-27 (+4d) | 2007-04-05 → 2007-04-09 (+4d) |  |  |  |  |
| 130 | Technical Guide | 2007-02-23 → 2007-02-27 (+4d) | 2007-03-22 → 2007-03-26 (+4d) |  |  |  |  |
| 131 | User Guide | 2007-03-23 → 2007-03-27 (+4d) | 2007-04-05 → 2007-04-09 (+4d) |  |  |  |  |
| 132 | System Testing | 2007-02-23 → 2007-02-27 (+4d) | 2007-03-08 → 2007-03-12 (+4d) |  |  |  |  |
| 133 | **Iteration II** | 2007-04-06 → 2007-04-10 (+4d) | 2007-04-16 → 2007-04-18 (+2d) |  |  |  |  |
| 134 | Lesson learned | 2007-04-06 → 2007-04-10 (+4d) | 2007-04-12 → 2007-04-16 (+4d) |  |  |  |  |
| 135 | Release notes | 2007-04-13 → 2007-04-17 (+4d) | 2007-04-16 → 2007-04-18 (+2d) |  |  |  |  |
