# OSU_caGrid_1.0

How a schedule from MS Project changed from version to version. A marks actual dates.

## Version 1 (data date 2006-01-03, saved 2006-01-03)

Note of the change: intial osu project plan

| ID | WBS | Task | Duration | Start | Finish | Predecessors | Complete | Total float | Constraint |
| --- | --- | --- | --- | --- | --- | --- | --- | --- | --- |
| 1 | 1 | **caGrid 1.0** | 169d? | 2005-12-01 A | 2006-08-01 |  | 42% | 0d |  |
| 2 | 1.1 | **Inception** | 40d? | 2005-12-01 A | 2006-02-01 |  | 82% | 129d |  |
| 3 |  | caGrid 0.5 Evaluation/Post Mortem | 3d? | 2005-12-01 A | 2005-12-05 A |  | 100% |  |  |
| 4 |  | Publish caGrid 0.5 Paper | 40d | 2005-12-01 A | 2006-02-01 |  | 80% | 129d |  |
| 5 |  | Use Case Solicitation | 1d | 2005-12-01 A | 2005-12-01 A |  | 100% |  |  |
| 6 | 1.2 | **Baseline Infrastructure Development** | 6d? | 2005-12-01 A | 2005-12-08 |  | 92% | 163d |  |
| 7 |  | Project Layout/ Build process | 3d | 2005-12-01 A | 2005-12-05 A |  | 100% |  |  |
| 8 |  | Testing Plan/Process | 3d | 2005-12-06 A | 2005-12-08 A | 7 | 100% |  |  |
| 9 |  | Technology Stack Evaluation | 5d? | 2005-12-01 A | 2005-12-07 A |  | 100% |  |  |
| 10 |  | Master Project Plan Review | 1d? | 2005-12-01 | 2005-12-01 |  |  | 168d |  |
| 11 | 1.3 | **Migration of Known Components** | 5d? | 2005-12-06 A | 2005-12-12 A |  | 100% |  |  |
| 12 | 1.3.1 | **Baseline Technology Migration** | 5d? | 2005-12-06 A | 2005-12-12 A | 7 | 100% |  |  |
| 13 |  | Metadata Beans | 1d? | 2005-12-06 A | 2005-12-06 A |  | 100% |  |  |
| 14 |  | Base Introduce | 5d | 2005-12-06 A | 2005-12-12 A |  | 100% |  |  |
| 15 |  | Index Service / MDS Components | 5d | 2005-12-06 A | 2005-12-12 A |  | 100% |  |  |
| 16 |  | GME | 5d | 2005-12-06 A | 2005-12-12 A |  | 100% |  |  |
| 17 | 1.4 | **Initial Iteration** | 27d? | 2005-12-01 A | 2006-01-13 |  | 93% | 142d |  |
| 18 | 1.4.1 | **Initial Federated Identity Management Solution** | 27d? | 2005-12-01 A | 2006-01-13 |  | 95% | 142d |  |
| 19 |  | Evaluate Recommendations from Security Whitepaper | 2d? | 2005-12-01 A | 2005-12-02 A |  | 100% |  |  |
| 20 |  | Investigate Options for Certificate Creation | 5d | 2005-12-01 A | 2005-12-07 A |  | 100% |  |  |
| 21 |  | Design Separation of Identity Assertion from Credential Creation in GUMS | 5d | 2005-12-01 A | 2005-12-07 A |  | 100% |  |  |
| 22 |  | Prototype SimpleCA replacement | 5d | 2005-12-08 A | 2005-12-14 A | 20 | 100% |  |  |
| 23 |  | Prototype Credential Creation Component | 5d | 2005-12-15 A | 2005-12-21 A | 22 | 100% |  |  |
| 24 |  | Prototype Simple Identity Provider Component | 2d | 2005-12-22 A | 2005-12-23 A | 23 | 100% |  |  |
| 25 |  | Prototype Identity Federation Service | 5d? | 2006-01-02 A | 2006-01-06 A | 24 | 100% |  |  |
| 26 |  | Prototype Graphical Identity Management Client | 5d | 2006-01-09 A | 2006-01-13 | 25 | 80% | 142d |  |
| 27 |  | Unit Testing | 5d | 2005-12-01 A | 2005-12-07 |  | 80% | 164d |  |
| 28 | 1.4.2 | **Initial Introduce Toolkit** | 3d? | 2005-12-01 A | 2005-12-05 |  | 84% | 166d |  |
| 29 |  | Gap analysis | 1d? | 2005-12-01 A | 2005-12-01 A |  | 100% |  |  |
| 30 |  | Generalization to Support Other Service Types | 3d? | 2005-12-01 A | 2005-12-05 |  | 67% | 166d |  |
| 31 |  | Add Support for Faults/Exceptions | 3d | 2005-12-01 A | 2005-12-05 A |  | 100% |  |  |
| 32 |  | Investigation of Tmplate Engines for Code Generation | 1d? | 2005-12-01 A | 2005-12-01 A |  | 100% |  |  |
| 33 |  | Migrate Code Generation to Template Engine | 1d? | 2005-12-01 A | 2005-12-01 A |  | 100% |  |  |
| 34 |  | Add Backup / Restore support | 1d? | 2005-12-01 A | 2005-12-01 |  | 90% | 168d |  |
| 35 |  | Basic Service Creation System Testing | 3d? | 2005-12-01 A | 2005-12-05 |  | 67% | 166d |  |
| 36 | 1.4.3 | **Initial Metadata Framework** | 10d? | 2005-12-01 A | 2005-12-14 |  | 96% | 159d |  |
| 37 |  | Installation and Deployment of Testbed Index Service | 2d? | 2005-12-01 A | 2005-12-02 |  | 75% | 167d |  |
| 38 |  | Design Integration of Service Metadata using Resource Framework | 5d? | 2005-12-01 A | 2005-12-07 A |  | 100% |  |  |
| 39 |  | Develop Baseline Service Integration for Common Metadata | 5d | 2005-12-08 A | 2005-12-14 A | 38 | 100% |  |  |
| 40 | 1.4.4 | **Deployment / Installation** | 5d? | 2005-12-01 A | 2005-12-07 A |  | 100% |  |  |
| 41 |  | Simple Command Line Deployment | 5d? | 2005-12-01 A | 2005-12-07 A |  | 100% |  |  |
| 42 | 1.5 | **Second Iteration** | 44d? | 2006-02-01 A | 2006-04-03 |  | 11% | 86d | start no earlier than 2006-02-01 |
| 43 | 1.5.1 | **Infrastructure** | 5d? | 2006-02-01 A | 2006-02-07 |  | 48% | 125d |  |
| 44 | 1.5.1.1 | **Manage Intra-Project Artifact Dependencies** | 3d? | 2006-02-01 A | 2006-02-03 |  | 96% | 127d |  |
| 45 |  | Define Dependencies | 1d? | 2006-02-01 A | 2006-02-01 |  | 80% | 129d |  |
| 46 |  | Develop Custom Ant Task to Copy Dependant Artifacts | 3d? | 2006-02-01 A | 2006-02-03 A |  | 100% |  |  |
| 47 |  | Integrate into Main Build Process | 1d? | 2006-02-01 A | 2006-02-01 A |  | 100% |  |  |
| 48 |  | Initial Release Process | 5d? | 2006-02-01 | 2006-02-07 |  |  | 125d |  |
| 49 | 1.5.2 | **Federated Identity Management Solution** | 44d? | 2006-02-01 A | 2006-04-03 |  | 8% | 86d |  |
| 50 |  | Service Usage Logging Support | 3d? | 2006-02-01 | 2006-02-03 |  |  | 125d |  |
| 51 |  | GUI Support for usage information | 2d? | 2006-02-06 | 2006-02-07 | 50 |  | 125d |  |
| 52 |  | User Event Notification | 1d? | 2006-02-01 | 2006-02-01 |  |  | 129d |  |
| 53 |  | Initial Installation and Users Guide | 5d? | 2006-02-01 A | 2006-02-07 |  | 20% | 124d |  |
| 54 |  | Initial Community Adoption and Testing | 1d? | 2006-04-03 | 2006-04-03 | 53 |  | 86d | start no earlier than 2006-04-03 |
| 55 | 1.5.3 | **Federated Authorization Solution** | 19d? | 2006-02-01 | 2006-02-27 |  |  | 111d |  |
| 56 |  | Review and Analyze Community use cases | 1d? | 2006-02-01 | 2006-02-01 |  |  | 111d |  |
| 57 |  | Investigate Attribute-based Authorization Solutions | 8d? | 2006-02-02 | 2006-02-13 | 56 |  | 111d |  |
| 58 |  | Investigate Globus Authz Framework | 5d? | 2006-02-14 | 2006-02-20 | 57 |  | 111d |  |
| 59 |  | Design Authorization Solution | 5d? | 2006-02-21 | 2006-02-27 | 58 |  | 111d |  |
| 60 | 1.5.4 | **Solution for Service Credentials** | 5d | 2006-02-01 | 2006-02-07 |  |  | 125d |  |
| 61 |  | Analyze Use Cases | 2d | 2006-02-01 | 2006-02-02 |  |  | 128d |  |
| 62 |  | Investigate options | 2d | 2006-02-01 | 2006-02-02 |  |  | 128d |  |
| 63 |  | Design Solution | 5d | 2006-02-01 | 2006-02-07 |  |  | 125d |  |
| 64 | 1.5.5 | **Solution for Managing Trust** | 5d | 2006-02-01 | 2006-02-07 |  |  | 125d |  |
| 65 |  | Analyze Use Cases | 2d | 2006-02-01 | 2006-02-02 |  |  | 128d |  |
| 66 |  | Investigate options | 5d | 2006-02-01 | 2006-02-07 |  |  | 125d |  |
| 67 |  | Design Solution | 5d | 2006-02-01 | 2006-02-07 |  |  | 125d |  |
| 68 | 1.5.6 | **Introduce Toolkit** | 5d? | 2006-02-01 A | 2006-02-07 |  | 35% | 125d |  |
| 69 |  | Extract Generated Classnames directly from Axis | 4d | 2006-02-01 A | 2006-02-06 A |  | 100% |  |  |
| 70 |  | Generalize to Support Multiple Service Types | 2d? | 2006-02-01 A | 2006-02-02 |  | 50% | 128d |  |

| ID | WBS | Task | Duration | Start | Finish | Predecessors | Complete | Total float | Constraint |
| --- | --- | --- | --- | --- | --- | --- | --- | --- | --- |
| 71 |  | Simple Deployment Support with Parameter Substitution | 2d? | 2006-02-01 A | 2006-02-02 |  | 50% | 128d |  |
| 72 | 1.5.6.4 | **Generalize Metadata Integration** | 5d | 2006-02-01 | 2006-02-07 |  |  | 125d |  |
| 73 |  | Discover Types from GME | 2d | 2006-02-01 | 2006-02-02 |  |  | 128d |  |
| 74 |  | Selection of which Types to Register | 2d | 2006-02-01 | 2006-02-02 |  |  | 128d |  |
| 75 |  | Code Generation to Support Arbitrary Types | 5d | 2006-02-01 | 2006-02-07 |  |  | 125d |  |
| 76 | 1.5.7 | **Analytical Services** | 5d | 2006-02-01 | 2006-02-07 |  |  | 125d |  |
| 77 |  | Investigation of HPC Requirements | 5d | 2006-02-01 | 2006-02-07 |  |  | 125d |  |
| 78 |  | Example GRAM Service | 5d | 2006-02-01 | 2006-02-07 |  |  | 125d |  |
| 79 |  | Design for Non-Java Services | 5d | 2006-02-01 | 2006-02-07 |  |  | 125d |  |
| 80 | 1.5.8 | **Metadata Framework** | 7d? | 2006-02-01 A | 2006-02-09 |  | 10% | 123d |  |
| 81 |  | Investigation of LexBIG Integration Requirements | 3d? | 2006-02-01 | 2006-02-03 |  |  | 127d |  |
| 82 |  | Baseline caDSR Grid Service | 7d? | 2006-02-01 A | 2006-02-09 |  | 25% | 118d |  |
| 83 |  | Type Agnostic Resource Framework for Service Metadata | 5d | 2006-02-01 | 2006-02-07 |  |  | 125d |  |
| 84 |  | Investigation of Polling versus Notification for Metadata | 3d? | 2006-02-01 | 2006-02-03 |  |  | 127d |  |
| 85 | 1.5.9 | **Deployment / Installation** | 5d? | 2006-02-01 | 2006-02-07 |  |  | 125d |  |
| 86 |  | Design Installation/Deployment Process | 5d? | 2006-02-01 | 2006-02-07 |  |  | 125d |  |
| 87 |  | Prototype Base Installer | 5d? | 2006-02-01 | 2006-02-07 |  |  | 125d |  |
| 88 |  | Prototype Deployment Infrastructure | 5d? | 2006-02-01 | 2006-02-07 |  |  | 125d |  |
| 89 | 1.6 | **Thrid Iteration** | 14d? | 2006-05-01 | 2006-05-18 |  |  | 53d | start no earlier than 2006-05-01 |
| 90 | 1.6.1 | **Infrastructure** | 1d? | 2006-05-01 | 2006-05-01 |  |  | 66d |  |
| 91 |  | asdf | 1d? | 2006-05-01 | 2006-05-01 |  |  | 66d |  |
| 92 | 1.6.2 | **Federated Identity Management Solution** | 1d? | 2006-05-01 | 2006-05-01 |  |  | 66d |  |
| 93 |  | asdf | 1d? | 2006-05-01 | 2006-05-01 |  |  | 66d |  |
| 94 | 1.6.3 | **Federated Authorization Solution** | 1d? | 2006-05-01 | 2006-05-01 |  |  | 66d |  |
| 95 |  | asdf | 1d? | 2006-05-01 | 2006-05-01 |  |  | 66d |  |
| 96 | 1.6.4 | **Introduce Toolkit** | 7d? | 2006-05-01 | 2006-05-09 |  |  | 60d |  |
| 97 |  | Support for Co-Existence of Generated and Existing Classes | 5d? | 2006-05-01 | 2006-05-05 |  |  | 62d |  |
| 98 |  | caDSR Integration for Data Type Selection | 5d? | 2006-05-01 | 2006-05-05 | 82 |  | 62d |  |
| 99 |  | Integrate Security Configuration | 7d? | 2006-05-01 | 2006-05-09 |  |  | 60d |  |
| 100 |  | User's Guide Documentation | 7d? | 2006-05-01 | 2006-05-09 |  |  | 60d |  |
| 101 | 1.6.5 | **Analytical Services** | 10d? | 2006-05-01 | 2006-05-12 |  |  | 57d |  |
| 102 |  | Document Analytical Service Specification | 10d? | 2006-05-01 | 2006-05-12 |  |  | 57d |  |
| 103 | 1.6.6 | **Metadata Framework** | 14d? | 2006-05-01 | 2006-05-18 |  |  | 53d |  |
| 104 |  | Develop Simpler, Specialized Graphical Client for GME? | 6d? | 2006-05-01 | 2006-05-08 |  |  | 61d |  |
| 105 |  | Finalize Metadata Standards with VCDE Collaboration | 4d? | 2006-05-01 | 2006-05-04 |  |  | 53d |  |
| 106 |  | Implement Discovery API | 10d | 2006-05-05 | 2006-05-18 | 105 |  | 53d |  |
| 107 |  | Document Metadata Infrastructure | 10d? | 2006-05-01 | 2006-05-12 |  |  | 57d |  |
| 108 | 1.6.7 | **Deployment / Installation** | 1d? | 2006-05-01 | 2006-05-01 |  |  | 66d |  |
| 109 |  | Document Installation and Deployment Process | 1d? | 2006-05-01 | 2006-05-01 |  |  | 66d |  |
| 110 | 1.7 | **Future Work** | 1d? | 2006-08-01 | 2006-08-01 |  |  | 0d | start no earlier than 2006-08-01 |
| 111 | 1.7.1 | **Infrastructure** | 0d | 2006-08-01 | 2006-08-01 |  |  | 1d |  |
| 112 |  | asdf | 0d | 2006-08-01 | 2006-08-01 |  |  | 1d |  |
| 113 | 1.7.2 | **Federated Identity Management Solution** | 0d | 2006-08-01 | 2006-08-01 |  |  | 1d |  |
| 114 |  | asdf | 0d | 2006-08-01 | 2006-08-01 |  |  | 1d |  |
| 115 | 1.7.3 | **Federated Authorization Solution** | 1d? | 2006-08-01 | 2006-08-01 |  |  | 0d |  |
| 116 |  | asdf | 1d? | 2006-08-01 | 2006-08-01 |  |  | 0d |  |
| 117 | 1.7.4 | **Introduce Toolkit** | 0d? | 2006-08-01 | 2006-08-01 |  |  | 1d |  |
| 118 |  | Explicit Support for Stateful Services | 0d? | 2006-08-01 | 2006-08-01 |  |  | 1d |  |
| 119 | 1.7.5 | **Analytical Services** | 1d? | 2006-08-01 | 2006-08-01 |  |  | 0d |  |
| 120 |  | asdf | 1d? | 2006-08-01 | 2006-08-01 |  |  | 0d |  |
| 121 | 1.7.6 | **Metadata Framework** | 0d | 2006-08-01 | 2006-08-01 |  |  | 1d |  |
| 122 |  | asdf | 0d | 2006-08-01 | 2006-08-01 |  |  | 1d |  |
| 123 | 1.7.7 | **Deployment / Installation** | 0d | 2006-08-01 | 2006-08-01 |  |  | 1d |  |
| 124 |  | asdf | 0d | 2006-08-01 | 2006-08-01 |  |  | 1d |  |

## Version 2 (data date 2006-01-03, saved 2006-01-11)

Note of the change: *** empty log message ***

Last finish stays 2006-08-01. Complete tasks 26 → 28.

Changed:

| ID | Task | Start | Finish | Complete | Total float |
| --- | --- | --- | --- | --- | --- |
| 1 | **caGrid 1.0** |  |  | 42% → 44% |  |
| 42 | **Second Iteration** |  |  | 11% → 16% |  |
| 68 | **Introduce Toolkit** |  |  | 35% → 76% |  |
| 72 | **Generalize Metadata Integration** | 2006-02-01 A |  | 0% → 78% |  |
| 73 | Discover Types from GME | 2006-02-01 A | 2006-02-02 A | 0% → 100% | 128d → none |
| 74 | Selection of which Types to Register | 2006-02-01 A | 2006-02-02 A | 0% → 100% | 128d → none |
| 75 | Code Generation to Support Arbitrary Types | 2006-02-01 A |  | 0% → 60% |  |

## Version 3 (data date 2006-01-03, saved 2006-01-20)

Note of the change: added deadlines and tasks from meeting

Last finish 2006-08-01 → 2006-10-23 (+83d). Complete tasks 28 → 31.

Added:

| ID | Task | Duration | Start | Finish | Predecessors | Constraint |
| --- | --- | --- | --- | --- | --- | --- |
| 54 | **Integration with Existing Institutional IdP** | 5d? | 2006-02-08 A | 2006-02-14 | 53 |  |
| 55 | OSU | 3d | 2006-02-08 A | 2006-02-10 |  |  |
| 56 | Other? (maybe Georgetown) | 5d? | 2006-02-08 | 2006-02-14 |  |  |
| 74 | Add service template concept | 2d | 2006-01-16 A | 2006-01-17 |  |  |
| 75 | Create Analytical Serivce Template | 1d | 2006-01-16 | 2006-01-16 |  |  |
| 76 | Create Data Serivce Template | 2d? | 2006-01-16 | 2006-01-17 |  |  |
| 77 | Simple Security Configuration | 3d? | 2006-01-16 | 2006-01-18 |  |  |
| 84 | Secure Client API | 4d | 2006-01-16 | 2006-01-19 |  |  |
| 86 | Basic Discovery API | 4d? | 2006-01-16 | 2006-01-19 |  |  |
| 108 | asdf | 10d? | 2006-04-04 | 2006-04-17 |  |  |
| 116 | **Fourth Iteration (prior to Feature Freeze)** | 1d? | 2006-04-21 | 2006-04-24 | 95 |  |
| 117 | **Infrastructure** | 0d | 2006-04-21 | 2006-04-21 |  |  |
| 118 | asdf | 0d | 2006-04-21 | 2006-04-21 |  |  |
| 119 | **Federated Identity Management Solution** | 0d | 2006-04-21 | 2006-04-21 |  |  |
| 120 | asdf | 0d | 2006-04-21 | 2006-04-21 |  |  |
| 121 | **Federated Authorization Solution** | 1d? | 2006-04-24 | 2006-04-24 |  |  |
| 122 | asdf | 1d? | 2006-04-24 | 2006-04-24 |  |  |
| 123 | **Introduce Toolkit** | 0d? | 2006-04-21 | 2006-04-21 |  |  |
| 124 | Explicit Support for Stateful Services | 0d? | 2006-04-21 | 2006-04-21 |  |  |
| 125 | **Analytical Services** | 1d? | 2006-04-24 | 2006-04-24 |  |  |
| 126 | asdf | 1d? | 2006-04-24 | 2006-04-24 |  |  |
| 127 | **Metadata Framework** | 0d | 2006-04-21 | 2006-04-21 |  |  |
| 128 | asdf | 0d | 2006-04-21 | 2006-04-21 |  |  |
| 129 | **Deployment / Installation** | 0d | 2006-04-21 | 2006-04-21 |  |  |
| 130 | asdf | 0d | 2006-04-21 | 2006-04-21 |  |  |
| 131 | **Fifth Iteration (prior to Release)** | 7d? | 2006-04-24 | 2006-05-03 | 116 |  |
| 132 | **Infrastructure** | 0d | 2006-04-24 | 2006-04-24 |  |  |
| 133 | asdf | 0d | 2006-04-24 | 2006-04-24 |  |  |
| 134 | **Federated Identity Management Solution** | 0d | 2006-04-24 | 2006-04-24 |  |  |
| 135 | asdf | 0d | 2006-04-24 | 2006-04-24 |  |  |
| 136 | **Federated Authorization Solution** | 1d? | 2006-04-25 | 2006-04-25 |  |  |
| 137 | asdf | 1d? | 2006-04-25 | 2006-04-25 |  |  |
| 138 | **Introduce Toolkit** | 0d? | 2006-04-24 | 2006-04-24 |  |  |
| 139 | Explicit Support for Stateful Services | 0d? | 2006-04-24 | 2006-04-24 |  |  |
| 140 | **Analytical Services** | 7d? | 2006-04-25 | 2006-05-03 |  |  |
| 145 | **Metadata Framework** | 0d | 2006-04-24 | 2006-04-24 |  |  |
| 146 | asdf | 0d | 2006-04-24 | 2006-04-24 |  |  |
| 147 | **Deployment / Installation** | 0d | 2006-04-24 | 2006-04-24 |  |  |
| 148 | asdf | 0d | 2006-04-24 | 2006-04-24 |  |  |
| 164 | **High-Level Milestones** | 188d | 2006-02-01 | 2006-10-23 |  |  |
| 165 | Arch/VCDE Face to Face Meeting | 0d | 2006-02-01 | 2006-02-01 |  | must finish on 2006-02-01 |
| 166 | Annual Meeting (Infrastructure Freeze) | 0d | 2006-04-03 | 2006-04-03 | 42 | must finish on 2006-04-03 |
| 167 | Annual Meeting/Demo | 0d | 2006-04-10 | 2006-04-10 |  | must finish on 2006-04-10 |
| 168 | caGrid 1.0 Beta (Public API Freeze) | 0d | 2006-06-16 | 2006-06-16 | 95 | must finish on 2006-06-16 |
| 169 | caGrid 1.0 Feature Freeze | 0d | 2006-08-18 | 2006-08-18 | 116 | must finish on 2006-08-18 |
| 170 | caGrid 1.0 Release | 0d | 2006-10-23 | 2006-10-23 | 131 | must finish on 2006-10-23 |

Changed:

| ID | Task | Start | Finish | Duration | Complete | Total float | Predecessors | Other |
| --- | --- | --- | --- | --- | --- | --- | --- | --- |
| 1 | **caGrid 1.0** |  | 2006-08-01 → 2006-10-23 (+83d) | 169d? → 228d? | 44% → 42% |  |  |  |
| 6 | **Baseline Infrastructure Development** |  | 2005-12-08 A |  | 92% → 100% | 163d → none |  |  |
| 16 | **Initial Iteration** |  |  |  | 93% → 95% | 142d → 0d |  |  |
| 18 | **Initial Federated Identity Management Solution** |  | 2006-01-13 A |  | 95% → 100% | 142d → none |  |  |
| 26 | Prototype Graphical Identity Management Client |  | 2006-01-13 A |  | 80% → 100% | 142d → none |  |  |
| 27 | Unit Testing |  | 2005-12-07 A |  | 80% → 100% | 164d → none |  |  |
| 42 | **Second Iteration (prior to Annual Meeting)** | 2006-02-01 A → 2006-01-16 A (-16d) |  | 44d? → 56d? | 16% → 21% | 86d → 0d | none → 16 | was named Second Iteration; constraint start no earlier than 2006-02-01 → none |
| 43 | **Infrastructure** | 2006-02-01 A → 2006-01-16 A (-16d) | 2006-02-07 → 2006-02-03 (-4d) | 5d? → 15d? | 48% → 50% | 125d → 41d |  |  |
| 44 | **Manage Intra-Project Artifact Dependencies** |  | 2006-02-03 A |  | 96% → 100% | 127d → none |  |  |
| 45 | Define Dependencies |  | 2006-02-01 A |  | 80% → 100% | 129d → none |  |  |
| 48 | Initial Release Process | 2006-02-01 → 2006-01-16 (-16d) | 2006-02-07 → 2006-01-20 (-18d) |  |  | 125d → 51d |  |  |
| 49 | **Federated Identity Management Solution** | 2006-02-01 A → 2006-01-16 A (-16d) |  | 44d? → 56d? | 8% → 19% | 86d → 0d |  |  |
| 50 | Service Usage Logging Support | 2006-02-01 → 2006-01-16 (-16d) | 2006-02-03 → 2006-01-18 (-16d) |  |  | 125d → 51d |  |  |
| 51 | GUI Support for usage information | 2006-02-06 → 2006-01-19 (-18d) | 2006-02-07 → 2006-01-20 (-18d) |  |  | 125d → 51d |  |  |
| 52 | User Event Notification | 2006-02-01 → 2006-01-16 (-16d) | 2006-02-01 → 2006-01-16 (-16d) |  |  | 129d → 55d |  |  |
| 57 | Initial Community Adoption and Testing |  |  |  |  | 86d → 0d | 53 → 55 |  |
| 58 | **Federated Authorization Solution** | 2006-02-01 → 2006-01-16 (-16d) | 2006-02-27 → 2006-02-09 (-18d) |  |  | 111d → 37d |  |  |
| 59 | Review and Analyze Community use cases | 2006-02-01 → 2006-01-16 (-16d) | 2006-02-01 → 2006-01-16 (-16d) |  |  | 111d → 37d |  |  |
| 60 | Investigate Attribute-based Authorization Solutions | 2006-02-02 → 2006-01-17 (-16d) | 2006-02-13 → 2006-01-26 (-18d) |  |  | 111d → 37d |  |  |
| 61 | Investigate Globus Authz Framework | 2006-02-14 → 2006-01-27 (-18d) | 2006-02-20 → 2006-02-02 (-18d) |  |  | 111d → 37d |  |  |
| 62 | Design Authorization Solution | 2006-02-21 → 2006-02-03 (-18d) | 2006-02-27 → 2006-02-09 (-18d) |  |  | 111d → 37d |  |  |
| 63 | **Solution for Service Credentials** | 2006-02-01 → 2006-01-16 (-16d) | 2006-02-07 → 2006-01-20 (-18d) |  |  | 125d → 51d |  |  |
| 64 | Analyze Use Cases | 2006-02-01 → 2006-01-16 (-16d) | 2006-02-02 → 2006-01-17 (-16d) |  |  | 128d → 54d |  |  |
| 65 | Investigate options | 2006-02-01 → 2006-01-16 (-16d) | 2006-02-02 → 2006-01-17 (-16d) |  |  | 128d → 54d |  |  |
| 66 | Design Solution | 2006-02-01 → 2006-01-16 (-16d) | 2006-02-07 → 2006-01-20 (-18d) |  |  | 125d → 51d |  |  |
| 67 | **Solution for Managing Trust** | 2006-02-01 → 2006-01-16 (-16d) | 2006-02-07 → 2006-01-20 (-18d) |  |  | 125d → 51d |  |  |
| 68 | Analyze Use Cases | 2006-02-01 → 2006-01-16 (-16d) | 2006-02-02 → 2006-01-17 (-16d) |  |  | 128d → 54d |  |  |
| 69 | Investigate options | 2006-02-01 → 2006-01-16 (-16d) | 2006-02-07 → 2006-01-20 (-18d) |  |  | 125d → 51d |  |  |
| 70 | Design Solution | 2006-02-01 → 2006-01-16 (-16d) | 2006-02-07 → 2006-01-20 (-18d) |  |  | 125d → 51d |  |  |
| 71 | **Introduce Toolkit** | 2006-02-01 A → 2006-01-16 A (-16d) |  | 5d? → 17d? | 76% → 59% | 125d → 39d |  |  |
| 73 | **Generalize to Support Multiple Service Types** | 2006-02-01 A → 2006-01-16 A (-16d) | 2006-02-02 → 2006-01-17 (-16d) |  | 50% → 30% | 128d → 54d |  |  |
| 83 | **Analytical Services** | 2006-02-01 → 2006-01-16 (-16d) | 2006-02-07 → 2006-01-19 (-19d) | 5d → 4d |  | 125d → 52d |  |  |
| 85 | **Metadata Framework** | 2006-02-01 A → 2006-01-16 A (-16d) |  | 7d? → 19d? | 10% → 25% | 123d → 37d |  |  |
| 87 | Investigation of LexBIG Integration Requirements | 2006-02-01 → 2006-01-16 (-16d) | 2006-02-03 → 2006-01-18 (-16d) |  |  | 127d → 53d |  |  |
| 89 | Type Agnostic Resource Framework for Service Metadata | 2006-02-01 → 2006-01-16 A (-16d) | 2006-02-07 → 2006-01-20 (-18d) |  | 0% → 75% | 125d → 51d |  |  |
| 90 | Investigation of Polling versus Notification for Metadata | 2006-02-01 → 2006-01-16 (-16d) | 2006-02-03 → 2006-01-18 (-16d) |  |  | 127d → 53d |  |  |
| 91 | **Deployment / Installation** | 2006-02-01 → 2006-01-16 (-16d) | 2006-02-07 → 2006-01-20 (-18d) |  |  | 125d → 51d |  |  |
| 92 | Design Installation/Deployment Process | 2006-02-01 → 2006-01-16 (-16d) | 2006-02-07 → 2006-01-20 (-18d) |  |  | 125d → 51d |  |  |
| 93 | Prototype Base Installer | 2006-02-01 → 2006-01-16 (-16d) | 2006-02-07 → 2006-01-20 (-18d) |  |  | 125d → 51d |  |  |
| 94 | Prototype Deployment Infrastructure | 2006-02-01 → 2006-01-16 (-16d) | 2006-02-07 → 2006-01-20 (-18d) |  |  | 125d → 51d |  |  |
| 95 | **Thrid Iteration (prior to Beta)** | 2006-05-01 → 2006-04-04 (-27d) | 2006-05-18 → 2006-04-21 (-27d) |  |  | 53d → 40d | none → 42 | was named Thrid Iteration; constraint start no earlier than 2006-05-01 → none |
| 96 | **Infrastructure** | 2006-05-01 → 2006-04-04 (-27d) | 2006-05-01 → 2006-04-04 (-27d) |  |  | 66d → 53d |  |  |
| 97 | asdf | 2006-05-01 → 2006-04-04 (-27d) | 2006-05-01 → 2006-04-04 (-27d) |  |  | 66d → 53d |  |  |
| 98 | **Federated Identity Management Solution** | 2006-05-01 → 2006-04-04 (-27d) | 2006-05-01 → 2006-04-04 (-27d) |  |  | 66d → 53d |  |  |
| 99 | asdf | 2006-05-01 → 2006-04-04 (-27d) | 2006-05-01 → 2006-04-04 (-27d) |  |  | 66d → 53d |  |  |
| 100 | **Federated Authorization Solution** | 2006-05-01 → 2006-04-04 (-27d) | 2006-05-01 → 2006-04-04 (-27d) |  |  | 66d → 53d |  |  |
| 101 | asdf | 2006-05-01 → 2006-04-04 (-27d) | 2006-05-01 → 2006-04-04 (-27d) |  |  | 66d → 53d |  |  |
| 102 | **Introduce Toolkit** | 2006-05-01 → 2006-04-04 (-27d) | 2006-05-09 → 2006-04-12 (-27d) |  |  | 60d → 47d |  |  |
| 103 | Support for Co-Existence of Generated and Existing Classes | 2006-05-01 → 2006-04-04 (-27d) | 2006-05-05 → 2006-04-10 (-25d) |  |  | 62d → 49d |  |  |
| 104 | caDSR Integration for Data Type Selection | 2006-05-01 → 2006-04-04 (-27d) | 2006-05-05 → 2006-04-10 (-25d) |  |  | 62d → 49d |  |  |
| 105 | Integrate Security Configuration | 2006-05-01 → 2006-04-04 (-27d) | 2006-05-09 → 2006-04-12 (-27d) |  |  | 60d → 47d |  |  |
| 106 | User's Guide Documentation | 2006-05-01 → 2006-04-04 (-27d) | 2006-05-09 → 2006-04-12 (-27d) |  |  | 60d → 47d |  |  |
| 107 | **Analytical Services** | 2006-05-01 → 2006-04-04 (-27d) | 2006-05-12 → 2006-04-17 (-25d) |  |  | 57d → 44d |  |  |
| 109 | **Metadata Framework** | 2006-05-01 → 2006-04-04 (-27d) | 2006-05-18 → 2006-04-21 (-27d) |  |  | 53d → 40d |  |  |
| 110 | Develop Simpler, Specialized Graphical Client for GME? | 2006-05-01 → 2006-04-04 (-27d) | 2006-05-08 → 2006-04-11 (-27d) |  |  | 61d → 48d |  |  |
| 111 | Finalize Metadata Standards with VCDE Collaboration | 2006-05-01 → 2006-04-04 (-27d) | 2006-05-04 → 2006-04-07 (-27d) |  |  | 53d → 40d |  |  |
| 112 | Implement Discovery API | 2006-05-05 → 2006-04-10 (-25d) | 2006-05-18 → 2006-04-21 (-27d) |  |  | 53d → 40d |  |  |
| 113 | Document Metadata Infrastructure | 2006-05-01 → 2006-04-04 (-27d) | 2006-05-12 → 2006-04-17 (-25d) |  |  | 57d → 44d |  |  |
| 114 | **Deployment / Installation** | 2006-05-01 → 2006-04-04 (-27d) | 2006-05-01 → 2006-04-04 (-27d) |  |  | 66d → 53d |  |  |
| 115 | Document Installation and Deployment Process | 2006-05-01 → 2006-04-04 (-27d) | 2006-05-01 → 2006-04-04 (-27d) |  |  | 66d → 53d |  |  |
| 141 | Investigation of HPC Requirements | 2006-02-01 → 2006-04-25 (+83d) | 2006-02-07 → 2006-05-01 (+83d) |  |  | 125d → 124d |  |  |
| 142 | Example GRAM Service | 2006-02-01 → 2006-04-25 (+83d) | 2006-02-07 → 2006-05-01 (+83d) |  |  | 125d → 124d |  |  |
| 143 | Design for Non-Java Services | 2006-02-01 → 2006-04-25 (+83d) | 2006-02-07 → 2006-05-01 (+83d) |  |  | 125d → 124d |  |  |
| 144 | Document Analytical Service Specification | 2006-05-01 → 2006-04-25 (-6d) | 2006-05-12 → 2006-05-03 (-9d) | 10d? → 7d? |  | 57d → 122d |  | baseline start 2006-05-01 → 2006-08-01; baseline finish 2006-05-12 → 2006-08-01 |
| 149 | **Future Work (out of scope for Release)** | 2006-08-01 → 2006-05-03 (-90d) | 2006-08-01 → 2006-05-04 (-89d) |  |  | 0d → 122d | none → 131 | was named Future Work; constraint start no earlier than 2006-08-01 → none |
| 150 | **Infrastructure** | 2006-08-01 → 2006-05-03 (-90d) | 2006-08-01 → 2006-05-03 (-90d) |  |  | 1d → 123d |  |  |
| 151 | asdf | 2006-08-01 → 2006-05-03 (-90d) | 2006-08-01 → 2006-05-03 (-90d) |  |  | 1d → 123d |  |  |
| 152 | **Federated Identity Management Solution** | 2006-08-01 → 2006-05-03 (-90d) | 2006-08-01 → 2006-05-03 (-90d) |  |  | 1d → 123d |  |  |
| 153 | asdf | 2006-08-01 → 2006-05-03 (-90d) | 2006-08-01 → 2006-05-03 (-90d) |  |  | 1d → 123d |  |  |
| 154 | **Federated Authorization Solution** | 2006-08-01 → 2006-05-04 (-89d) | 2006-08-01 → 2006-05-04 (-89d) |  |  | 0d → 122d |  |  |

| ID | Task | Start | Finish | Total float |
| --- | --- | --- | --- | --- |
| 155 | asdf | 2006-08-01 → 2006-05-04 (-89d) | 2006-08-01 → 2006-05-04 (-89d) | 0d → 122d |
| 156 | **Introduce Toolkit** | 2006-08-01 → 2006-05-03 (-90d) | 2006-08-01 → 2006-05-03 (-90d) | 1d → 123d |
| 157 | Explicit Support for Stateful Services | 2006-08-01 → 2006-05-03 (-90d) | 2006-08-01 → 2006-05-03 (-90d) | 1d → 123d |
| 158 | **Analytical Services** | 2006-08-01 → 2006-05-04 (-89d) | 2006-08-01 → 2006-05-04 (-89d) | 0d → 122d |
| 159 | asdf | 2006-08-01 → 2006-05-04 (-89d) | 2006-08-01 → 2006-05-04 (-89d) | 0d → 122d |
| 160 | **Metadata Framework** | 2006-08-01 → 2006-05-03 (-90d) | 2006-08-01 → 2006-05-03 (-90d) | 1d → 123d |
| 161 | asdf | 2006-08-01 → 2006-05-03 (-90d) | 2006-08-01 → 2006-05-03 (-90d) | 1d → 123d |
| 162 | **Deployment / Installation** | 2006-08-01 → 2006-05-03 (-90d) | 2006-08-01 → 2006-05-03 (-90d) | 1d → 123d |
| 163 | asdf | 2006-08-01 → 2006-05-03 (-90d) | 2006-08-01 → 2006-05-03 (-90d) | 1d → 123d |

## Version 4 (data date 2006-01-03, saved 2006-02-14)

Note of the change: updated security info

Last finish stays 2006-10-23.

Added:

| ID | Task | Duration | Start | Finish |
| --- | --- | --- | --- | --- |
| 57 | Standardize SAML identity assertions through working group | 5d? | 2006-01-16 | 2006-01-20 |
| 77 | Service side configuration | 1d | 2006-01-16 | 2006-01-16 |
| 78 | Client side configuration | 1d | 2006-01-16 | 2006-01-16 |
| 79 | Client code generation | 2d | 2006-01-16 | 2006-01-17 |
| 80 | Security descriptor code generation | 2d | 2006-01-16 | 2006-01-17 |
| 81 | Service code generation | 1d | 2006-01-16 | 2006-01-16 |
| 82 | Custom Authorization scheme generation | 2d | 2006-01-16 | 2006-01-17 |
| 83 | GUI to manage service-level configuration | 2d | 2006-01-16 | 2006-01-17 |
| 84 | GUI to manage method-level configuration | 2d | 2006-01-16 A | 2006-01-17 |

Removed: 66 Design Solution; 70 Design Solution

Changed:

| ID | Task | Start | Finish | Duration | Complete | Total float | Other |
| --- | --- | --- | --- | --- | --- | --- | --- |
| 49 | **Federated Identity Management Solution** |  |  |  | 19% → 15% |  |  |
| 64 | **Solution for Service Credentials** |  | 2006-01-20 → 2006-01-17 (-3d) | 5d → 2d |  | 51d → 54d |  |
| 70 | **Introduce Toolkit** |  |  |  | 59% → 46% |  |  |
| 76 | **Security** | 2006-01-16 A | 2006-01-18 → 2006-01-17 (-1d) | 3d? → 2d | 0% → 14% | 53d → 54d | was named Simple Security Configuration |
| 85 | Simple Deployment Support with Parameter Substitution |  |  | 2d? → 2d |  |  |  |

## Version 5 (saved 2006-05-10)

Note of the change: *** empty log message ***

Last finish stays 2006-10-23. Complete tasks 31 → 0.

Added:

| ID | Task | Duration | Start | Finish | Predecessors | Constraint |
| --- | --- | --- | --- | --- | --- | --- |
| 1 | **caGrid 1.0 Development** | 136d? | 2006-04-17 | 2006-10-23 |  |  |
| 4 | **Data Services** | 15d | 2006-04-17 | 2006-05-05 |  |  |
| 5 | Finalize CQL Schema | 5d | 2006-05-01 | 2006-05-05 |  | start no earlier than 2006-05-01 |
| 6 | Initial Design Document | 5d | 2006-04-17 | 2006-04-21 |  |  |
| 7 | **Introduce** | 15d | 2006-05-01 | 2006-05-19 |  |  |
| 9 | **Metadata** | 9d? | 2006-04-17 | 2006-04-27 |  |  |
| 10 | **Initial Analytical Metadata Model** | 4d? | 2006-04-17 | 2006-04-20 |  |  |
| 12 | Generate XSD | 1d? | 2006-04-19 | 2006-04-19 | 11 |  |
| 14 | **Initial Common Metadata Model** | 4d? | 2006-04-17 | 2006-04-20 |  |  |
| 15 | UML Model | 2d | 2006-04-17 | 2006-04-18 |  |  |
| 18 | **Initial Data Service Metadata Model** | 4d? | 2006-04-17 | 2006-04-20 |  |  |
| 19 | UML Model | 2d | 2006-04-17 | 2006-04-18 |  |  |
| 26 | Deploy on caGrid Cluster | 1d | 2006-04-17 | 2006-04-17 |  |  |
| 35 | Install all core services insecurely on cluster | 2d | 2006-04-17 | 2006-04-18 |  |  |
| 47 | **Discovery Client** | 5d | 2006-05-24 | 2006-05-30 | 43 |  |
| 48 | Update for Finalized Metadata Models | 5d | 2006-05-24 | 2006-05-30 |  |  |
| 51 | **caDSR Service** | 5d | 2006-05-24 | 2006-05-30 | 43 |  |
| 52 | Implement Service-side Metadata generation | 5d | 2006-05-24 | 2006-05-30 |  |  |
| 53 | **Discovery Portal** | 5d | 2006-05-31 | 2006-06-06 |  |  |
| 59 | Install "staging" services on cluster | 1d | 2006-05-22 | 2006-05-22 |  |  |
| 60 | **Software Development Prior to API Freeze** | 30d? | 2006-06-12 | 2006-07-21 | 2 |  |
| 61 | **Iteration I** | 15d? | 2006-06-12 | 2006-06-30 |  |  |
| 64 | **Introduce** | 15d | 2006-06-12 | 2006-06-30 |  |  |
| 72 | **Iteration II** | 15d? | 2006-07-03 | 2006-07-21 | 61 |  |
| 73 | **Data Services** | 5d | 2006-07-03 | 2006-07-07 |  |  |
| 75 | **Introduce** | 15d | 2006-07-03 | 2006-07-21 |  |  |
| 77 | **Metadata** | 1d? | 2006-07-03 | 2006-07-03 |  |  |
| 79 | **Security** | 1d? | 2006-07-03 | 2006-07-03 |  |  |
| 83 | **Software Development Prior to 1.0 Release** | 30d? | 2006-07-24 | 2006-09-01 | 60 |  |
| 85 | **Data Services** | 5d | 2006-07-24 | 2006-07-28 |  |  |
| 91 | **Security** | 1d? | 2006-07-24 | 2006-07-24 |  |  |
| 96 | **Data Services** | 5d | 2006-08-14 | 2006-08-18 |  |  |
| 98 | **Introduce** | 15d | 2006-08-14 | 2006-09-01 |  |  |
| 103 | asdf | 1d? | 2006-08-14 | 2006-08-14 |  |  |
| 107 | caGrid 1.0 Beta Freeze | 0d | 2006-06-30 | 2006-06-30 |  | must finish on 2006-06-30 |
| 108 | caGrid 1.0 Beta | 0d | 2006-07-13 | 2006-07-13 | 107 | must finish on 2006-07-13 |

Removed: 1 caGrid 1.0; 2 Inception; 3 caGrid 0.5 Evaluation/Post Mortem; 4 Publish caGrid 0.5 Paper; 6 Baseline Infrastructure Development; 7 Project Layout/ Build process; 10 Migration of Known Components; 11 Baseline Technology Migration; 12 Metadata Beans; 13 Base Introduce; 14 Index Service / MDS Components; 15 GME; 16 Initial Iteration; 17 Master Project Plan Review; 18 Initial Federated Identity Management Solution; 19 Evaluate Recommendations from Security Whitepaper; 20 Investigate Options for Certificate Creation; 21 Design Separation of Identity Assertion from Credential Creation in GUMS; 22 Prototype SimpleCA replacement; 23 Prototype Credential Creation Component; 24 Prototype Simple Identity Provider Component; 26 Prototype Graphical Identity Management Client; 27 Unit Testing; 28 Initial Introduce Toolkit; 29 Gap analysis; 30 Generalization to Support Other Service Types; 31 Add Support for Faults/Exceptions; 32 Investigation of Tmplate Engines for Code Generation; 33 Migrate Code Generation to Template Engine; 34 Add Backup / Restore support; 35 Basic Service Creation System Testing; 36 Initial Metadata Framework; 37 Installation and Deployment of Testbed Index Service; 38 Design Integration of Service Metadata using Resource Framework; 39 Develop Baseline Service Integration for Common Metadata; 40 Deployment / Installation; 41 Simple Command Line Deployment; 42 Second Iteration (prior to Annual Meeting); 44 Manage Intra-Project Artifact Dependencies; 45 Define Dependencies; 46 Develop Custom Ant Task to Copy Dependant Artifacts; 47 Integrate into Main Build Process; 48 Initial Release Process; 49 Federated Identity Management Solution; 54 Integration with Existing Institutional IdP; 55 OSU; 56 Other? (maybe Georgetown); 57 Standardize SAML identity assertions through working group; 59 Federated Authorization Solution; 62 Investigate Globus Authz Framework; 70 Introduce Toolkit; 71 Extract Generated Classnames directly from Axis; 72 Generalize to Support Multiple Service Types; 73 Add service template concept; 74 Create Analytical Serivce Template; 75 Create Data Serivce Template; 77 Service side configuration; 78 Client side configuration; 79 Client code generation; 80 Security descriptor code generation; 81 Service code generation; 82 Custom Authorization scheme generation; 83 GUI to manage service-level configuration; 84 GUI to manage method-level configuration; 85 Simple Deployment Support with Parameter Substitution; 86 Generalize Metadata Integration; 87 Discover Types from GME; 91 Secure Client API; 92 Metadata Framework; 93 Basic Discovery API; 94 Investigation of LexBIG Integration Requirements; 95 Baseline caDSR Grid Service; 96 Type Agnostic Resource Framework for Service Metadata; 98 Deployment / Installation; 102 Thrid Iteration (prior to Beta); 105 Federated Identity Management Solution; 109 Introduce Toolkit; 110 Support for Co-Existence of Generated and Existing Classes; 111 caDSR Integration for Data Type Selection; 113 User's Guide Documentation; 116 Metadata Framework; 117 Develop Simpler, Specialized Graphical Client for GME?; 118 Finalize Metadata Standards with VCDE Collaboration; 121 Deployment / Installation; 126 Federated Identity Management Solution; 128 Federated Authorization Solution; 131 Explicit Support for Stateful Services; 134 Metadata Framework; 136 Deployment / Installation; 138 Fifth Iteration (prior to Release); 141 Federated Identity Management Solution; 143 Federated Authorization Solution; 145 Introduce Toolkit; 146 Explicit Support for Stateful Services; 147 Analytical Services; 148 Investigation of HPC Requirements; 149 Example GRAM Service; 150 Design for Non-Java Services; 151 Document Analytical Service Specification; 152 Metadata Framework; 154 Deployment / Installation; 161 Federated Authorization Solution; 164 Explicit Support for Stateful Services

Changed:

| ID | Task | Start | Finish | Duration | Complete | Total float | Predecessors | Other |
| --- | --- | --- | --- | --- | --- | --- | --- | --- |
| 2 | **Software Development Prior to Beta Release** | 2005-12-01 A → 2006-04-17 (+137d) | 2005-12-01 A → 2006-06-09 (+190d) | 1d → 40d? | 100% → 0% | none → 36d |  | was named Use Case Solicitation; baseline start 2005-12-01 → none; baseline finish 2005-12-01 → none |
| 3 | **Iteration I** | 2005-12-06 A → 2006-04-17 (+132d) | 2005-12-08 A → 2006-05-19 (+162d) | 3d → 25d? | 100% → 0% | none → 36d | Project Layout/ Build process → none | was named Testing Plan/Process; baseline start 2005-12-06 → none; baseline finish 2005-12-08 → none |
| 8 | asdf | 2006-04-04 → 2006-05-01 (+27d) | 2006-04-04 → 2006-05-19 (+45d) | 1d? → 15d |  | 53d → 36d |  | constraint none → start no earlier than 2006-05-01; baseline start 2006-05-01 → none; baseline finish 2006-05-01 → none |
| 11 | UML Model | 2006-01-16 → 2006-04-17 (+91d) | 2006-01-18 → 2006-04-18 (+90d) | 3d? → 2d |  | 53d → 59d |  | was named Investigation of Polling versus Notification for Metadata; baseline start 2006-02-01 → none; baseline finish 2006-02-03 → none |
| 13 | caDSR Review | 2006-01-16 → 2006-04-20 (+94d) | 2006-01-16 → 2006-04-20 (+94d) |  |  | 55d → 57d | none → 12 | was named User Event Notification; baseline start 2006-02-01 → none; baseline finish 2006-02-01 → none |
| 16 | Generate XSD | 2006-01-02 A → 2006-04-19 (+107d) | 2006-01-06 A → 2006-04-19 (+103d) | 5d? → 1d? | 100% → 0% | none → 57d | Prototype Simple Identity Provider Component → 15 | was named Prototype Identity Federation Service; baseline start 2006-01-02 → none; baseline finish 2006-01-06 → none |
| 17 | caDSR Review | 2006-04-03 → 2006-04-20 (+17d) | 2006-04-03 → 2006-04-20 (+17d) |  |  | 0d → 57d | OSU → 16 | was named Initial Community Adoption and Testing; constraint start no earlier than 2006-04-03 → none; baseline start 2006-04-03 → none; baseline finish 2006-04-03 → none |
| 20 | Generate XSD | 2006-01-16 → 2006-04-19 (+93d) | 2006-01-18 → 2006-04-19 (+91d) | 3d? → 1d? |  | 51d → 57d | none → 19 | was named Service Usage Logging Support; baseline start 2006-02-01 → none; baseline finish 2006-02-03 → none |
| 21 | caDSR Review | 2006-01-19 → 2006-04-20 (+91d) | 2006-01-20 → 2006-04-20 (+90d) | 2d? → 1d? |  | 51d → 57d |  | was named GUI Support for usage information; baseline start 2006-02-06 → none; baseline finish 2006-02-07 → none |
| 22 | **Discovery Client** | 2006-02-01 A → 2006-04-21 (+79d) | 2006-02-07 → 2006-04-27 (+79d) | 5d? → 5d | 20% → 0% | 0d → 52d | none → 10, 14, 18 | was named Initial Installation and Users Guide; baseline start 2006-02-01 → none; baseline finish 2006-02-07 → none |
| 23 | Define API | 2006-01-17 → 2006-04-21 (+94d) | 2006-01-26 → 2006-04-24 (+88d) | 8d? → 2d |  | 37d → 55d | 24 → none | was named Investigate Attribute-based Authorization Solutions; baseline start 2006-02-02 → none; baseline finish 2006-02-13 → none |
| 24 | Initial Implementation | 2006-01-16 → 2006-04-21 (+95d) | 2006-01-16 → 2006-04-27 (+101d) | 1d? → 5d |  | 37d → 52d |  | was named Review and Analyze Community use cases; baseline start 2006-02-01 → none; baseline finish 2006-02-01 → none |
| 25 | **Index Service** | 2006-02-03 → 2006-04-17 (+73d) | 2006-02-09 → 2006-04-17 (+67d) | 5d? → 1d |  | 37d → 60d | Investigate Globus Authz Framework → none | was named Design Authorization Solution; baseline start 2006-02-21 → none; baseline finish 2006-02-27 → none |
| 27 | **caDSR to GME Mapping** | 2006-02-01 → 2006-04-17 (+75d) | 2006-02-01 → 2006-04-18 (+76d) | 0d → 2d? |  | 0d → 59d |  | was named Arch/VCDE Face to Face Meeting; constraint must finish on 2006-02-01 → none |
| 28 | Meet with working group to identify issues and requirements | 2006-02-01 → 2006-04-17 (+75d) | 2006-10-23 → 2006-04-17 (-189d) | 188d → 1d? |  | 0d → 60d |  | was named High-Level Milestones |
| 29 | Initial design of solution | 2006-04-03 → 2006-04-17 (+14d) | 2006-04-03 → 2006-04-18 (+15d) | 0d → 2d |  | 0d → 59d | Second Iteration (prior to Annual Meeting) → none | was named Annual Meeting (Infrastructure Freeze); constraint must finish on 2006-04-03 → none |
| 30 | **caDSR Service** | 2006-06-16 → 2006-04-21 (-56d) | 2006-06-16 → 2006-04-21 (-56d) | 0d → 1d? |  | 0d → 56d | Thrid Iteration (prior to Beta) → none | was named caGrid 1.0 Beta (Public API Freeze); constraint must finish on 2006-06-16 → none |
| 31 | Migrate published metadata to new models |  | 2006-04-24 → 2006-04-21 (-3d) |  |  | 84d → 56d | Thrid Iteration (prior to Beta) → 10, 14 | was named Fourth Iteration (prior to Feature Freeze) |
| 32 | **Security** | 2006-01-16 A → 2006-04-17 (+91d) | 2006-01-17 → 2006-04-17 (+90d) | 2d → 1d? | 14% → 0% | 54d → 60d |  |  |
| 33 | asdf | 2006-04-04 → 2006-04-17 (+13d) | 2006-04-04 → 2006-04-17 (+13d) |  |  | 53d → 60d |  | baseline start 2006-05-01 → none; baseline finish 2006-05-01 → none |
| 34 | **Infrastructure** | 2006-01-16 A → 2006-04-17 (+91d) | 2006-02-03 → 2006-04-18 (+74d) | 15d? → 2d | 50% → 0% | 41d → 59d |  | resources Scott Oster → none; baseline start 2006-02-01 → none; baseline finish 2006-02-07 → none |
| 36 | Install Security services securely on cluster | 2006-04-10 → 2006-04-17 (+7d) | 2006-04-10 → 2006-04-18 (+8d) | 0d → 2d |  | 0d → 59d |  | was named Annual Meeting/Demo; constraint must finish on 2006-04-10 → none |
| 37 | **Iteration II** | 2005-12-01 A → 2006-05-22 (+172d) | 2005-12-07 A → 2006-06-09 (+184d) | 5d? → 15d? | 100% → 0% | none → 36d | none → 3 | was named Technology Stack Evaluation; baseline start 2005-12-01 → none; baseline finish 2005-12-07 → none |
| 38 | **Data Services** | 2006-04-04 → 2006-05-22 (+48d) | 2006-04-12 → 2006-05-26 (+44d) | 7d? → 5d |  | 47d → 46d |  | was named Integrate Security Configuration; baseline start 2006-05-01 → none; baseline finish 2006-05-09 → none |
| 39 | asdf | 2006-04-21 → 2006-05-22 (+31d) | 2006-04-21 → 2006-05-26 (+35d) | 0d → 5d |  | 85d → 46d |  | constraint none → start no earlier than 2006-05-01; baseline start 2006-08-01 → none; baseline finish 2006-08-01 → none |
| 40 | **Introduce** | 2006-02-01 A → 2006-05-22 (+110d) | 2006-02-07 → 2006-06-09 (+122d) | 5d → 15d | 60% → 0% | 39d → 36d |  | was named Code Generation to Support Arbitrary Types; baseline start 2006-02-01 → none; baseline finish 2006-02-07 → none |
| 41 | asdf | 2006-04-21 → 2006-05-22 (+31d) | 2006-04-21 → 2006-06-09 (+49d) | 0d → 15d |  | 85d → 36d |  | constraint none → start no earlier than 2006-05-01; baseline start 2006-08-01 → none; baseline finish 2006-08-01 → none |
| 42 | **Metadata** | 2006-02-01 A → 2006-05-22 (+110d) | 2006-02-02 A → 2006-06-06 (+124d) | 2d → 12d? | 100% → 0% | none → 39d |  | was named Selection of which Types to Register; baseline start 2006-02-01 → none; baseline finish 2006-02-02 → none |
| 43 | **Finalize Metadata Models** | 2006-01-16 → 2006-05-22 (+126d) | 2006-01-20 → 2006-05-23 (+123d) | 5d → 2d? |  | 51d → 39d |  | was named Investigate options; baseline start 2006-02-01 → none; baseline finish 2006-02-07 → none |
| 44 | Incorporate Feedback | 2006-01-16 → 2006-05-22 (+126d) | 2006-01-17 → 2006-05-22 (+125d) | 2d → 1d? |  | 54d → 40d |  | was named Investigate options; baseline start 2006-02-01 → none; baseline finish 2006-02-02 → none |
| 45 | Update UML Models | 2006-01-16 → 2006-05-22 (+126d) | 2006-01-17 → 2006-05-23 (+126d) |  |  | 54d → 39d |  | was named Analyze Use Cases; baseline start 2006-02-01 → none; baseline finish 2006-02-02 → none |
| 46 | Regenerate and Publish XSDs | 2006-01-16 → 2006-05-22 (+126d) | 2006-01-17 → 2006-05-23 (+126d) |  |  | 54d → 39d |  | was named Analyze Use Cases; baseline start 2006-02-01 → none; baseline finish 2006-02-02 → none |
| 49 | **Index Service** | 2006-01-16 → 2006-05-22 (+126d) | 2006-01-17 → 2006-05-26 (+129d) | 2d → 5d? |  | 54d → 46d |  | was named Solution for Service Credentials; baseline start 2006-02-01 → none; baseline finish 2006-02-07 → none |
| 50 | Modify to support communication with secure services | 2006-01-16 → 2006-05-22 (+126d) | 2006-01-20 → 2006-05-26 (+126d) | 5d → 5d? |  | 51d → 46d |  | was named Solution for Managing Trust; baseline start 2006-02-01 → none; baseline finish 2006-02-07 → none |
| 54 | Initial implementation of discovery portal | 2006-04-21 → 2006-05-31 (+40d) | 2006-04-21 → 2006-06-06 (+46d) | 0d? → 5d |  | 85d → 39d | none → 47 | was named Introduce Toolkit; baseline start 2006-08-01 → none; baseline finish 2006-08-01 → none |
| 55 | **Security** | 2006-05-03 → 2006-05-22 (+19d) | 2006-05-04 → 2006-05-22 (+18d) |  |  | 122d → 50d | Fifth Iteration (prior to Release) → none | was named Future Work (out of scope for Release); baseline start 2006-08-01 → none; baseline finish 2006-08-01 → none |
| 56 | asdf | 2006-04-24 → 2006-05-22 (+28d) | 2006-04-24 → 2006-05-22 (+28d) |  |  | 84d → 50d |  | baseline start 2006-08-01 → none; baseline finish 2006-08-01 → none |
| 57 | **Infrastructure** | 2006-04-04 → 2006-05-22 (+48d) | 2006-04-04 → 2006-05-23 (+49d) | 1d? → 2d |  | 53d → 49d |  | baseline start 2006-05-01 → none; baseline finish 2006-05-01 → none |
| 58 | Develop functional test plan | 2006-05-03 → 2006-05-22 (+19d) | 2006-05-03 → 2006-05-23 (+20d) | 0d → 2d |  | 123d → 49d |  | was named Federated Identity Management Solution; baseline start 2006-08-01 → none; baseline finish 2006-08-01 → none |
| 62 | **Data Services** | 2006-05-03 → 2006-06-12 (+40d) | 2006-05-03 → 2006-06-16 (+44d) | 0d? → 5d |  | 123d → 46d |  | was named Introduce Toolkit; baseline start 2006-08-01 → none; baseline finish 2006-08-01 → none |
| 63 | asdf | 2006-04-24 → 2006-06-12 (+49d) | 2006-04-24 → 2006-06-16 (+53d) | 1d? → 5d |  | 84d → 46d |  | constraint none → start no earlier than 2006-05-01; baseline start 2006-08-01 → none; baseline finish 2006-08-01 → none |
| 65 | asdf | 2006-04-21 → 2006-06-12 (+52d) | 2006-04-21 → 2006-06-30 (+70d) | 0d → 15d |  | 85d → 36d |  | constraint none → start no earlier than 2006-05-01; baseline start 2006-08-01 → none; baseline finish 2006-08-01 → none |
| 66 | **Metadata** | 2006-05-03 → 2006-06-12 (+40d) | 2006-05-03 → 2006-06-12 (+40d) | 0d → 1d? |  | 123d → 50d |  | was named Metadata Framework; baseline start 2006-08-01 → none; baseline finish 2006-08-01 → none |
| 67 | asdf | 2006-05-03 → 2006-06-12 (+40d) | 2006-05-03 → 2006-06-12 (+40d) | 0d → 1d? |  | 123d → 50d |  | baseline start 2006-08-01 → none; baseline finish 2006-08-01 → none |
| 68 | **Security** | 2006-05-03 → 2006-06-12 (+40d) | 2006-05-03 → 2006-06-12 (+40d) | 0d → 1d? |  | 123d → 50d |  | was named Deployment / Installation; baseline start 2006-08-01 → none; baseline finish 2006-08-01 → none |
| 69 | asdf | 2006-05-03 → 2006-06-12 (+40d) | 2006-05-03 → 2006-06-12 (+40d) | 0d → 1d? |  | 123d → 50d |  | baseline start 2006-08-01 → none; baseline finish 2006-08-01 → none |
| 70 | **Infrastructure** | 2006-04-21 → 2006-06-12 (+52d) | 2006-04-21 → 2006-06-12 (+52d) | 0d → 1d? |  | 85d → 50d |  | baseline start 2006-08-01 → none; baseline finish 2006-08-01 → none |
| 71 | asdf | 2006-04-21 → 2006-06-12 (+52d) | 2006-04-21 → 2006-06-12 (+52d) | 0d → 1d? |  | 85d → 50d |  | baseline start 2006-08-01 → none; baseline finish 2006-08-01 → none |
| 74 | asdf | 2006-04-24 → 2006-07-03 (+70d) | 2006-04-24 → 2006-07-07 (+74d) | 0d → 5d |  | 129d → 46d |  | constraint none → start no earlier than 2006-05-01; baseline start 2006-08-01 → none; baseline finish 2006-08-01 → none |
| 76 | asdf | 2006-04-24 → 2006-07-03 (+70d) | 2006-04-24 → 2006-07-21 (+88d) | 0d → 15d |  | 129d → 36d |  | constraint none → start no earlier than 2006-05-01; baseline start 2006-08-01 → none; baseline finish 2006-08-01 → none |
| 78 | asdf | 2006-04-25 → 2006-07-03 (+69d) | 2006-04-25 → 2006-07-03 (+69d) |  |  | 128d → 50d |  | baseline start 2006-08-01 → none; baseline finish 2006-08-01 → none |
| 80 | asdf | 2006-04-24 → 2006-07-03 (+70d) | 2006-04-24 → 2006-07-03 (+70d) | 0d → 1d? |  | 129d → 50d |  | baseline start 2006-08-01 → none; baseline finish 2006-08-01 → none |
| 81 | **Infrastructure** | 2006-04-24 → 2006-07-03 (+70d) | 2006-04-24 → 2006-07-03 (+70d) | 0d → 1d? |  | 129d → 50d |  | baseline start 2006-08-01 → none; baseline finish 2006-08-01 → none |
| 82 | asdf | 2006-04-24 → 2006-07-03 (+70d) | 2006-04-24 → 2006-07-03 (+70d) | 0d → 1d? |  | 129d → 50d |  | baseline start 2006-08-01 → none; baseline finish 2006-08-01 → none |
| 84 | **Iteration I** | 2006-01-16 → 2006-07-24 (+189d) | 2006-01-19 → 2006-08-11 (+204d) | 4d → 15d? |  | 52d → 36d |  | was named Analytical Services; resources Shannon Hastings → none; baseline start 2006-02-01 → none; baseline finish 2006-02-07 → none |
| 86 | asdf | 2006-04-04 → 2006-07-24 (+111d) | 2006-04-17 → 2006-07-28 (+102d) | 10d? → 5d |  | 44d → 46d |  | constraint none → start no earlier than 2006-05-01; baseline start 2006-05-01 → none; baseline finish 2006-05-12 → none |
| 87 | **Introduce** | 2006-04-04 → 2006-07-24 (+111d) | 2006-04-17 → 2006-08-11 (+116d) | 10d? → 15d |  | 44d → 36d |  | was named Analytical Services; baseline start 2006-05-01 → none; baseline finish 2006-05-12 → none |
| 88 | asdf | 2006-05-04 → 2006-07-24 (+81d) | 2006-05-04 → 2006-08-11 (+99d) | 1d? → 15d |  | 122d → 36d |  | constraint none → start no earlier than 2006-05-01; baseline start 2006-08-01 → none; baseline finish 2006-08-01 → none |
| 89 | **Metadata** | 2006-05-04 → 2006-07-24 (+81d) | 2006-05-04 → 2006-07-24 (+81d) |  |  | 122d → 50d |  | was named Analytical Services; baseline start 2006-08-01 → none; baseline finish 2006-08-01 → none |
| 90 | asdf | 2006-05-03 → 2006-07-24 (+82d) | 2006-05-03 → 2006-07-24 (+82d) | 0d → 1d? |  | 123d → 50d |  | baseline start 2006-08-01 → none; baseline finish 2006-08-01 → none |
| 92 | asdf | 2006-05-03 → 2006-07-24 (+82d) | 2006-05-03 → 2006-07-24 (+82d) | 0d → 1d? |  | 123d → 50d |  | baseline start 2006-08-01 → none; baseline finish 2006-08-01 → none |
| 93 | **Infrastructure** | 2006-05-03 → 2006-07-24 (+82d) | 2006-05-03 → 2006-07-24 (+82d) | 0d → 1d? |  | 123d → 50d |  | baseline start 2006-08-01 → none; baseline finish 2006-08-01 → none |
| 94 | asdf | 2006-04-04 → 2006-07-24 (+111d) | 2006-04-04 → 2006-07-24 (+111d) |  |  | 53d → 50d |  | baseline start 2006-05-01 → none; baseline finish 2006-05-01 → none |
| 95 | **Iteration II** | 2006-04-04 → 2006-08-14 (+132d) | 2006-04-04 → 2006-09-01 (+150d) | 1d? → 15d? |  | 53d → 36d | none → 84 | was named Federated Authorization Solution; baseline start 2006-05-01 → none; baseline finish 2006-05-01 → none |
| 97 | asdf | 2006-05-04 → 2006-08-14 (+102d) | 2006-05-04 → 2006-08-18 (+106d) | 1d? → 5d |  | 122d → 46d |  | constraint none → start no earlier than 2006-05-01; baseline start 2006-08-01 → none; baseline finish 2006-08-01 → none |
| 99 | asdf | 2006-01-16 → 2006-08-14 (+210d) | 2006-01-20 → 2006-09-01 (+224d) | 5d? → 15d |  | 51d → 36d |  | was named Prototype Deployment Infrastructure; constraint none → start no earlier than 2006-05-01; baseline start 2006-02-01 → none; baseline finish 2006-02-07 → none |
| 100 | **Metadata** | 2006-01-16 → 2006-08-14 (+210d) | 2006-01-20 → 2006-08-14 (+206d) | 5d? → 1d? |  | 51d → 50d |  | was named Prototype Base Installer; baseline start 2006-02-01 → none; baseline finish 2006-02-07 → none |
| 101 | asdf | 2006-01-16 → 2006-08-14 (+210d) | 2006-01-20 → 2006-08-14 (+206d) | 5d? → 1d? |  | 51d → 50d |  | was named Design Installation/Deployment Process; baseline start 2006-02-01 → none; baseline finish 2006-02-07 → none |
| 102 | **Security** | 2006-04-04 → 2006-08-14 (+132d) | 2006-04-04 → 2006-08-14 (+132d) |  |  | 53d → 50d |  | was named Document Installation and Deployment Process; baseline start 2006-05-01 → none; baseline finish 2006-05-01 → none |
| 104 | **Infrastructure** | 2006-04-10 → 2006-08-14 (+126d) | 2006-04-21 → 2006-08-14 (+115d) | 10d → 1d? |  | 40d → 50d | Finalize Metadata Standards with VCDE Collaboration → none | was named Implement Discovery API; baseline start 2006-05-05 → none; baseline finish 2006-05-18 → none |

| ID | Task | Start | Finish | Duration | Total float | Predecessors | Other |
| --- | --- | --- | --- | --- | --- | --- | --- |
| 105 | asdf | 2006-04-04 → 2006-08-14 (+132d) | 2006-04-17 → 2006-08-14 (+119d) | 10d? → 1d? | 44d → 50d |  | was named Document Metadata Infrastructure; baseline start 2006-05-01 → none; baseline finish 2006-05-12 → none |
| 106 | caGrid Developer's Face to Face (Columbus, OH) | 2006-04-24 → 2006-05-22 (+28d) | 2006-04-24 → 2006-05-23 (+29d) | 1d? → 2d | 84d → 109d |  | was named Analytical Services; constraint none → finish no earlier than 2006-05-23; baseline start 2006-08-01 → none; baseline finish 2006-08-01 → none |
| 109 | caGrid 1.0 Feature Freeze |  |  |  |  | 31 → 108 |  |
| 110 | caGrid 1.0 Release |  |  |  |  | Fifth Iteration (prior to Release) → 109 |  |

## Version 6 (saved 2006-05-11)

Note of the change: introduce

Last finish stays 2006-10-23.

Added:

| ID | Task | Duration | Start | Finish | Predecessors |
| --- | --- | --- | --- | --- | --- |
| 8 | **Engine:** | 22d | 2006-04-17 | 2006-05-16 |  |
| 9 | **Creation:** | 3d | 2006-04-17 | 2006-04-19 |  |
| 10 | Enable support for applying plugins or service extensions/templates | 3d | 2006-04-17 | 2006-04-19 |  |
| 11 | **Modification:** | 22d | 2006-04-17 | 2006-05-16 |  |
| 12 | Move to complete code templating process using JET for all code generation/modification | 10d | 2006-04-17 | 2006-04-28 |  |
| 13 | Increase ease of handling reformatted code | 2d | 2006-05-01 | 2006-05-02 | 12 |
| 14 | Support for ignoring locally modified source code | 1d | 2006-05-01 | 2006-05-01 | 12 |
| 15 | Support for modifying method signature with out modifying method bodies | 1d | 2006-05-01 | 2006-05-01 | 12 |
| 16 | Create service test framework | 2d | 2006-04-17 | 2006-04-18 |  |
| 17 | Complete support for WSRF / multi- resources/services | 15d | 2006-04-17 | 2006-05-05 |  |
| 18 | Source code must now support N services | 5d | 2006-05-08 | 2006-05-12 | 17 |
| 19 | Will require N wsdl documents | 3d | 2006-05-08 | 2006-05-10 | 17 |
| 20 | Build process will support flattening stubbing and binding of N services | 2d | 2006-05-08 | 2006-05-09 | 17 |
| 21 | Enable service/porttype inheritance | 7d | 2006-05-08 | 2006-05-16 | 17 |
| 22 | **Deployment:** | 1d | 2006-04-17 | 2006-04-17 |  |
| 23 | Enable support for service configuration variables | 1d | 2006-04-17 | 2006-04-17 |  |
| 24 | Enable support for tomcat and globus container deployment | 1d | 2006-04-17 | 2006-04-17 |  |
| 25 | **Plugin/Extension:** | 12d | 2006-04-17 | 2006-05-02 |  |
| 26 | Creation of plugin framework | 5d | 2006-04-17 | 2006-04-21 |  |
| 27 | Enable use of plugin framework | 2d | 2006-04-24 | 2006-04-25 | 26 |
| 28 | Creation of GME discovery plugin | 2d | 2006-04-26 | 2006-04-27 | 27 |
| 29 | Creation of File discovery plugin | 1d | 2006-04-26 | 2006-04-26 | 27 |
| 30 | Creation of caDSR discovery plugin | 5d | 2006-04-26 | 2006-05-02 | 27 |
| 31 | Creation of Example service extension plugin | 1d | 2006-04-26 | 2006-04-26 | 27 |
| 64 | **Graphical Workbench:** | 10d | 2006-05-17 | 2006-05-30 | 8 |
| 65 | **Creation:** | 2d | 2006-05-17 | 2006-05-18 |  |
| 66 | Plugin /service template selection | 1d | 2006-05-17 | 2006-05-17 |  |
| 67 | Plugin and service template reflection based execution | 2d | 2006-05-17 | 2006-05-18 |  |
| 68 | **Modification:** | 10d | 2006-05-17 | 2006-05-30 |  |
| 69 | Support plugin based types discovery and tools | 5d | 2006-05-17 | 2006-05-23 |  |
| 70 | Support WSRF with multi resource and multi service based grid services | 10d | 2006-05-17 | 2006-05-30 |  |
| 71 | Support service/porttype inheritance | 5d | 2006-05-17 | 2006-05-23 |  |
| 72 | Enable service and method security configuration | 10d | 2006-05-17 | 2006-05-30 |  |
| 73 | **Deployment:** | 5d | 2006-05-17 | 2006-05-23 |  |
| 74 | Support configuration of user defined service variables | 2d | 2006-05-17 | 2006-05-18 |  |
| 75 | Gui generator for populating service discovery metadata | 5d | 2006-05-17 | 2006-05-23 |  |
| 76 | **Plugin/Extension:** | 3d | 2006-05-17 | 2006-05-19 |  |
| 77 | **Enable use of plugin framework** | 3d | 2006-05-17 | 2006-05-19 |  |
| 78 | Discovery Tools | 2d | 2006-05-17 | 2006-05-18 |  |
| 79 | Service Templates | 3d | 2006-05-17 | 2006-05-19 |  |
| 80 | **Testing:** | 10d | 2006-05-31 | 2006-06-13 | 8, 64 |
| 81 | **Complete testing of all features** | 10d | 2006-05-31 | 2006-06-13 |  |
| 82 | **Automated Nightly regression on:** | 10d | 2006-05-31 | 2006-06-13 |  |
| 83 | Service creation | 1d | 2006-05-31 | 2006-05-31 |  |
| 84 | Service modification | 5d | 2006-05-31 | 2006-06-06 |  |
| 85 | Service deployment | 2d | 2006-05-31 | 2006-06-01 |  |
| 86 | Service Invocation | 5d | 2006-06-07 | 2006-06-13 | 83, 84, 85 |
| 87 | Service template extensions | 1d | 2006-05-31 | 2006-05-31 |  |
| 88 | Security configuration | 3d | 2006-05-31 | 2006-06-02 |  |
| 89 | Metadata configuration | 2d | 2006-05-31 | 2006-06-01 |  |
| 90 | WSRF multi resource testing | 5d | 2006-05-31 | 2006-06-06 |  |
| 91 | **Manual testing on** | 10d | 2006-05-31 | 2006-06-13 |  |
| 92 | Graphical components | 10d | 2006-05-31 | 2006-06-13 |  |

Removed: 8 asdf; 41 asdf

Changed:

| ID | Task | Start | Finish | Duration | Total float |
| --- | --- | --- | --- | --- | --- |
| 2 | **Software Development Prior to Beta Release** |  | 2006-06-09 → 2006-06-13 (+4d) | 40d? → 42d? | 36d → 34d |
| 3 | **Iteration I** |  | 2006-05-19 → 2006-05-16 (-3d) | 25d? → 22d? | 36d → 42d |
| 7 | **Introduce** | 2006-05-01 → 2006-04-17 (-14d) | 2006-05-19 → 2006-05-16 (-3d) | 15d → 22d | 36d → 34d |
| 60 | **Iteration II** | 2006-05-22 → 2006-05-17 (-5d) | 2006-06-09 → 2006-06-13 (+4d) | 15d? → 20d? | 36d → 34d |
| 61 | **Data Services** | 2006-05-22 → 2006-05-17 (-5d) | 2006-05-26 → 2006-05-23 (-3d) |  | 46d → 49d |
| 62 | asdf | 2006-05-22 → 2006-05-17 (-5d) | 2006-05-26 → 2006-05-23 (-3d) |  | 46d → 49d |
| 63 | **Introduce** | 2006-05-22 → 2006-05-17 (-5d) | 2006-06-09 → 2006-06-13 (+4d) | 15d → 20d | 36d → 34d |
| 93 | **Metadata** | 2006-05-22 → 2006-05-17 (-5d) | 2006-06-06 → 2006-06-01 (-5d) |  | 39d → 42d |
| 94 | **Finalize Metadata Models** | 2006-05-22 → 2006-05-17 (-5d) | 2006-05-23 → 2006-05-18 (-5d) |  | 39d → 42d |
| 95 | Incorporate Feedback | 2006-05-22 → 2006-05-17 (-5d) | 2006-05-22 → 2006-05-17 (-5d) |  | 40d → 43d |
| 96 | Update UML Models | 2006-05-22 → 2006-05-17 (-5d) | 2006-05-23 → 2006-05-18 (-5d) |  | 39d → 42d |
| 97 | Regenerate and Publish XSDs | 2006-05-22 → 2006-05-17 (-5d) | 2006-05-23 → 2006-05-18 (-5d) |  | 39d → 42d |
| 98 | **Discovery Client** | 2006-05-24 → 2006-05-19 (-5d) | 2006-05-30 → 2006-05-25 (-5d) |  | 39d → 42d |
| 99 | Update for Finalized Metadata Models | 2006-05-24 → 2006-05-19 (-5d) | 2006-05-30 → 2006-05-25 (-5d) |  | 39d → 42d |
| 100 | **Index Service** | 2006-05-22 → 2006-05-17 (-5d) | 2006-05-26 → 2006-05-23 (-3d) |  | 46d → 49d |
| 101 | Modify to support communication with secure services | 2006-05-22 → 2006-05-17 (-5d) | 2006-05-26 → 2006-05-23 (-3d) |  | 46d → 49d |
| 102 | **caDSR Service** | 2006-05-24 → 2006-05-19 (-5d) | 2006-05-30 → 2006-05-25 (-5d) |  | 44d → 47d |
| 103 | Implement Service-side Metadata generation | 2006-05-24 → 2006-05-19 (-5d) | 2006-05-30 → 2006-05-25 (-5d) |  | 44d → 47d |
| 104 | **Discovery Portal** | 2006-05-31 → 2006-05-26 (-5d) | 2006-06-06 → 2006-06-01 (-5d) |  | 39d → 42d |
| 105 | Initial implementation of discovery portal | 2006-05-31 → 2006-05-26 (-5d) | 2006-06-06 → 2006-06-01 (-5d) |  | 39d → 42d |
| 106 | **Security** | 2006-05-22 → 2006-05-17 (-5d) | 2006-05-22 → 2006-05-17 (-5d) |  | 50d → 53d |
| 107 | asdf | 2006-05-22 → 2006-05-17 (-5d) | 2006-05-22 → 2006-05-17 (-5d) |  | 50d → 53d |
| 108 | **Infrastructure** | 2006-05-22 → 2006-05-17 (-5d) | 2006-05-23 → 2006-05-18 (-5d) |  | 49d → 52d |
| 109 | Develop functional test plan | 2006-05-22 → 2006-05-17 (-5d) | 2006-05-23 → 2006-05-18 (-5d) |  | 49d → 52d |
| 110 | Install "staging" services on cluster | 2006-05-22 → 2006-05-17 (-5d) | 2006-05-22 → 2006-05-17 (-5d) |  | 50d → 53d |
| 111 | **Software Development Prior to API Freeze** | 2006-06-12 → 2006-06-14 (+2d) | 2006-07-21 → 2006-07-25 (+4d) |  | 36d → 34d |
| 112 | **Iteration I** | 2006-06-12 → 2006-06-14 (+2d) | 2006-06-30 → 2006-07-04 (+4d) |  | 36d → 34d |
| 113 | **Data Services** | 2006-06-12 → 2006-06-14 (+2d) | 2006-06-16 → 2006-06-20 (+4d) |  | 46d → 44d |
| 114 | asdf | 2006-06-12 → 2006-06-14 (+2d) | 2006-06-16 → 2006-06-20 (+4d) |  | 46d → 44d |
| 115 | **Introduce** | 2006-06-12 → 2006-06-14 (+2d) | 2006-06-30 → 2006-07-04 (+4d) |  | 36d → 34d |
| 116 | asdf | 2006-06-12 → 2006-06-14 (+2d) | 2006-06-30 → 2006-07-04 (+4d) |  | 36d → 34d |
| 117 | **Metadata** | 2006-06-12 → 2006-06-14 (+2d) | 2006-06-12 → 2006-06-14 (+2d) |  | 50d → 48d |
| 118 | asdf | 2006-06-12 → 2006-06-14 (+2d) | 2006-06-12 → 2006-06-14 (+2d) |  | 50d → 48d |
| 119 | **Security** | 2006-06-12 → 2006-06-14 (+2d) | 2006-06-12 → 2006-06-14 (+2d) |  | 50d → 48d |
| 120 | asdf | 2006-06-12 → 2006-06-14 (+2d) | 2006-06-12 → 2006-06-14 (+2d) |  | 50d → 48d |
| 121 | **Infrastructure** | 2006-06-12 → 2006-06-14 (+2d) | 2006-06-12 → 2006-06-14 (+2d) |  | 50d → 48d |
| 122 | asdf | 2006-06-12 → 2006-06-14 (+2d) | 2006-06-12 → 2006-06-14 (+2d) |  | 50d → 48d |
| 123 | **Iteration II** | 2006-07-03 → 2006-07-05 (+2d) | 2006-07-21 → 2006-07-25 (+4d) |  | 36d → 34d |
| 124 | **Data Services** | 2006-07-03 → 2006-07-05 (+2d) | 2006-07-07 → 2006-07-11 (+4d) |  | 46d → 44d |
| 125 | asdf | 2006-07-03 → 2006-07-05 (+2d) | 2006-07-07 → 2006-07-11 (+4d) |  | 46d → 44d |
| 126 | **Introduce** | 2006-07-03 → 2006-07-05 (+2d) | 2006-07-21 → 2006-07-25 (+4d) |  | 36d → 34d |
| 127 | asdf | 2006-07-03 → 2006-07-05 (+2d) | 2006-07-21 → 2006-07-25 (+4d) |  | 36d → 34d |
| 128 | **Metadata** | 2006-07-03 → 2006-07-05 (+2d) | 2006-07-03 → 2006-07-05 (+2d) |  | 50d → 48d |
| 129 | asdf | 2006-07-03 → 2006-07-05 (+2d) | 2006-07-03 → 2006-07-05 (+2d) |  | 50d → 48d |
| 130 | **Security** | 2006-07-03 → 2006-07-05 (+2d) | 2006-07-03 → 2006-07-05 (+2d) |  | 50d → 48d |
| 131 | asdf | 2006-07-03 → 2006-07-05 (+2d) | 2006-07-03 → 2006-07-05 (+2d) |  | 50d → 48d |
| 132 | **Infrastructure** | 2006-07-03 → 2006-07-05 (+2d) | 2006-07-03 → 2006-07-05 (+2d) |  | 50d → 48d |
| 133 | asdf | 2006-07-03 → 2006-07-05 (+2d) | 2006-07-03 → 2006-07-05 (+2d) |  | 50d → 48d |
| 134 | **Software Development Prior to 1.0 Release** | 2006-07-24 → 2006-07-26 (+2d) | 2006-09-01 → 2006-09-05 (+4d) |  | 36d → 34d |
| 135 | **Iteration I** | 2006-07-24 → 2006-07-26 (+2d) | 2006-08-11 → 2006-08-15 (+4d) |  | 36d → 34d |
| 136 | **Data Services** | 2006-07-24 → 2006-07-26 (+2d) | 2006-07-28 → 2006-08-01 (+4d) |  | 46d → 44d |
| 137 | asdf | 2006-07-24 → 2006-07-26 (+2d) | 2006-07-28 → 2006-08-01 (+4d) |  | 46d → 44d |
| 138 | **Introduce** | 2006-07-24 → 2006-07-26 (+2d) | 2006-08-11 → 2006-08-15 (+4d) |  | 36d → 34d |
| 139 | asdf | 2006-07-24 → 2006-07-26 (+2d) | 2006-08-11 → 2006-08-15 (+4d) |  | 36d → 34d |
| 140 | **Metadata** | 2006-07-24 → 2006-07-26 (+2d) | 2006-07-24 → 2006-07-26 (+2d) |  | 50d → 48d |
| 141 | asdf | 2006-07-24 → 2006-07-26 (+2d) | 2006-07-24 → 2006-07-26 (+2d) |  | 50d → 48d |
| 142 | **Security** | 2006-07-24 → 2006-07-26 (+2d) | 2006-07-24 → 2006-07-26 (+2d) |  | 50d → 48d |
| 143 | asdf | 2006-07-24 → 2006-07-26 (+2d) | 2006-07-24 → 2006-07-26 (+2d) |  | 50d → 48d |
| 144 | **Infrastructure** | 2006-07-24 → 2006-07-26 (+2d) | 2006-07-24 → 2006-07-26 (+2d) |  | 50d → 48d |
| 145 | asdf | 2006-07-24 → 2006-07-26 (+2d) | 2006-07-24 → 2006-07-26 (+2d) |  | 50d → 48d |
| 146 | **Iteration II** | 2006-08-14 → 2006-08-16 (+2d) | 2006-09-01 → 2006-09-05 (+4d) |  | 36d → 34d |
| 147 | **Data Services** | 2006-08-14 → 2006-08-16 (+2d) | 2006-08-18 → 2006-08-22 (+4d) |  | 46d → 44d |
| 148 | asdf | 2006-08-14 → 2006-08-16 (+2d) | 2006-08-18 → 2006-08-22 (+4d) |  | 46d → 44d |
| 149 | **Introduce** | 2006-08-14 → 2006-08-16 (+2d) | 2006-09-01 → 2006-09-05 (+4d) |  | 36d → 34d |
| 150 | asdf | 2006-08-14 → 2006-08-16 (+2d) | 2006-09-01 → 2006-09-05 (+4d) |  | 36d → 34d |
| 151 | **Metadata** | 2006-08-14 → 2006-08-16 (+2d) | 2006-08-14 → 2006-08-16 (+2d) |  | 50d → 48d |
| 152 | asdf | 2006-08-14 → 2006-08-16 (+2d) | 2006-08-14 → 2006-08-16 (+2d) |  | 50d → 48d |
| 153 | **Security** | 2006-08-14 → 2006-08-16 (+2d) | 2006-08-14 → 2006-08-16 (+2d) |  | 50d → 48d |
| 154 | asdf | 2006-08-14 → 2006-08-16 (+2d) | 2006-08-14 → 2006-08-16 (+2d) |  | 50d → 48d |
| 155 | **Infrastructure** | 2006-08-14 → 2006-08-16 (+2d) | 2006-08-14 → 2006-08-16 (+2d) |  | 50d → 48d |

| ID | Task | Start | Finish | Total float |
| --- | --- | --- | --- | --- |
| 156 | asdf | 2006-08-14 → 2006-08-16 (+2d) | 2006-08-14 → 2006-08-16 (+2d) | 50d → 48d |
