# caGrid-1-3

How a schedule from MS Project changed from version to version. A marks actual dates.

## Version 1 (saved 2008-07-31)

| ID | WBS | Task | Duration | Start | Finish | Predecessors | Complete | Total float |
| --- | --- | --- | --- | --- | --- | --- | --- | --- |
| 1 | 1.0 | **Gold Compatibility** | 1d? | 2008-07-17 | 2008-07-17 |  |  | 6d |
| 2 | 1.1 | **GME Rewrite** | 1d? | 2008-07-17 | 2008-07-17 |  |  | 6d |
| 3 |  | Start | 0d | 2008-07-17 | 2008-07-17 |  |  | 6d |
| 4 |  | MySQL 5.0 Support | 1d? | 2008-07-17 | 2008-07-17 | 3 |  | 6d |
| 5 |  | Schemas with Cycles | 1d? | 2008-07-17 | 2008-07-17 | 3 |  | 6d |
| 6 |  | Schemas with Includes/Redefines | 1d? | 2008-07-17 | 2008-07-17 | 3 |  | 6d |
| 7 |  | URI Valid as Namespace | 1d? | 2008-07-17 | 2008-07-17 | 3 |  | 6d |
| 8 |  | Metadata and WSDL reflect service operations | 1d? | 2008-07-17 | 2008-07-17 | 3 |  | 6d |
| 9 |  | Update/Delete non-production schemas | 1d? | 2008-07-17 | 2008-07-17 | 3 |  | 6d |
| 10 |  | Associate Arbitrarty Metadata or Annotations | 1d? | 2008-07-17 | 2008-07-17 | 3 |  | 6d |
| 11 |  | Validate that XML conforms to schema in GME | 1d? | 2008-07-17 | 2008-07-17 | 3 |  | 6d |
| 12 |  | Non-RFE Development | 1d? | 2008-07-17 | 2008-07-17 | 3 |  | 6d |
| 13 |  | Finish | 0d | 2008-07-17 | 2008-07-17 | 4, 5, 6, 7, 8, 9, 10, 11, 12 |  | 6d |
| 14 | 1.2 | **caDSR Grid Service Replacement** | 1d? | 2008-07-17 | 2008-07-17 |  |  | 6d |
| 15 |  | Start | 0d | 2008-07-17 | 2008-07-17 |  |  | 6d |
| 16 |  | Design | 1d? | 2008-07-17 | 2008-07-17 | 15 |  | 6d |
| 17 |  | Development | 1d? | 2008-07-17 | 2008-07-17 | 15 |  | 6d |
| 18 |  | Developer Testing | 1d? | 2008-07-17 | 2008-07-17 | 15 |  | 6d |
| 19 |  | Finish | 0d | 2008-07-17 | 2008-07-17 | 16, 17, 18 |  | 6d |
| 20 | 1.3 | **Make Core Services Gold Compatible** | 1d? | 2008-07-17 | 2008-07-17 |  |  | 7d |
| 21 |  | Start | 0d | 2008-07-17 | 2008-07-17 |  |  | 7d |
| 22 |  | Identify Services to be made Gold Compatible | 1d? | 2008-07-17 | 2008-07-17 | 21 |  | 7d |
| 23 |  | Make Services Gold Compatible | 1d? | 2008-07-17 | 2008-07-17 | 21 |  | 7d |
| 24 |  | Finish | 0d | 2008-07-17 | 2008-07-17 | 22, 23 |  | 7d |
| 25 | 1.4 | **Grid-based Policy Enforcement** | 1d? | 2008-07-17 | 2008-07-17 |  |  | 7d |
| 26 |  | Start | 0d | 2008-07-17 | 2008-07-17 |  |  | 7d |
| 27 |  | Determine Policy to be enforced | 1d? | 2008-07-17 | 2008-07-17 | 26 |  | 7d |
| 28 |  | Design | 1d? | 2008-07-17 | 2008-07-17 | 26 |  | 7d |
| 29 |  | Development | 1d? | 2008-07-17 | 2008-07-17 | 26 |  | 7d |
| 30 |  | End | 0d | 2008-07-17 | 2008-07-17 | 29, 27, 28 |  | 7d |
| 31 | 2.0 | **caCORE Integration** | 1d? | 2008-07-17 | 2008-07-17 |  |  | 7d |
| 32 |  | Start | 0d | 2008-07-17 | 2008-07-17 |  |  | 7d |
| 33 |  | Implementation of Common Testing between Grid and SDK | 1d? | 2008-07-17 | 2008-07-17 | 32 |  | 7d |
| 34 |  | Identify modeling gaps/requirements for the analytical/data service | 1d? | 2008-07-17 | 2008-07-17 | 32 |  | 7d |
| 35 |  | CQL/CQL2 Integration in SDK | 1d? | 2008-07-17 | 2008-07-17 | 32 |  | 7d |
| 36 |  | Data Service plug-in for SDK 4.1 | 1d? | 2008-07-17 | 2008-07-17 | 32 |  | 7d |
| 37 |  | Introduce upgrade to SDK 4.1 | 1d? | 2008-07-17 | 2008-07-17 | 32 |  | 7d |
| 38 |  | Proxy Framework and XML serialization integration in Grid Service | 1d? | 2008-07-17 | 2008-07-17 | 32 |  | 7d |
| 39 |  | XMI Reader API Integration in Introduce | 1d? | 2008-07-17 | 2008-07-17 | 32 |  | 7d |
| 40 |  | GME Namespace implementation in SDK | 1d? | 2008-07-17 | 2008-07-17 | 32 |  | 7d |
| 41 |  | Finish | 0d | 2008-07-17 | 2008-07-17 | 33, 34, 35, 40, 36, 37, 38, 39 |  | 7d |
| 42 | 3.0 | **Bug Fixes** | 1d? | 2008-07-17 | 2008-07-17 |  |  | 7d |
| 43 |  | Start | 0d | 2008-07-17 | 2008-07-17 |  |  | 7d |
| 44 |  | SDK 4 data service wizard fails with 'No Domain Model' | 1d? | 2008-07-17 | 2008-07-17 | 43 |  | 7d |
| 45 |  | When the trasfer resource is being destroyed it tries to delete the cache file. If the cache files does not exist it throws a resource exception. | 1d? | 2008-07-17 | 2008-07-17 | 43 |  | 7d |
| 46 |  | 2 >= 2 error in GridGrouper my groups | 1d? | 2008-07-17 | 2008-07-17 | 43 |  | 7d |
| 47 |  | Introduce is not passing any system properties on to it's ant calls it makes when running the engine. | 1d? | 2008-07-17 | 2008-07-17 | 43 |  | 7d |
| 48 |  | caDSR Grid Service API does not provide access to semantic metadata (concept codes) | 1d? | 2008-07-17 | 2008-07-17 | 43 |  | 7d |
| 49 |  | Security Service Metadata Anonymous Clients Ignored in Grid Grouper | 1d? | 2008-07-17 | 2008-07-17 | 43 |  | 7d |
| 50 |  | caCORE backed data services don't handle queries with single quotes in query parameters | 1d? | 2008-07-17 | 2008-07-17 | 43 |  | 7d |
| 51 |  | caDSR Type Browser doesn't let you correct a namespace that is invalid (as opposed to not found) | 1d? | 2008-07-17 | 2008-07-17 | 43 |  | 7d |
| 52 |  | DataService gets in inconsistent state and returns confusing errors when not properly initialized | 1d? | 2008-07-17 | 2008-07-17 | 43 |  | 7d |
| 53 |  | Grid Grouper Authorization not configured but service can be deployed | 1d? | 2008-07-17 | 2008-07-17 | 43 |  | 7d |
| 54 |  | Introduce error importing Type schemas it generated. | 1d? | 2008-07-17 | 2008-07-17 | 43 |  | 7d |
| 55 |  | GTS does not remove permissions when a CA is deleted. | 1d? | 2008-07-17 | 2008-07-17 | 43 |  | 7d |
| 56 |  | Spaces in GLOBUS_LOCATION causing errors on deployment for Introduce created services | 1d? | 2008-07-17 | 2008-07-17 | 43 |  | 7d |
| 57 |  | When importing a method from another introduce service package names are broken | 1d? | 2008-07-17 | 2008-07-17 | 43 |  | 7d |
| 58 |  | SyncGTS is an Introduce 1.1 service will conflict with a container running newer services. | 1d? | 2008-07-17 | 2008-07-17 | 43 |  | 7d |
| 59 |  | Lowercase chars in complexType names from schema can cause compile failure | 1d? | 2008-07-17 | 2008-07-17 | 43 |  | 7d |
| 60 |  | caGrid authentication service authentications fail after change of password on NCI LDAP | 1d? | 2008-07-17 | 2008-07-17 | 43 |  | 7d |
| 61 |  | SyncGTS is using log4j directly instead of commons logging which causes some logging statements to not be shown in Tomcat | 1d? | 2008-07-17 | 2008-07-17 | 43 |  | 7d |
| 62 |  | Remove references to log4j in projects and only use commons logging | 1d? | 2008-07-17 | 2008-07-17 | 43 |  | 7d |
| 63 |  | SDK 4 data service wizard fails with 'No Domain Model' | 1d? | 2008-07-17 | 2008-07-17 | 43 |  | 7d |
| 64 |  | Introduce error importing Type schemas it generated. | 1d? | 2008-07-17 | 2008-07-17 | 43 |  | 7d |
| 65 |  | Multiple services using WS-Enumeration cannot run in same container | 1d? | 2008-07-17 | 2008-07-17 | 43 |  | 7d |
| 66 |  | Introduce configure types validator lets you save when there are validation errors | 1d? | 2008-07-17 | 2008-07-17 | 43 |  | 7d |
| 67 |  | Subject in Dorian limited to 255 characters | 1d? | 2008-07-17 | 2008-07-17 | 43 |  | 7d |
| 68 |  | Introduce Log Viewer hangs in certain scenarios | 1d? | 2008-07-17 | 2008-07-17 | 43 |  | 7d |
| 69 |  | Finish | 0d | 2008-07-17 | 2008-07-17 | 44, 45, 46, 47, 48, 49, 50, 51, 52, 53, 54, 55, 56, 57, 58, 59, 60, 61, 62, 63, 64, 65, 66, 67, 68 |  | 7d |
| 70 | 4.0 | **WebSSO** | 1d? | 2008-07-17 A | 2008-07-17 |  | 42% | 6d |

| ID | WBS | Task | Duration | Start | Finish | Predecessors | Complete | Total float |
| --- | --- | --- | --- | --- | --- | --- | --- | --- |
| 71 |  | Start | 0d | 2008-07-17 | 2008-07-17 |  |  | 6d |
| 72 |  | Properties not set for service redirect/cookie age within the cas-servlet.xml file | 1d? | 2008-07-17 A | 2008-07-17 A | 71 | 100% |  |
| 73 |  | CaGridWebSSOAttributeLoaderFilter will not work as designed | 1d? | 2008-07-17 A | 2008-07-17 A | 71 | 100% |  |
| 74 |  | WebSSO project is missing jar dependencies for syncGTS | 1d? | 2008-07-17 A | 2008-07-17 A | 71 | 100% |  |
| 75 |  | classnotfoundexception when deploying to tomcat 5.5+ | 1d? | 2008-07-17 A | 2008-07-17 A | 71 | 100% |  |
| 76 |  | Update Build Process | 1d? | 2008-07-17 | 2008-07-17 | 71 |  | 6d |
| 77 |  | Update the Sample Application | 1d? | 2008-07-17 | 2008-07-17 | 71 |  | 6d |
| 78 |  | Create an Installer | 1d? | 2008-07-17 | 2008-07-17 | 71 |  | 6d |
| 79 |  | Author System Tests for WebSSO | 1d? | 2008-07-17 | 2008-07-17 | 71 |  | 6d |
| 80 |  | Acegi client | 1d? | 2008-07-17 | 2008-07-17 | 71 |  | 6d |
| 81 |  | Single sign-out | 1d? | 2008-07-17 A | 2008-07-17 A | 71 | 100% |  |
| 82 |  | Support out-of-box integration with Liferay (caGrid Portal 2.x) | 1d? | 2008-07-17 | 2008-07-17 | 71 |  | 6d |
| 83 |  | Enhance existing documentation | 1d? | 2008-07-17 | 2008-07-17 | 71 |  | 6d |
| 84 |  | Finish | 0d | 2008-07-17 | 2008-07-17 | 73, 74, 75, 76, 77, 78, 79, 80, 81, 82, 83, 72 |  | 6d |
| 85 | 5.0 | **Continuous Integration** | 1d? | 2008-07-17 | 2008-07-17 |  |  | 6d |
| 86 |  | Start | 0d | 2008-07-17 | 2008-07-17 |  |  | 6d |
| 87 |  | Support common technology stack for caGrid infrastructure | 1d? | 2008-07-17 | 2008-07-17 | 86 |  | 7d |
| 88 |  | Replace cvs with subversion | 1d? | 2008-07-17 | 2008-07-17 | 86 |  | 6d |
| 89 |  | Common caBIG Ivy Repository | 1d? | 2008-07-17 | 2008-07-17 | 86 |  | 7d |
| 90 |  | Remove old EVS grid service | 1d? | 2008-07-17 | 2008-07-17 | 86 |  | 7d |
| 91 |  | Remove old caDSR grid service | 1d? | 2008-07-17 | 2008-07-17 | 86 |  | 7d |
| 92 |  | Finish | 0d | 2008-07-17 | 2008-07-17 | 87, 88, 91, 89, 90 |  | 7d |
| 93 | 6.0 | **Data Services** | 1d? | 2008-07-17 | 2008-07-17 |  |  | 6d |
| 94 |  | Start | 0d | 2008-07-17 | 2008-07-17 |  |  | 6d |
| 95 |  | CQL/CQL2 Integration in SDK | 1d? | 2008-07-17 | 2008-07-17 | 94 |  | 6d |
| 96 |  | FQP should support delegation | 1d? | 2008-07-17 | 2008-07-17 | 94 |  | 6d |
| 97 |  | FQP should support BDT transfer of results | 1d? | 2008-07-17 | 2008-07-17 | 94 |  | 6d |
| 98 |  | FQP should support ws-notification | 1d? | 2008-07-17 | 2008-07-17 | 94 |  | 6d |
| 99 |  | DCQL (FQP) should support query modifiers | 1d? | 2008-07-17 | 2008-07-17 | 94 |  | 6d |
| 100 |  | Add additional utilities for working with query results | 1d? | 2008-07-17 | 2008-07-17 | 94 |  | 6d |
| 101 |  | silent exceptions (no service properties from custom query processor) when adding a custom query processor using Introduce data extension | 1d? | 2008-07-17 | 2008-07-17 | 94 |  | 6d |
| 102 |  | End | 0d | 2008-07-17 | 2008-07-17 | 95, 96, 97, 98, 99, 100, 101 |  | 6d |
| 103 | 7.0 | **Introduce** | 1d? | 2008-07-17 | 2008-07-17 |  |  | 0d |
| 104 |  | Start | 0d | 2008-07-17 | 2008-07-17 |  |  | 0d |
| 105 |  | Grid Grouper Introduce Authorization Extension | 1d? | 2008-07-17 | 2008-07-17 | 104 |  | 0d |
| 106 |  | ivy support for introduce-created projects | 1d? | 2008-07-17 | 2008-07-17 | 104 |  | 0d |
| 107 |  | Terminology Metadata Service Extension | 1d? | 2008-07-17 | 2008-07-17 | 104 |  | 0d |
| 108 |  | Need a way to hook in pre-deployment validation checks to enforce policy | 1d? | 2008-07-17 | 2008-07-17 | 104 |  | 0d |
| 109 |  | Change the way schemas are loaded and resolved by introduce. | 1d? | 2008-07-17 | 2008-07-17 | 104 |  | 0d |
| 110 |  | Introduce extension for creating cagrid core services | 1d? | 2008-07-17 | 2008-07-17 | 104 |  | 0d |
| 111 |  | Introduce Software Update needs re-engineered | 1d? | 2008-07-17 | 2008-07-17 | 104 |  | 0d |
| 112 |  | Improve Introduce usability when adding extensions or service contexts | 1d? | 2008-07-17 | 2008-07-17 | 104 |  | 0d |
| 113 |  | Introduce services which support persistence are hard to customize persistence on the resource itself | 1d? | 2008-07-17 | 2008-07-17 | 104 |  | 0d |
| 114 |  | Introduce client code should be more override friendly | 1d? | 2008-07-17 | 2008-07-17 | 104 |  | 0d |
| 115 |  | Introduce clients do not set user credential when returning client handle to stateful resources | 1d? | 2008-07-17 | 2008-07-17 | 104 |  | 0d |
| 116 |  | Introduce Service tab should use tooltips in the jtree | 1d? | 2008-07-17 | 2008-07-17 | 104 |  | 7d |
| 117 |  | Finish | 0d | 2008-07-17 | 2008-07-17 | 109, 110, 111, 112, 113, 114, 115, 105, 106, 108, 107 |  | 0d |
| 118 | 8.0 | **Security** | 1d? | 2008-07-17 | 2008-07-17 |  |  | 6d |
| 119 |  | Start | 0d | 2008-07-17 | 2008-07-17 |  |  | 6d |
| 120 |  | Support multiple authentication profile | 1d? | 2008-07-17 | 2008-07-17 | 119 |  | 6d |
| 121 |  | Authentication Profile Service Metadata | 1d? | 2008-07-17 | 2008-07-17 | 119 |  | 6d |
| 122 |  | Update GAARDS UI to leverage new Authentication Profile / Trusted IdP metadata | 1d? | 2008-07-17 | 2008-07-17 | 119 |  | 6d |
| 123 |  | Develop system integration tests for the Authentication Service | 1d? | 2008-07-17 | 2008-07-17 | 119 |  | 6d |
| 124 |  | End | 0d | 2008-07-17 | 2008-07-17 | 120, 121, 122, 123 |  | 6d |
| 125 | 9.0 | **Incubation** | 1d? | 2008-07-17 | 2008-07-17 |  |  | 6d |
| 126 |  | Start | 0d | 2008-07-17 | 2008-07-17 |  |  | 6d |
| 127 |  | WSRF.NET (support) | 1d? | 2008-07-17 | 2008-07-17 | 126 |  | 6d |
| 128 |  | Identifiers (support) | 1d? | 2008-07-17 | 2008-07-17 | 126 |  | 6d |
| 129 |  | Metrics Service | 1d? | 2008-07-17 | 2008-07-17 | 126 |  | 6d |
| 130 |  | End | 0d | 2008-07-17 | 2008-07-17 | 127, 128, 129 |  | 7d |
| 131 | 10.0 | **Documentation** | 1d? | 2008-07-17 | 2008-07-17 |  |  | 7d |
| 132 |  | Start | 0d | 2008-07-17 | 2008-07-17 |  |  | 7d |
| 133 |  | Update Administrator Guide | 1d? | 2008-07-17 | 2008-07-17 | 132 |  | 7d |
| 134 |  | Update Install Guide | 1d? | 2008-07-17 | 2008-07-17 | 132 |  | 7d |
| 135 |  | Update User Guide | 1d? | 2008-07-17 | 2008-07-17 | 132 |  | 7d |
| 136 |  | Finish | 0d | 2008-07-17 | 2008-07-17 | 133, 134, 135 |  | 7d |
| 137 | 11.0 | **Quality Assurance** | 3d? | 2008-07-17 | 2008-07-21 |  |  | 5d |
| 138 |  | Start | 0d | 2008-07-17 | 2008-07-17 |  |  | 7d |
| 139 |  | Test GME | 1d? | 2008-07-18 | 2008-07-18 | 138, 13 |  | 6d |
| 140 |  | Test caDSR Replacement | 1d? | 2008-07-18 | 2008-07-18 | 138, 19 |  | 6d |

| ID | WBS | Task | Duration | Start | Finish | Predecessors | Total float |
| --- | --- | --- | --- | --- | --- | --- | --- |
| 141 |  | Test WebSSO | 1d? | 2008-07-18 | 2008-07-18 | 138, 84 | 6d |
| 142 |  | Test release on new tech stack | 1d? | 2008-07-18 | 2008-07-18 | 138, 88 | 6d |
| 143 |  | Test Introduce | 1d? | 2008-07-18 | 2008-07-18 | 138, 117 | 6d |
| 144 |  | Test Security | 1d? | 2008-07-18 | 2008-07-18 | 138, 124 | 6d |
| 145 |  | Test WSRF.NET | 1d? | 2008-07-18 | 2008-07-18 | 138, 127 | 6d |
| 146 |  | Test Identifiers | 1d? | 2008-07-18 | 2008-07-18 | 138, 128 | 6d |
| 147 |  | Test Metrics | 1d? | 2008-07-18 | 2008-07-18 | 138, 129 | 6d |
| 148 |  | Test Data Services | 1d? | 2008-07-18 | 2008-07-18 | 138, 102 | 6d |
| 149 |  | Test caGrid 1.3 Grid Services | 1d? | 2008-07-21 | 2008-07-21 | 138, 153 | 5d |
| 150 |  | Finish | 0d | 2008-07-21 | 2008-07-21 | 149 | 5d |
| 151 | 12.0 | **Deployment** | 8d? | 2008-07-17 | 2008-07-28 |  | 0d |
| 152 |  | Start | 0d | 2008-07-17 | 2008-07-17 |  | 1d |
| 153 |  | Regenerate core caGrid Services using Introduce 1.3 | 1d? | 2008-07-18 | 2008-07-18 | 152, 117 | 0d |
| 154 |  | Write Deployment Instructions | 1d? | 2008-07-17 | 2008-07-17 | 152 | 1d |
| 155 |  | Workflow Service in Release | 1d? | 2008-07-17 | 2008-07-17 | 152 | 1d |
| 156 |  | Portal in Release | 1d? | 2008-07-17 | 2008-07-17 | 152 | 7d |
| 157 |  | Create Release | 1d? | 2008-07-21 | 2008-07-21 | 152, 153, 154, 155 | 0d |
| 158 |  | Package Release into Installer | 1d? | 2008-07-22 | 2008-07-22 | 157 | 0d |
| 159 |  | Redeploy QA Grid | 1d? | 2008-07-23 | 2008-07-23 | 158 | 0d |
| 160 |  | Redeploy Training Grid | 1d? | 2008-07-23 | 2008-07-23 | 158 | 3d |
| 161 |  | Redeploy Staging Grid | 1d? | 2008-07-24 | 2008-07-24 | 159 | 0d |
| 162 |  | Redeploy Production Grid | 1d? | 2008-07-25 | 2008-07-25 | 161 | 0d |
| 163 |  | Update Zope / Plome | 1d? | 2008-07-22 | 2008-07-22 | 157 | 4d |
| 164 |  | Update gforge | 1d? | 2008-07-22 | 2008-07-22 | 157 | 4d |
| 165 |  | Send Release Announcement | 1d? | 2008-07-28 | 2008-07-28 | 162 | 0d |
| 166 |  | Finish | 0d | 2008-07-28 | 2008-07-28 | 153, 154, 155, 156, 157, 158, 159, 160, 161, 162, 163, 164, 165 | 0d |

## Version 2 (saved 2008-08-13)

Last finish 2008-07-28 → 2008-07-30 (+2d). Complete tasks 5 → 6.

Added:

| ID | Task | Duration | Start | Finish | Predecessors |
| --- | --- | --- | --- | --- | --- |
| 18 | Migration of code depenedencies on caDSR grid service (Introduce extensions) | 1d? | 2008-07-17 | 2008-07-17 |  |
| 89 | **Update installer** | 1d? | 2008-07-17 | 2008-07-17 |  |
| 90 | integrate latest portal release | 1d? | 2008-07-17 | 2008-07-17 |  |
| 91 | integrate WF client release? | 1d? | 2008-07-17 | 2008-07-17 |  |
| 92 | updates for tech stack (tomcat versions, etc) | 1d? | 2008-07-17 | 2008-07-17 |  |
| 105 | DCQL fails when some target services are down | 1d? | 2008-07-17 | 2008-07-17 |  |
| 113 | CSM Introduce Authorization Extension | 1d? | 2008-07-17 | 2008-07-17 |  |
| 125 | Introduce Feature Freeze (milestone) | 1d? | 2008-07-17 | 2008-07-17 |  |
| 126 | Introduce Upgraders (1.1->1.3) | 1d? | 2008-07-17 | 2008-07-17 |  |
| 127 | Introduce Upgraders (1.2->1.3) | 1d? | 2008-07-17 | 2008-07-17 |  |
| 128 | Problem with Anonymous Security Setting | 1d? | 2008-07-17 | 2008-07-17 |  |
| 136 | Develop system integration tests for the GTS | 1d? | 2008-07-18 | 2008-07-18 | 135 |
| 137 | SyncGTS needs to use service property for sync description | 1d? | 2008-07-21 | 2008-07-21 | 136 |
| 138 | API to discover trusted IDs (Use case for caB2B security requirements) | 1d? | 2008-07-22 | 2008-07-22 | 137 |
| 139 | Service Security Client needs a way to say to always use credential | 1d? | 2008-07-23 | 2008-07-23 | 138 |
| 140 | Spring enable Dorian | 1d? | 2008-07-24 | 2008-07-24 | 139 |
| 141 | Implement new Authentication Service interface | 1d? | 2008-07-25 | 2008-07-25 | 140 |
| 142 | Add Authentication Profile Metadata to Dorian. | 1d? | 2008-07-28 | 2008-07-28 | 141 |
| 143 | Extend Trusted Identity Provider information to include information regarding the IdP's Authentication Service | 1d? | 2008-07-29 | 2008-07-29 | 142 |
| 144 | Add Trusted IdP metadata to Dorian | 1d? | 2008-07-30 | 2008-07-30 | 143 |
| 145 | Move from issuing Proxy Certificates to Issuing short term certificates. | 1d? | 2008-07-17 | 2008-07-17 |  |
| 146 | Enable Dorian Host Certificates to work with new version of IE and Firefox | 1d? | 2008-07-17 | 2008-07-17 |  |
| 147 | Add Account Audting to Dorian | 1d? | 2008-07-17 | 2008-07-17 |  |
| 148 | Reformat GAARDS UI to display properly on the MAC | 1d? | 2008-07-17 | 2008-07-17 |  |
| 161 | Update design documents | 1d? | 2008-07-18 | 2008-07-18 | 160 |
| 162 | Update caGrid overview | 1d? | 2008-07-21 | 2008-07-21 | 161 |
| 163 | Update wiki | 1d? | 2008-07-22 | 2008-07-22 | 162 |
| 178 | Test QA integration scenarios | 1d? | 2008-07-24 | 2008-07-24 | 177 |
| 182 | Create release notes | 1d? | 2008-07-17 | 2008-07-17 | 181 |
| 183 | Create 1.3 target_grid configurations | 1d? | 2008-07-18 | 2008-07-18 | 182 |
| 184 | **Create 1.3 release branch in CVS** | 1d? | 2008-07-21 | 2008-07-21 | 183 |
| 185 | Update project versions | 1d? | 2008-07-21 | 2008-07-21 |  |
| 186 | update eclipse projects | 1d? | 2008-07-21 | 2008-07-21 |  |
| 187 | remove any projects which wont be released in 1.3 | 1d? | 2008-07-21 | 2008-07-21 |  |
| 188 | Update LICENSE | 1d? | 2008-07-17 | 2008-07-17 |  |
| 190 | Validate core services' metadata | 1d? | 2008-07-17 | 2008-07-17 |  |
| 191 | publish release IVY repositories | 1d? | 2008-07-17 | 2008-07-17 |  |
| 192 | create installer release | 1d? | 2008-07-17 | 2008-07-17 |  |
| 193 | post installer properties file to FTP site | 1d? | 2008-07-17 | 2008-07-17 |  |
| 194 | create gforge release | 1d? | 2008-07-17 | 2008-07-17 |  |

Changed:

| ID | Task | Start | Finish | Duration | Complete | Total float | Predecessors | Other |
| --- | --- | --- | --- | --- | --- | --- | --- | --- |
| 130 | **Security** | 2008-07-17 A | 2008-07-17 → 2008-07-30 (+13d) | 1d? → 10d? | 0% → 6% | 6d → 0d |  |  |
| 135 | Develop system integration tests for the Authentication Service | 2008-07-17 A | 2008-07-17 A |  | 0% → 100% | 6d → none |  |  |
| 149 | End |  |  |  |  | 6d → 8d | 132, 133, 134, 135 → 132, 133, 134 |  |
| 156 | **Documentation** |  | 2008-07-17 → 2008-07-22 (+5d) | 1d? → 4d? |  | 7d → 6d |  |  |
| 164 | Finish | 2008-07-17 → 2008-07-22 (+5d) | 2008-07-17 → 2008-07-22 (+5d) |  |  | 7d → 6d | 158, 159, 160 → 158, 159, 163 |  |
| 165 | **Quality Assurance** |  | 2008-07-21 → 2008-07-24 (+3d) | 3d? → 6d? |  | 5d → 4d |  |  |
| 177 | Test caGrid 1.3 Grid Services | 2008-07-21 → 2008-07-23 (+2d) | 2008-07-21 → 2008-07-23 (+2d) |  |  | 5d → 4d |  |  |
| 179 | Finish | 2008-07-21 → 2008-07-24 (+3d) | 2008-07-21 → 2008-07-24 (+3d) |  |  | 5d → 4d | 177 → 178 |  |
| 180 | **Deployment** |  | 2008-07-28 → 2008-07-30 (+2d) | 8d? → 10d? |  |  |  |  |
| 189 | Update core caGrid Services using Introduce 1.3 | 2008-07-18 → 2008-07-22 (+4d) | 2008-07-18 → 2008-07-22 (+4d) |  |  |  | 181, 129 → 125, 185 | was named Regenerate core caGrid Services using Introduce 1.3 |
| 198 | Create Release | 2008-07-21 → 2008-07-23 (+2d) | 2008-07-21 → 2008-07-23 (+2d) |  |  |  |  |  |
| 199 | Package Release into Installer | 2008-07-22 → 2008-07-24 (+2d) | 2008-07-22 → 2008-07-24 (+2d) |  |  |  |  |  |
| 200 | Redeploy QA Grid | 2008-07-23 → 2008-07-25 (+2d) | 2008-07-23 → 2008-07-25 (+2d) |  |  |  |  |  |
| 201 | Redeploy Training Grid | 2008-07-23 → 2008-07-25 (+2d) | 2008-07-23 → 2008-07-25 (+2d) |  |  |  |  |  |
| 202 | Redeploy Staging Grid | 2008-07-24 → 2008-07-28 (+4d) | 2008-07-24 → 2008-07-28 (+4d) |  |  |  |  |  |
| 203 | Redeploy Production Grid | 2008-07-25 → 2008-07-29 (+4d) | 2008-07-25 → 2008-07-29 (+4d) |  |  |  |  |  |
| 204 | Update Zope / Plome | 2008-07-22 → 2008-07-24 (+2d) | 2008-07-22 → 2008-07-24 (+2d) |  |  |  |  |  |
| 205 | Update gforge | 2008-07-22 → 2008-07-24 (+2d) | 2008-07-22 → 2008-07-24 (+2d) |  |  |  |  |  |
| 206 | Send Release Announcement | 2008-07-28 → 2008-07-30 (+2d) | 2008-07-28 → 2008-07-30 (+2d) |  |  |  |  |  |
| 207 | Finish | 2008-07-28 → 2008-07-30 (+2d) | 2008-07-28 → 2008-07-30 (+2d) |  |  |  |  |  |

## Version 3 (saved 2008-08-26)

Note of the change: updated with resources

Last finish 2008-07-30 → 2008-07-31 (+1d). Complete tasks 6 → 8.

Added:

| ID | Task | Duration | Start | Finish | Predecessors | Resources |
| --- | --- | --- | --- | --- | --- | --- |
| 25 | Start | 0d | 2008-07-17 | 2008-07-17 | 22 | John Eisenschmidt |
| 26 | CQL | 1d? | 2008-07-17 | 2008-07-17 | 25 | John Eisenschmidt |
| 27 | CQL Results | 1d? | 2008-07-17 | 2008-07-17 | 25 | John Eisenschmidt |
| 28 | Service Metadata | 1d? | 2008-07-17 | 2008-07-17 | 25 | John Eisenschmidt |
| 29 | Security Metadata | 1d? | 2008-07-17 | 2008-07-17 | 25 | John Eisenschmidt |
| 30 | Data Services Object Model | 1d? | 2008-07-17 | 2008-07-17 | 25 | John Eisenschmidt |
| 31 | Finish | 0d | 2008-07-17 | 2008-07-17 | 26, 27, 28, 29, 30 | John Eisenschmidt |

Removed: 41 GME Namespace implementation in SDK; 64 SDK 4 data service wizard fails with 'No Domain Model'; 65 Introduce error importing Type schemas it generated.; 153 Identifiers (support); 154 Metrics Service; 196 Workflow Service in Release; 197 Portal in Release; 198 Create Release; 199 Package Release into Installer

Changed:

| ID | Task | Start | Finish | Duration | Complete | Total float | Predecessors | Other |
| --- | --- | --- | --- | --- | --- | --- | --- | --- |
| 2 | **GME Rewrite** |  |  |  |  | 8d → 9d |  | resources none → Scott Oster [50%] |
| 3 | Start |  |  |  |  | 8d → 9d |  | resources none → Scott Oster [50%] |
| 4 | MySQL 5.0 Support |  |  |  |  | 8d → 9d |  | resources none → Scott Oster [50%] |
| 5 | Schemas with Cycles |  |  |  |  | 8d → 9d |  | resources none → Scott Oster [50%] |
| 6 | Schemas with Includes/Redefines |  |  |  |  | 8d → 9d |  | resources none → Scott Oster [50%] |
| 7 | URI Valid as Namespace |  |  |  |  | 8d → 9d |  | resources none → Scott Oster [50%] |
| 8 | Metadata and WSDL reflect service operations |  |  |  |  | 8d → 9d |  | resources none → Scott Oster [50%] |
| 9 | Update/Delete non-production schemas |  |  |  |  | 8d → 9d |  | resources none → Scott Oster [50%] |
| 10 | Associate Arbitrarty Metadata or Annotations |  |  |  |  | 8d → 9d |  | resources none → Scott Oster [50%] |
| 11 | Validate that XML conforms to schema in GME |  |  |  |  | 8d → 9d |  | resources none → Scott Oster [50%] |
| 12 | Non-RFE Development |  |  |  |  | 8d → 9d |  | resources none → Scott Oster [50%] |
| 13 | Finish |  |  |  |  | 8d → 9d |  | resources none → Scott Oster [50%] |
| 14 | **caDSR Grid Service Replacement** |  |  |  |  | 8d → 9d |  | resources none → Scott Oster [50%] |
| 15 | Start |  |  |  |  | 8d → 9d |  | resources none → Scott Oster [50%] |
| 16 | Design |  |  |  |  | 8d → 9d |  | resources none → Scott Oster [50%] |
| 17 | Development |  |  |  |  | 8d → 9d |  | resources none → Scott Oster [50%] |
| 18 | Migration of code depenedencies on caDSR grid service (Introduce extensions) |  |  |  |  | 9d → 10d |  | resources none → Scott Oster [50%] |
| 19 | Developer Testing |  |  |  |  | 8d → 9d |  | resources none → Scott Oster [50%] |
| 20 | Finish |  |  |  |  | 8d → 9d |  | resources none → Scott Oster [50%] |
| 23 | Identify Services to be made Gold Compatible |  |  |  |  | 9d → 10d |  | resources none → Scott Oster [50%] |
| 24 | **Register Object and Metadata Models** |  |  |  |  | 9d → 10d | 22 → none | was named Make Services Gold Compatible; resources none → John Eisenschmidt |
| 32 | Finish |  |  |  |  | 9d → 10d | 23, 24 → 23, 31 |  |
| 38 | Finish |  |  |  |  | 9d → 10d |  | was named End |
| 41 | Implementation of Common Testing between Grid and SDK |  |  |  |  | 9d → 10d |  | resources none → David Ervin |
| 42 | Identify modeling gaps/requirements for the analytical/data service |  |  |  |  | 9d → 10d |  | resources none → David Ervin |
| 43 | CQL/CQL2 Integration in SDK |  |  |  |  | 9d → 10d |  | resources none → David Ervin |
| 44 | Data Service plug-in for SDK 4.1 |  |  |  |  | 9d → 10d |  | resources none → David Ervin |
| 45 | Introduce upgrade to SDK 4.1 |  |  |  |  | 9d → 10d |  | resources none → Shannon Hastings |
| 46 | Proxy Framework and XML serialization integration in Grid Service |  |  |  |  | 9d → 10d |  | resources none → Shannon Hastings |
| 47 | XMI Reader API Integration in Introduce |  |  |  |  | 9d → 10d |  | resources none → Shannon Hastings |
| 48 | Finish |  |  |  |  | 9d → 10d | 41, 42, 43, GME Namespace implementation in SDK, 44, 45, 46, 47 → 41, 42, 43, 44, 45, 46, 47 |  |
| 49 | **Bug Fixes** | 2008-07-17 A |  |  | 0% → 4% | 9d → 10d |  |  |
| 51 | SDK 4 data service wizard fails with 'No Domain Model' |  |  |  |  | 9d → 10d |  | resources none → David Ervin |
| 52 | When the trasfer resource is being destroyed it tries to delete the cache file. If the cache files does not exist it throws a resource exception. |  |  |  |  | 9d → 10d |  | resources none → Shannon Hastings |
| 53 | 2 >= 2 error in GridGrouper my groups |  |  |  |  | 9d → 10d |  | resources none → Steve Langella |
| 54 | Introduce is not passing any system properties on to it's ant calls it makes when running the engine. |  |  |  |  | 9d → 10d |  | resources none → Shannon Hastings |
| 55 | caDSR Grid Service API does not provide access to semantic metadata (concept codes) |  |  |  |  | 9d → 10d |  | resources none → Scott Oster [50%] |
| 56 | Security Service Metadata Anonymous Clients Ignored in Grid Grouper |  |  |  |  | 9d → 10d |  | resources none → Steve Langella |
| 57 | caCORE backed data services don't handle queries with single quotes in query parameters | 2008-07-17 A | 2008-07-17 A |  | 0% → 100% | 9d → none |  | resources none → David Ervin |
| 58 | caDSR Type Browser doesn't let you correct a namespace that is invalid (as opposed to not found) |  |  |  |  | 9d → 10d |  | resources none → Scott Oster [50%] |
| 59 | DataService gets in inconsistent state and returns confusing errors when not properly initialized |  |  |  |  | 9d → 10d |  | resources none → David Ervin |
| 60 | Grid Grouper Authorization not configured but service can be deployed |  |  |  |  | 9d → 10d |  | resources none → Steve Langella |
| 61 | Introduce error importing Type schemas it generated. |  |  |  |  | 9d → 10d |  | resources none → Shannon Hastings |
| 62 | GTS does not remove permissions when a CA is deleted. |  |  |  |  | 9d → 10d |  | resources none → Steve Langella |
| 63 | Spaces in GLOBUS_LOCATION causing errors on deployment for Introduce created services |  |  |  |  | 9d → 10d |  | resources none → Shannon Hastings |
| 64 | When importing a method from another introduce service package names are broken |  |  |  |  | 9d → 10d |  | resources none → Shannon Hastings |
| 65 | SyncGTS is an Introduce 1.1 service will conflict with a container running newer services. |  |  |  |  | 9d → 10d |  | resources none → Steve Langella |
| 66 | Lowercase chars in complexType names from schema can cause compile failure |  |  |  |  | 9d → 10d |  | resources none → John Eisenschmidt |
| 67 | caGrid authentication service authentications fail after change of password on NCI LDAP |  |  |  |  | 9d → 10d |  | resources none → Steve Langella |
| 68 | SyncGTS is using log4j directly instead of commons logging which causes some logging statements to not be shown in Tomcat |  |  |  |  | 9d → 10d |  | resources none → Steve Langella |
| 69 | Remove references to log4j in projects and only use commons logging |  |  | 1d? → 0.29d? |  | 9d → 10.71d |  | resources none → Steve Langella; Scott Oster [50%]; Shannon Hastings; David Ervin |
| 70 | Multiple services using WS-Enumeration cannot run in same container |  |  |  |  | 9d → 10d |  | resources none → Shannon Hastings |
| 71 | Introduce configure types validator lets you save when there are validation errors |  |  |  |  | 9d → 10d |  | resources none → Shannon Hastings |
| 72 | Subject in Dorian limited to 255 characters |  |  |  |  | 9d → 10d |  | resources none → Steve Langella |
| 73 | Introduce Log Viewer hangs in certain scenarios |  |  |  |  | 9d → 10d |  | resources none → Shannon Hastings |
| 74 | Finish |  |  |  |  | 9d → 10d | 51, 52, 53, 54, 55, 56, 57, 58, 59, 60, 61, 62, 63, 64, 65, 66, 67, 68, 69, SDK 4 data service wizard fails with 'No Domain Model', Introduce error importing Type schemas it generated., 70, 71, 72, 73 → 51, 52, 53, 54, 55, 56, 57, 58, 59, 60, 61, 62, 63, 64, 65, 66, 67, 68, 69, 70, 71, 72, 73 |  |
| 75 | **WebSSO** |  |  |  | 42% → 50% | 8d → 9d |  |  |
| 77 | Properties not set for service redirect/cookie age within the cas-servlet.xml file |  |  |  |  |  |  | resources none → Santhosh Garmilla [50%] |
| 78 | CaGridWebSSOAttributeLoaderFilter will not work as designed |  |  |  |  |  |  | resources none → Santhosh Garmilla [50%] |
| 79 | WebSSO project is missing jar dependencies for syncGTS |  |  |  |  |  |  | resources none → Santhosh Garmilla [50%] |
| 80 | classnotfoundexception when deploying to tomcat 5.5+ |  |  |  |  |  |  | resources none → Santhosh Garmilla [50%] |
| 81 | Update Build Process |  |  |  |  | 8d → 9d |  | resources none → Santhosh Garmilla [50%] |
| 82 | Update the Sample Application | 2008-07-17 A | 2008-07-17 A |  | 0% → 100% | 8d → none |  | resources none → Santhosh Garmilla [50%] |
| 83 | Create an Installer |  |  |  |  | 8d → 9d |  | resources none → Santhosh Garmilla [50%] |
| 84 | Author System Tests for WebSSO |  |  |  |  | 8d → 9d |  | resources none → Santhosh Garmilla [50%] |
| 85 | Acegi client |  |  |  |  | 8d → 9d |  | resources none → Santhosh Garmilla [50%] |
| 86 | Single sign-out |  |  |  |  |  |  | resources none → Santhosh Garmilla [50%] |
| 87 | Support out-of-box integration with Liferay (caGrid Portal 2.x) |  |  |  |  | 8d → 9d |  | resources none → Santhosh Garmilla [50%] |
| 88 | Enhance existing documentation |  |  |  |  | 8d → 9d |  | resources none → Santhosh Garmilla [50%] |
| 92 | Support common technology stack for caGrid infrastructure |  |  |  |  | 9d → 10d |  | resources none → Knowledge Center |

| ID | Task | Start | Finish | Duration | Total float | Predecessors | Other |
| --- | --- | --- | --- | --- | --- | --- | --- |
| 94 | integrate latest portal release |  |  |  | 9d → 10d |  | resources none → Scott Oster [50%] |
| 95 | integrate WF client release? |  |  |  | 9d → 10d |  | resources none → Scott Oster [50%] |
| 96 | updates for tech stack (tomcat versions, etc) |  |  |  | 9d → 10d |  | resources none → Scott Oster [50%] |
| 97 | Replace cvs with subversion |  |  |  | 8d → 9d |  | resources none → Knowledge Center |
| 98 | Common caBIG Ivy Repository |  |  |  | 9d → 10d |  | resources none → Knowledge Center; Scott Oster [50%] |
| 99 | Remove old EVS grid service |  |  |  | 9d → 10d |  | resources none → Scott Oster [50%] |
| 100 | Remove old caDSR grid service |  |  |  | 9d → 10d |  | resources none → Scott Oster [50%] |
| 104 | CQL/CQL2 Integration in SDK |  |  |  | 8d → 9d |  | resources none → David Ervin [80%] |
| 105 | FQP should support delegation |  |  |  | 8d → 9d |  | resources none → David Ervin [80%] |
| 106 | FQP should support BDT transfer of results |  |  |  | 8d → 9d |  | resources none → David Ervin [80%] |
| 107 | FQP should support ws-notification |  |  |  | 8d → 9d |  | resources none → David Ervin [80%] |
| 108 | DCQL fails when some target services are down |  |  |  | 9d → 10d |  | resources none → David Ervin [80%] |
| 109 | DCQL (FQP) should support query modifiers |  |  |  | 8d → 9d |  | resources none → David Ervin [80%] |
| 110 | Add additional utilities for working with query results |  |  |  | 8d → 9d |  | resources none → David Ervin [80%] |
| 111 | silent exceptions (no service properties from custom query processor) when adding a custom query processor using Introduce data extension |  |  |  | 8d → 9d |  | resources none → David Ervin [80%] |
| 112 | Finish |  |  |  | 8d → 9d |  | was named End |
| 115 | Grid Grouper Introduce Authorization Extension |  |  |  | 8d → 9d |  | resources none → Shannon Hastings [80%] |
| 116 | CSM Introduce Authorization Extension |  |  |  |  | none → 114 | resources none → Shannon Hastings [80%] |
| 117 | ivy support for introduce-created projects |  |  |  | 8d → 9d |  | resources none → Shannon Hastings [80%] |
| 118 | Terminology Metadata Service Extension |  |  |  | 8d → 9d |  | resources none → Shannon Hastings [80%] |
| 119 | Need a way to hook in pre-deployment validation checks to enforce policy |  |  |  | 8d → 9d |  | resources none → Shannon Hastings [80%] |
| 120 | Change the way schemas are loaded and resolved by introduce. |  |  |  | 8d → 9d |  | resources none → Shannon Hastings [80%] |
| 121 | Introduce extension for creating cagrid core services |  |  |  | 8d → 9d |  | resources none → Shannon Hastings [80%] |
| 122 | Introduce Software Update needs re-engineered |  |  |  | 8d → 9d |  | resources none → Shannon Hastings [80%] |
| 123 | Improve Introduce usability when adding extensions or service contexts |  |  |  | 8d → 9d |  | resources none → Shannon Hastings [80%] |
| 124 | Introduce services which support persistence are hard to customize persistence on the resource itself |  |  |  | 8d → 9d |  | resources none → Shannon Hastings [80%] |
| 125 | Introduce client code should be more override friendly |  |  |  | 8d → 9d |  | resources none → Shannon Hastings [80%] |
| 126 | Introduce clients do not set user credential when returning client handle to stateful resources |  |  |  | 8d → 9d |  | resources none → Shannon Hastings [80%] |
| 127 | Introduce Service tab should use tooltips in the jtree |  |  |  |  |  | resources none → Shannon Hastings [80%] |
| 128 | Introduce Feature Freeze (milestone) |  |  |  | 2d → 3d | none → 114 | resources none → Shannon Hastings [80%] |
| 129 | Introduce Upgraders (1.1->1.3) |  |  |  |  | none → 114 | resources none → Shannon Hastings [80%] |
| 130 | Introduce Upgraders (1.2->1.3) |  |  |  |  | none → 114 | resources none → Shannon Hastings [80%] |
| 131 | Problem with Anonymous Security Setting |  |  |  |  | none → 114 | resources none → Shannon Hastings [80%] |
| 132 | Finish |  |  |  | 8d → 9d | 120, 121, 122, 123, 124, 125, 126, 115, 117, 119, 118 → 120, 121, 122, 123, 124, 125, 126, 115, 117, 119, 118, 116, 127, 128, 129, 130, 131 |  |
| 135 | Support multiple authentication profile |  |  |  | 8d → 9d |  | resources none → Steve Langella [80%] |
| 136 | Authentication Profile Service Metadata |  |  |  | 8d → 9d |  | resources none → Steve Langella [80%] |
| 137 | Update GAARDS UI to leverage new Authentication Profile / Trusted IdP metadata |  |  |  | 8d → 9d |  | resources none → Steve Langella [80%] |
| 138 | Develop system integration tests for the Authentication Service |  |  |  |  |  | resources none → Steve Langella [80%] |
| 139 | Develop system integration tests for the GTS |  |  |  |  |  | resources none → Steve Langella [80%] |
| 140 | SyncGTS needs to use service property for sync description |  |  |  |  |  | resources none → Steve Langella [80%] |
| 141 | API to discover trusted IDs (Use case for caB2B security requirements) |  |  |  |  |  | resources none → Steve Langella [80%] |
| 142 | Service Security Client needs a way to say to always use credential |  |  |  |  |  | resources none → Steve Langella [80%] |
| 143 | Spring enable Dorian |  |  |  |  |  | resources none → Steve Langella [80%] |
| 144 | Implement new Authentication Service interface |  |  |  |  |  | resources none → Steve Langella [80%] |
| 145 | Add Authentication Profile Metadata to Dorian. |  |  |  |  |  | resources none → Steve Langella [80%] |
| 146 | Extend Trusted Identity Provider information to include information regarding the IdP's Authentication Service |  |  |  |  |  | resources none → Steve Langella [80%] |
| 147 | Add Trusted IdP metadata to Dorian |  |  |  |  |  | resources none → Steve Langella [80%] |
| 148 | Move from issuing Proxy Certificates to Issuing short term certificates. |  |  |  |  | none → 134 | resources none → Steve Langella [80%] |
| 149 | Enable Dorian Host Certificates to work with new version of IE and Firefox |  |  |  |  | none → 134 | resources none → Steve Langella [80%] |
| 150 | Add Account Audting to Dorian |  |  |  |  | none → 134 | resources none → Steve Langella [80%] |
| 151 | Reformat GAARDS UI to display properly on the MAC |  |  |  |  | none → 134 | resources none → Steve Langella [80%] |
| 152 | Finish | 2008-07-17 → 2008-07-30 (+13d) | 2008-07-17 → 2008-07-30 (+13d) |  | 8d → 0d | 135, 136, 137 → 135, 136, 137, 138, 139, 140, 141, 142, 143, 144, 145, 146, 147, 148, 149, 150, 151 | was named End |
| 155 | WSRF.NET (support) |  |  |  | 8d → 9d |  | resources none → Shannon Hastings [80%] |
| 156 | FInish |  |  |  | 9d → 10d | 155, Identifiers (support), Metrics Service → 155 | was named End |
| 159 | Update Administrator Guide |  |  |  | 9d → 10d |  | resources none → Carolyn Klinger |
| 160 | Update Install Guide |  |  |  | 9d → 10d |  | resources none → Carolyn Klinger |
| 161 | Update User Guide |  |  |  | 6d → 7d |  | resources none → Carolyn Klinger |
| 162 | Update design documents |  |  |  | 6d → 7d |  | resources none → Scott Oster [50%]; Steve Langella [80%]; Shannon Hastings [80%]; David Ervin [80%] |
| 163 | Update caGrid overview |  |  |  | 6d → 7d |  | resources none → Scott Oster [50%]; John Eisenschmidt |
| 164 | Update wiki |  |  |  | 6d → 7d |  | resources none → Scott Oster [50%]; Steve Langella [80%]; Shannon Hastings [80%]; David Ervin [80%] |
| 166 | **Quality Assurance** |  | 2008-07-24 → 2008-07-31 (+7d) | 6d? → 11d? | 4d → 0d |  |  |
| 168 | Test GME |  |  |  | 8d → 9d |  | resources none → Quality Assurance |
| 169 | Test caDSR Replacement |  |  |  | 8d → 9d |  | resources none → Quality Assurance |
| 170 | Test WebSSO |  |  |  | 8d → 9d |  | resources none → Quality Assurance |
| 171 | Test release on new tech stack |  |  |  | 8d → 9d |  | resources none → Quality Assurance |
| 172 | Test Introduce |  |  |  | 8d → 9d |  | resources none → Quality Assurance |
| 173 | Test Security | 2008-07-18 → 2008-07-31 (+13d) | 2008-07-18 → 2008-07-31 (+13d) |  | 8d → 0d |  | resources none → Quality Assurance |
| 174 | Test WSRF.NET |  |  |  | 8d → 9d |  | resources none → Quality Assurance |
| 175 | Test Identifiers | 2008-07-18 → 2008-07-17 (-1d) | 2008-07-18 → 2008-07-17 (-1d) |  | 8d → 10d | 167, Identifiers (support) → 167 | resources none → Quality Assurance |
| 176 | Test Metrics | 2008-07-18 → 2008-07-17 (-1d) | 2008-07-18 → 2008-07-17 (-1d) |  | 8d → 10d | 167, Metrics Service → 167 | resources none → Quality Assurance |

| ID | Task | Start | Finish | Duration | Total float | Predecessors | Other |
| --- | --- | --- | --- | --- | --- | --- | --- |
| 177 | Test Data Services |  |  |  | 8d → 9d |  | resources none → Quality Assurance |
| 178 | Test caGrid 1.3 Grid Services | 2008-07-23 → 2008-07-21 (-2d) | 2008-07-23 → 2008-07-21 (-2d) |  | 4d → 7d |  | resources none → Quality Assurance |
| 179 | Test QA integration scenarios | 2008-07-24 → 2008-07-22 (-2d) | 2008-07-24 → 2008-07-22 (-2d) |  | 4d → 7d |  | resources none → Quality Assurance |
| 180 | Finish | 2008-07-24 → 2008-07-22 (-2d) | 2008-07-24 → 2008-07-22 (-2d) |  | 4d → 7d |  | resources none → Quality Assurance |
| 181 | **Deployment** |  | 2008-07-30 → 2008-07-22 (-8d) | 10d? → 4d? | 0d → 7d |  |  |
| 183 | Create release notes |  |  |  | 0d → 9d |  | resources none → Scott Oster [50%] |
| 184 | Create 1.3 target_grid configurations |  |  |  | 0d → 9d |  | resources none → Scott Oster [50%] |
| 185 | **Create 1.3 release branch in CVS** | 2008-07-21 → 2008-07-17 (-4d) | 2008-07-21 → 2008-07-17 (-4d) |  | 0d → 7d | 184 → none |  |
| 186 | Update project versions | 2008-07-21 → 2008-07-17 (-4d) | 2008-07-21 → 2008-07-17 (-4d) |  | 0d → 7d | none → 182 | resources none → Scott Oster [50%] |
| 187 | update eclipse projects | 2008-07-21 → 2008-07-17 (-4d) | 2008-07-21 → 2008-07-17 (-4d) |  | 7d → 10d | none → 182 | resources none → Scott Oster [50%] |
| 188 | remove any projects which wont be released in 1.3 | 2008-07-21 → 2008-07-17 (-4d) | 2008-07-21 → 2008-07-17 (-4d) |  | 7d → 10d | none → 182 | resources none → Scott Oster [50%] |
| 189 | Update LICENSE |  |  |  | 9d → 10d | none → 182 | resources none → John Eisenschmidt |
| 190 | Update core caGrid Services using Introduce 1.3 | 2008-07-22 → 2008-07-18 (-4d) | 2008-07-22 → 2008-07-18 (-4d) |  | 0d → 7d |  | resources none → Shannon Hastings [80%] |
| 191 | Validate core services' metadata |  |  |  | 9d → 10d | none → 182 |  |
| 192 | publish release IVY repositories |  |  |  | 9d → 10d | none → 182 |  |
| 193 | create installer release |  |  |  | 9d → 10d | none → 182 |  |
| 194 | post installer properties file to FTP site |  |  |  | 9d → 10d | none → 182 |  |
| 195 | create gforge release |  |  |  | 9d → 10d | none → 182 | resources none → John Eisenschmidt |
| 196 | Write Deployment Instructions |  |  |  | 3d → 10d |  | resources none → Steve Langella [80%] |
| 197 | Redeploy QA Grid | 2008-07-25 → 2008-07-17 (-8d) | 2008-07-25 → 2008-07-17 (-8d) |  | 0d → 7d | Package Release into Installer → none | resources none → Quality Assurance |
| 198 | Redeploy Training Grid | 2008-07-25 → 2008-07-17 (-8d) | 2008-07-25 → 2008-07-17 (-8d) |  | 3d → 10d | Package Release into Installer → none | resources none → Steve Langella [80%]; Scott Oster [50%] |
| 199 | Redeploy Staging Grid | 2008-07-28 → 2008-07-18 (-10d) | 2008-07-28 → 2008-07-18 (-10d) |  | 0d → 7d |  | resources none → Systems |
| 200 | Redeploy Production Grid | 2008-07-29 → 2008-07-21 (-8d) | 2008-07-29 → 2008-07-21 (-8d) |  | 0d → 7d |  | resources none → Systems |
| 201 | Update Zope / Plome | 2008-07-24 → 2008-07-17 (-7d) | 2008-07-24 → 2008-07-17 (-7d) |  | 4d → 10d | Create Release → none | resources none → John Eisenschmidt |
| 202 | Update gforge | 2008-07-24 → 2008-07-17 (-7d) | 2008-07-24 → 2008-07-17 (-7d) |  | 4d → 10d | Create Release → none | resources none → John Eisenschmidt |
| 203 | Send Release Announcement | 2008-07-30 → 2008-07-22 (-8d) | 2008-07-30 → 2008-07-22 (-8d) |  | 0d → 7d |  | resources none → John Eisenschmidt |
| 204 | Finish | 2008-07-30 → 2008-07-22 (-8d) | 2008-07-30 → 2008-07-22 (-8d) |  | 0d → 7d | 190, 196, Workflow Service in Release, Portal in Release, Create Release, Package Release into Installer, 197, 198, 199, 200, 201, 202, 203 → 190, 196, 197, 198, 199, 200, 201, 202, 203, 189, 191, 192, 193, 194, 195 |  |

## Version 4 (saved 2008-08-29)

Note of the change: update of resourcing

Last finish stays 2008-07-31. Complete tasks 8 → 9.

Changed:

| ID | Task | Start | Finish | Duration | Complete | Total float | Other |
| --- | --- | --- | --- | --- | --- | --- | --- |
| 39 | **caCORE Integration** |  | 2008-07-17 → 2008-07-18 (+1d) | 1d? → 2d? |  | 10d → 9d |  |
| 45 | Introduce upgrade to SDK 4.1 |  | 2008-07-17 → 2008-07-18 (+1d) | 1d? → 2d? |  | 10d → 9d | resources Shannon Hastings → Scott Oster [50%] |
| 47 | XMI Reader API Integration in Introduce |  | 2008-07-17 → 2008-07-18 (+1d) | 1d? → 1.25d? |  | 10d → 9.75d | resources Shannon Hastings → David Ervin [80%] |
| 48 | Finish | 2008-07-17 → 2008-07-18 (+1d) | 2008-07-17 → 2008-07-18 (+1d) |  |  | 10d → 9d |  |
| 49 | **Bug Fixes** |  | 2008-07-17 → 2008-07-18 (+1d) | 1d? → 1.25d? | 4% → 9% | 10d → 9.75d |  |
| 67 | caGrid authentication service authentications fail after change of password on NCI LDAP | 2008-07-17 A | 2008-07-17 A |  | 0% → 100% | 10d → none |  |
| 70 | Multiple services using WS-Enumeration cannot run in same container |  | 2008-07-17 → 2008-07-18 (+1d) | 1d? → 1.25d? |  | 10d → 9.75d | resources Shannon Hastings → David Ervin [80%] |
| 74 | Finish | 2008-07-17 → 2008-07-18 (+1d) | 2008-07-17 → 2008-07-18 (+1d) |  |  | 10d → 9.75d |  |
| 157 | **Documentation** |  |  | 4d? → 3.26d? |  | 7d → 7.74d |  |
| 160 | Update Install Guide |  |  | 1d? → 0.26d? |  | 10d → 10.74d | resources Carolyn Klinger → Carolyn Klinger; Steve Langella [80%]; Scott Oster [50%]; Shannon Hastings [80%]; David Ervin [80%] |
| 161 | Update User Guide |  |  | 1d? → 0.26d? |  | 7d → 7.74d | resources Carolyn Klinger → Carolyn Klinger; David Ervin [80%]; Scott Oster [50%]; Shannon Hastings [80%]; Steve Langella [80%] |
| 162 | Update design documents | 2008-07-18 → 2008-07-17 (-1d) |  |  |  | 7d → 7.74d |  |
| 163 | Update caGrid overview | 2008-07-21 → 2008-07-18 (-3d) |  |  |  | 7d → 7.74d |  |
| 164 | Update wiki | 2008-07-22 → 2008-07-21 (-1d) |  |  |  | 7d → 7.74d |  |
| 178 | Test caGrid 1.3 Grid Services | 2008-07-21 → 2008-07-18 (-3d) |  |  |  | 7d → 7.72d |  |
| 179 | Test QA integration scenarios | 2008-07-22 → 2008-07-21 (-1d) |  |  |  | 7d → 7.72d |  |
| 190 | Update core caGrid Services using Introduce 1.3 |  |  | 1d? → 0.28d? |  | 7d → 7.72d | resources Shannon Hastings [80%] → Shannon Hastings [80%]; Steve Langella [80%]; Scott Oster [50%]; David Ervin [80%] |
| 191 | Validate core services' metadata |  |  |  |  |  | resources none → Shannon Hastings [80%]; Steve Langella [80%]; Scott Oster [50%]; David Ervin [80%] |
| 192 | publish release IVY repositories |  |  |  |  |  | resources none → Scott Oster [50%] |
| 193 | create installer release |  |  |  |  |  | resources none → Scott Oster [50%] |
| 194 | post installer properties file to FTP site |  |  |  |  |  | resources none → Scott Oster [50%]; Systems |
| 195 | create gforge release |  | 2008-07-17 → 2008-07-18 (+1d) | 1d? → 2d? |  | 10d → 9d | resources John Eisenschmidt → Scott Oster [50%] |
| 196 | Write Deployment Instructions |  |  | 1d? → 0.62d? |  | 10d → 10.38d | resources Steve Langella [80%] → Steve Langella [80%]; Scott Oster [50%] |

## Version 5 (saved 2008-09-09)

Last finish stays 2008-07-31.

Added:

| ID | Task | Duration | Start | Finish | Predecessors | Resources |
| --- | --- | --- | --- | --- | --- | --- |
| 74 | Gaards UI throws an error popup that makes the UI unusable | 1d? | 2008-07-17 | 2008-07-17 | 50 | Steve Langella [80%] |

Changed:

| ID | Task | Start | Finish | Duration | Complete | Total float | Predecessors |
| --- | --- | --- | --- | --- | --- | --- | --- |
| 1 | **Gold Compatibility** |  | 2008-07-17 → 2008-07-23 (+6d) | 1d? → 5d? |  | 9d → 6d |  |
| 18 | Migration of code depenedencies on caDSR grid service (Introduce extensions) |  |  |  |  |  | none → 15 |
| 20 | Finish |  |  |  |  |  | 16, 17, 19 → 16, 17, 19, 18 |
| 21 | **Make Core Services Gold Compatible** |  | 2008-07-17 → 2008-07-23 (+6d) | 1d? → 5d? |  | 10d → 6d |  |
| 24 | **Register Object and Metadata Models** |  | 2008-07-17 → 2008-07-23 (+6d) | 1d? → 5d |  | 10d → 6d |  |
| 26 | CQL |  | 2008-07-17 → 2008-07-23 (+6d) | 1d? → 5d |  | 10d → 6d |  |
| 27 | CQL Results |  | 2008-07-17 → 2008-07-18 (+1d) | 1d? → 2d |  | 10d → 9d |  |
| 28 | Service Metadata |  | 2008-07-17 → 2008-07-18 (+1d) | 1d? → 2d |  | 10d → 9d |  |
| 29 | Security Metadata |  | 2008-07-17 → 2008-07-18 (+1d) | 1d? → 2d |  | 10d → 9d |  |
| 30 | Data Services Object Model |  | 2008-07-17 → 2008-07-18 (+1d) | 1d? → 2d |  | 10d → 9d |  |
| 31 | Finish | 2008-07-17 → 2008-07-23 (+6d) | 2008-07-17 → 2008-07-23 (+6d) |  |  | 10d → 6d |  |
| 32 | Finish | 2008-07-17 → 2008-07-23 (+6d) | 2008-07-17 → 2008-07-23 (+6d) |  |  | 10d → 6d |  |
| 49 | **Bug Fixes** |  | 2008-07-18 → 2008-07-17 (-1d) | 1.25d? → 1d? | 9% → 8% | 9.75d → 10d |  |
| 69 | Remove references to log4j in projects and only use commons logging |  |  | 0.29d? → 1d? |  | 10.71d → 10d |  |
| 70 | Multiple services using WS-Enumeration cannot run in same container |  | 2008-07-18 → 2008-07-17 (-1d) | 1.25d? → 1d? |  | 9.75d → 10d |  |
| 75 | Finish | 2008-07-18 → 2008-07-17 (-1d) | 2008-07-18 → 2008-07-17 (-1d) |  |  | 9.75d → 10d | 51, 52, 53, 54, 55, 56, 57, 58, 59, 60, 61, 62, 63, 64, 65, 66, 67, 68, 69, 70, 71, 72, 73 → 51, 52, 53, 54, 55, 56, 57, 58, 59, 60, 61, 62, 63, 64, 65, 66, 67, 68, 69, 70, 71, 72, 74, 73 |
| 182 | **Deployment** |  | 2008-07-22 → 2008-07-25 (+3d) | 4d? → 6.28d? |  | 7d → 4.72d |  |
| 194 | create installer release | 2008-07-17 → 2008-07-18 (+1d) | 2008-07-17 → 2008-07-21 (+4d) |  |  | 10d → 4.72d | 183 → 190, 191 |
| 198 | Redeploy QA Grid | 2008-07-17 → 2008-07-21 (+4d) | 2008-07-17 → 2008-07-22 (+5d) |  |  | 7d → 4.72d | none → 194 |
| 199 | Redeploy Training Grid | 2008-07-17 → 2008-07-21 (+4d) | 2008-07-17 → 2008-07-22 (+5d) |  |  | 10d → 6.72d | none → 194 |
| 200 | Redeploy Staging Grid | 2008-07-18 → 2008-07-22 (+4d) | 2008-07-18 → 2008-07-23 (+5d) |  |  | 7d → 4.72d |  |
| 201 | Redeploy Production Grid | 2008-07-21 → 2008-07-23 (+2d) | 2008-07-21 → 2008-07-24 (+3d) |  |  | 7d → 4.72d |  |
| 202 | Update Zope / Plome |  |  |  |  |  | none → 183 |
| 203 | Update gforge |  |  |  |  |  | none → 183 |
| 204 | Send Release Announcement | 2008-07-22 → 2008-07-24 (+2d) | 2008-07-22 → 2008-07-25 (+3d) |  |  | 7d → 4.72d | 201 → 201, 202, 203, 199, 196, 192, 193 |
| 205 | Finish | 2008-07-22 → 2008-07-25 (+3d) | 2008-07-22 → 2008-07-25 (+3d) |  |  | 7d → 4.72d | 191, 197, 198, 199, 200, 201, 202, 203, 204, 190, 192, 193, 194, 195, 196 → 204 |

## Version 6 (saved 2008-09-14)

Last finish 2008-07-31 → 2008-08-27 (+27d). Complete tasks 9 → 11.

Added:

| ID | Task | Duration | Start | Finish | Predecessors | Resources |
| --- | --- | --- | --- | --- | --- | --- |
| 116 | Refactor Introduce Security | 10d | 2008-07-17 A | 2008-07-30 A | 115 | Shannon Hastings [80%] |

Removed: 119 Terminology Metadata Service Extension

Changed:

| ID | Task | Start | Finish | Duration | Complete | Total float | Predecessors | Other |
| --- | --- | --- | --- | --- | --- | --- | --- | --- |
| 2 | **GME Rewrite** |  | 2008-07-17 → 2008-07-18 (+1d) | 1d? → 2d? |  | 9d → 27d |  | resources Scott Oster [50%] → none |
| 4 | MySQL 5.0 Support | 2008-07-17 → 2008-07-18 (+1d) | 2008-07-17 → 2008-07-18 (+1d) |  |  | 9d → 27d |  |  |
| 5 | Schemas with Cycles | 2008-07-17 → 2008-07-18 (+1d) | 2008-07-17 → 2008-07-18 (+1d) |  |  | 9d → 27d |  |  |
| 6 | Schemas with Includes/Redefines | 2008-07-17 → 2008-07-18 (+1d) | 2008-07-17 → 2008-07-18 (+1d) |  |  | 9d → 27d |  |  |
| 7 | URI Valid as Namespace | 2008-07-17 → 2008-07-18 (+1d) | 2008-07-17 → 2008-07-18 (+1d) |  |  | 9d → 27d |  |  |
| 8 | Metadata and WSDL reflect service operations | 2008-07-17 → 2008-07-18 (+1d) | 2008-07-17 → 2008-07-18 (+1d) |  |  | 9d → 27d |  |  |
| 9 | Update/Delete non-production schemas | 2008-07-17 → 2008-07-18 (+1d) | 2008-07-17 → 2008-07-18 (+1d) |  |  | 9d → 27d |  |  |
| 10 | Associate Arbitrarty Metadata or Annotations | 2008-07-17 → 2008-07-18 (+1d) | 2008-07-17 → 2008-07-18 (+1d) |  |  | 9d → 27d |  |  |
| 11 | Validate that XML conforms to schema in GME | 2008-07-17 → 2008-07-18 (+1d) | 2008-07-17 → 2008-07-18 (+1d) |  |  | 9d → 27d |  |  |
| 12 | Non-RFE Development | 2008-07-17 → 2008-07-18 (+1d) | 2008-07-17 → 2008-07-18 (+1d) |  |  | 9d → 27d |  |  |
| 13 | Finish | 2008-07-17 → 2008-07-18 (+1d) | 2008-07-17 → 2008-07-18 (+1d) |  |  | 9d → 27d |  |  |
| 14 | **caDSR Grid Service Replacement** |  | 2008-07-17 → 2008-07-18 (+1d) | 1d? → 2d? |  | 9d → 27d |  | resources Scott Oster [50%] → none |
| 16 | Design | 2008-07-17 → 2008-07-18 (+1d) | 2008-07-17 → 2008-07-18 (+1d) |  |  | 9d → 27d |  |  |
| 17 | Development | 2008-07-17 → 2008-07-18 (+1d) | 2008-07-17 → 2008-07-18 (+1d) |  |  | 9d → 27d |  |  |
| 18 | Migration of code depenedencies on caDSR grid service (Introduce extensions) | 2008-07-17 → 2008-07-18 (+1d) | 2008-07-17 → 2008-07-18 (+1d) |  |  | 10d → 27d |  |  |
| 19 | Developer Testing | 2008-07-17 → 2008-07-18 (+1d) | 2008-07-17 → 2008-07-18 (+1d) |  |  | 9d → 27d |  |  |
| 20 | Finish | 2008-07-17 → 2008-07-18 (+1d) | 2008-07-17 → 2008-07-18 (+1d) |  |  | 9d → 27d |  |  |
| 23 | Identify Services to be made Gold Compatible | 2008-07-17 → 2008-07-18 (+1d) | 2008-07-17 → 2008-07-18 (+1d) |  |  | 10d → 28d |  |  |
| 39 | **caCORE Integration** |  | 2008-07-18 → 2008-08-07 (+20d) | 2d? → 16d |  | 9d → 14d |  |  |
| 41 | Implementation of Common Testing between Grid and SDK |  | 2008-07-17 → 2008-08-06 (+20d) | 1d? → 15d |  | 10d → 15d |  |  |
| 42 | Identify modeling gaps/requirements for the analytical/data service |  | 2008-07-17 → 2008-07-30 (+13d) | 1d? → 10d |  | 10d → 20d |  |  |
| 43 | CQL/CQL2 Integration in SDK |  | 2008-07-17 → 2008-08-06 (+20d) | 1d? → 15d |  | 10d → 15d |  |  |
| 44 | Data Service plug-in for SDK 4.1 |  | 2008-07-17 → 2008-07-30 (+13d) | 1d? → 10d |  | 10d → 20d |  |  |
| 45 | Introduce upgrade to SDK 4.1 | 2008-07-17 → 2008-07-18 (+1d) | 2008-07-18 → 2008-08-07 (+20d) | 2d? → 15d |  | 9d → 14d |  |  |
| 46 | Proxy Framework and XML serialization integration in Grid Service |  | 2008-07-17 → 2008-07-23 (+6d) | 1d? → 5d |  | 10d → 25d |  |  |
| 47 | XMI Reader API Integration in Introduce |  | 2008-07-18 → 2008-07-23 (+5d) | 1.25d? → 5d |  | 9.75d → 25d |  |  |
| 48 | Finish | 2008-07-18 → 2008-08-07 (+20d) | 2008-07-18 → 2008-08-07 (+20d) |  |  | 9d → 14d |  |  |
| 49 | **Bug Fixes** |  | 2008-07-17 → 2008-07-18 (+1d) | 1d? → 2d? |  | 10d → 28d |  |  |
| 55 | caDSR Grid Service API does not provide access to semantic metadata (concept codes) | 2008-07-17 → 2008-07-18 (+1d) | 2008-07-17 → 2008-07-18 (+1d) |  |  | 10d → 28d |  |  |
| 58 | caDSR Type Browser doesn't let you correct a namespace that is invalid (as opposed to not found) | 2008-07-17 → 2008-07-18 (+1d) | 2008-07-17 → 2008-07-18 (+1d) |  |  | 10d → 28d |  |  |
| 69 | Remove references to log4j in projects and only use commons logging |  | 2008-07-17 → 2008-07-18 (+1d) | 1d? → 2d? |  | 10d → 28d |  |  |
| 75 | Finish | 2008-07-17 → 2008-07-18 (+1d) | 2008-07-17 → 2008-07-18 (+1d) |  |  | 10d → 28d |  |  |
| 91 | **Continuous Integration** |  | 2008-07-17 → 2008-07-18 (+1d) | 1d? → 2d? |  | 9d → 28d |  |  |
| 94 | **Update installer** | 2008-07-17 → 2008-07-18 (+1d) | 2008-07-17 → 2008-07-18 (+1d) |  |  | 10d → 28d |  |  |
| 95 | integrate latest portal release | 2008-07-17 → 2008-07-18 (+1d) | 2008-07-17 → 2008-07-18 (+1d) |  |  | 10d → 28d |  |  |
| 96 | integrate WF client release? | 2008-07-17 → 2008-07-18 (+1d) | 2008-07-17 → 2008-07-18 (+1d) |  |  | 10d → 28d |  |  |
| 97 | updates for tech stack (tomcat versions, etc) | 2008-07-17 → 2008-07-18 (+1d) | 2008-07-17 → 2008-07-18 (+1d) |  |  | 10d → 28d |  |  |
| 99 | Common caBIG Ivy Repository |  | 2008-07-17 → 2008-07-18 (+1d) | 1d? → 2d? |  | 10d → 28d |  |  |
| 100 | Remove old EVS grid service | 2008-07-17 → 2008-07-18 (+1d) | 2008-07-17 → 2008-07-18 (+1d) |  |  | 10d → 28d |  |  |
| 101 | Remove old caDSR grid service | 2008-07-17 → 2008-07-18 (+1d) | 2008-07-17 → 2008-07-18 (+1d) |  |  | 10d → 28d |  |  |
| 102 | Finish | 2008-07-17 → 2008-07-18 (+1d) | 2008-07-17 → 2008-07-18 (+1d) |  |  | 10d → 28d |  |  |
| 103 | **Data Services** |  | 2008-07-17 → 2008-08-06 (+20d) | 1d? → 15d |  | 9d → 14d |  |  |
| 105 | CQL/CQL2 Integration in SDK |  | 2008-07-17 → 2008-08-06 (+20d) | 1d? → 15d |  | 9d → 14d |  |  |
| 106 | FQP should support delegation |  | 2008-07-17 → 2008-07-23 (+6d) | 1d? → 5d |  | 9d → 24d |  |  |
| 107 | FQP should support BDT transfer of results |  | 2008-07-17 → 2008-07-30 (+13d) | 1d? → 10d |  | 9d → 19d |  |  |
| 108 | FQP should support ws-notification |  | 2008-07-17 → 2008-07-23 (+6d) | 1d? → 5d |  | 9d → 24d |  |  |
| 109 | DCQL fails when some target services are down |  | 2008-07-17 → 2008-07-23 (+6d) | 1d? → 5d |  | 10d → 24d | none → 104 |  |
| 110 | DCQL (FQP) should support query modifiers |  | 2008-07-17 → 2008-07-30 (+13d) | 1d? → 10d |  | 9d → 19d |  |  |
| 111 | Add additional utilities for working with query results |  | 2008-07-17 → 2008-07-23 (+6d) | 1d? → 5d |  | 9d → 24d |  |  |
| 112 | silent exceptions (no service properties from custom query processor) when adding a custom query processor using Introduce data extension |  | 2008-07-17 → 2008-07-18 (+1d) | 1d? → 2d |  | 9d → 27d |  |  |
| 113 | Finish | 2008-07-17 → 2008-08-06 (+20d) | 2008-07-17 → 2008-08-06 (+20d) |  |  | 9d → 14d | 105, 106, 107, 108, 110, 111, 112 → 105, 106, 107, 108, 110, 111, 112, 109 |  |
| 114 | **Introduce** | 2008-07-17 A | 2008-07-17 → 2008-08-14 (+28d) | 1d? → 21d? | 0% → 11% | 7.72d → 8d |  |  |
| 115 | Start | 2008-07-17 A | 2008-07-17 A |  | 0% → 100% | 7.72d → none |  |  |
| 117 | Grid Grouper Introduce Authorization Extension | 2008-07-17 → 2008-07-31 (+14d) | 2008-07-17 → 2008-08-13 (+27d) | 1d? → 10d |  | 9d → 4.72d | 115 → 115, 116 |  |
| 118 | CSM Introduce Authorization Extension | 2008-07-17 → 2008-07-31 (+14d) | 2008-07-17 → 2008-08-13 (+27d) | 1d? → 10d |  | 9d → 4.72d | 115 → 115, 116 |  |
| 119 | ivy support for introduce-created projects |  | 2008-07-17 → 2008-07-30 (+13d) | 1d? → 10d |  | 9d → 14.72d |  |  |
| 120 | Need a way to hook in pre-deployment validation checks to enforce policy |  | 2008-07-17 → 2008-07-30 (+13d) | 1d? → 10d |  | 9d → 14.72d |  |  |
| 124 | Improve Introduce usability when adding extensions or service contexts |  | 2008-07-17 → 2008-07-22 (+5d) | 1d? → 4d |  | 9d → 20.72d |  |  |
| 125 | Introduce services which support persistence are hard to customize persistence on the resource itself |  | 2008-07-17 → 2008-07-30 (+13d) | 1d? → 10d |  | 9d → 14.72d |  |  |
| 126 | Introduce client code should be more override friendly |  | 2008-07-17 → 2008-07-30 (+13d) | 1d? → 10d |  | 9d → 14.72d |  |  |
| 127 | Introduce clients do not set user credential when returning client handle to stateful resources |  | 2008-07-17 → 2008-07-23 (+6d) | 1d? → 5d |  | 9d → 19.72d |  |  |
| 128 | Introduce Service tab should use tooltips in the jtree |  | 2008-07-17 → 2008-07-23 (+6d) | 1d? → 5d |  | 9d → 19.72d |  |  |
| 129 | Introduce Feature Freeze (milestone) | 2008-07-17 → 2008-08-13 (+27d) | 2008-07-17 → 2008-08-13 (+27d) | 1d? → 0d |  | 7.72d → 4.72d | 115 → 116, 117, 118, 119, 120, 121, 122, 123, 124, 125, 126, 127, 128 |  |
| 130 | Introduce Upgraders (1.1->1.3) | 2008-07-17 → 2008-08-14 (+28d) | 2008-07-17 → 2008-08-14 (+28d) |  |  | 9d → 8d | 115 → 129 |  |
| 131 | Introduce Upgraders (1.2->1.3) | 2008-07-17 → 2008-08-14 (+28d) | 2008-07-17 → 2008-08-14 (+28d) |  |  | 9d → 8d | 115 → 129 |  |
| 132 | Problem with Anonymous Security Setting | 2008-07-17 → 2008-08-14 (+28d) | 2008-07-17 → 2008-08-14 (+28d) |  |  | 9d → 8d | 115 → 129 |  |
| 133 | Finish | 2008-07-17 → 2008-08-14 (+28d) | 2008-07-17 → 2008-08-14 (+28d) |  |  | 9d → 8d | 121, 122, 123, 124, 125, 126, 127, 117, 119, 120, Terminology Metadata Service Extension, 118, 128, 129, 130, 131, 132 → 130, 131, 132 |  |
| 134 | **Security** |  | 2008-07-30 → 2008-08-26 (+27d) | 10d? → 29d | 6% → 4% |  |  |  |
| 136 | Support multiple authentication profile |  | 2008-07-17 → 2008-07-23 (+6d) | 1d? → 5d |  | 9d → 24d |  |  |
| 137 | Authentication Profile Service Metadata |  | 2008-07-17 → 2008-07-18 (+1d) | 1d? → 2d |  | 9d → 27d |  |  |

| ID | Task | Start | Finish | Duration | Total float |
| --- | --- | --- | --- | --- | --- |
| 138 | Update GAARDS UI to leverage new Authentication Profile / Trusted IdP metadata |  |  | 1d? → 1d | 9d → 28d |
| 139 | Develop system integration tests for the Authentication Service |  | 2008-07-17 A → 2008-07-21 A (+4d) | 1d? → 3d |  |
| 140 | Develop system integration tests for the GTS | 2008-07-18 → 2008-07-22 (+4d) | 2008-07-18 → 2008-08-04 (+17d) | 1d? → 10d |  |
| 141 | SyncGTS needs to use service property for sync description | 2008-07-21 → 2008-08-05 (+15d) | 2008-07-21 → 2008-08-05 (+15d) | 1d? → 1d |  |
| 142 | API to discover trusted IDs (Use case for caB2B security requirements) | 2008-07-22 → 2008-08-06 (+15d) | 2008-07-22 → 2008-08-07 (+16d) | 1d? → 2d |  |
| 143 | Service Security Client needs a way to say to always use credential | 2008-07-23 → 2008-08-08 (+16d) | 2008-07-23 → 2008-08-08 (+16d) | 1d? → 1d |  |
| 144 | Spring enable Dorian | 2008-07-24 → 2008-08-11 (+18d) | 2008-07-24 → 2008-08-13 (+20d) | 1d? → 3d |  |
| 145 | Implement new Authentication Service interface | 2008-07-25 → 2008-08-14 (+20d) | 2008-07-25 → 2008-08-20 (+26d) | 1d? → 5d |  |
| 146 | Add Authentication Profile Metadata to Dorian. | 2008-07-28 → 2008-08-21 (+24d) | 2008-07-28 → 2008-08-21 (+24d) | 1d? → 1d |  |
| 147 | Extend Trusted Identity Provider information to include information regarding the IdP's Authentication Service | 2008-07-29 → 2008-08-22 (+24d) | 2008-07-29 → 2008-08-25 (+27d) | 1d? → 2d |  |
| 148 | Add Trusted IdP metadata to Dorian | 2008-07-30 → 2008-08-26 (+27d) | 2008-07-30 → 2008-08-26 (+27d) | 1d? → 1d |  |
| 149 | Move from issuing Proxy Certificates to Issuing short term certificates. |  | 2008-07-17 → 2008-07-30 (+13d) | 1d? → 10d | 9d → 19d |
| 150 | Enable Dorian Host Certificates to work with new version of IE and Firefox |  | 2008-07-17 → 2008-07-21 (+4d) | 1d? → 3d | 9d → 26d |
| 151 | Add Account Audting to Dorian |  | 2008-07-17 → 2008-07-30 (+13d) | 1d? → 10d | 9d → 19d |
| 152 | Reformat GAARDS UI to display properly on the MAC |  | 2008-07-17 → 2008-07-30 (+13d) | 1d? → 10d | 9d → 19d |
| 153 | Finish | 2008-07-30 → 2008-08-26 (+27d) | 2008-07-30 → 2008-08-26 (+27d) |  |  |
| 158 | **Documentation** |  | 2008-07-22 → 2008-07-23 (+1d) | 3.26d? → 4.26d? | 7.74d → 25.74d |
| 161 | Update Install Guide |  | 2008-07-17 → 2008-07-18 (+1d) | 0.26d? → 0.51d? | 10.74d → 28.74d |
| 162 | Update User Guide |  | 2008-07-17 → 2008-07-18 (+1d) | 0.26d? → 0.51d? | 7.74d → 25.74d |
| 163 | Update design documents | 2008-07-17 → 2008-07-18 (+1d) | 2008-07-18 → 2008-07-21 (+3d) |  | 7.74d → 25.74d |
| 164 | Update caGrid overview | 2008-07-18 → 2008-07-21 (+3d) | 2008-07-21 → 2008-07-22 (+1d) |  | 7.74d → 25.74d |
| 165 | Update wiki | 2008-07-21 → 2008-07-22 (+1d) | 2008-07-22 → 2008-07-23 (+1d) |  | 7.74d → 25.74d |
| 166 | Finish | 2008-07-22 → 2008-07-23 (+1d) | 2008-07-22 → 2008-07-23 (+1d) |  | 7.74d → 25.74d |
| 167 | **Quality Assurance** |  | 2008-07-31 → 2008-08-27 (+27d) | 11d? → 30d? |  |
| 169 | Test GME | 2008-07-18 → 2008-07-21 (+3d) | 2008-07-18 → 2008-07-21 (+3d) |  | 9d → 27d |
| 170 | Test caDSR Replacement | 2008-07-18 → 2008-07-21 (+3d) | 2008-07-18 → 2008-07-21 (+3d) |  | 9d → 27d |
| 173 | Test Introduce | 2008-07-18 → 2008-08-15 (+28d) | 2008-07-18 → 2008-08-15 (+28d) |  | 9d → 8d |
| 174 | Test Security | 2008-07-31 → 2008-08-27 (+27d) | 2008-07-31 → 2008-08-27 (+27d) |  |  |
| 178 | Test Data Services | 2008-07-18 → 2008-08-07 (+20d) | 2008-07-18 → 2008-08-07 (+20d) |  | 9d → 14d |
| 179 | Test caGrid 1.3 Grid Services | 2008-07-18 → 2008-08-14 (+27d) | 2008-07-21 → 2008-08-15 (+25d) |  |  |
| 180 | Test QA integration scenarios | 2008-07-21 → 2008-08-15 (+25d) | 2008-07-22 → 2008-08-18 (+27d) |  |  |
| 181 | Finish | 2008-07-22 → 2008-08-18 (+27d) | 2008-07-22 → 2008-08-18 (+27d) |  |  |
| 182 | **Deployment** |  | 2008-07-25 → 2008-08-21 (+27d) | 6.28d? → 25.28d? |  |
| 184 | Create release notes | 2008-07-17 → 2008-07-18 (+1d) | 2008-07-17 → 2008-07-18 (+1d) |  | 9d → 27d |
| 185 | Create 1.3 target_grid configurations | 2008-07-18 → 2008-07-21 (+3d) | 2008-07-18 → 2008-07-21 (+3d) |  | 9d → 27d |
| 186 | **Create 1.3 release branch in CVS** |  | 2008-07-17 → 2008-07-18 (+1d) | 1d? → 2d? | 4.72d → 23.72d |
| 188 | update eclipse projects | 2008-07-17 → 2008-07-18 (+1d) | 2008-07-17 → 2008-07-18 (+1d) |  | 10d → 28d |
| 189 | remove any projects which wont be released in 1.3 | 2008-07-17 → 2008-07-18 (+1d) | 2008-07-17 → 2008-07-18 (+1d) |  | 10d → 28d |
| 191 | Update core caGrid Services using Introduce 1.3 | 2008-07-18 → 2008-08-14 (+27d) | 2008-07-18 → 2008-08-14 (+27d) |  | 7.72d → 4.72d |
| 192 | Validate core services' metadata |  | 2008-07-17 → 2008-07-18 (+1d) | 1d? → 2d? | 10d → 27d |
| 193 | publish release IVY repositories | 2008-07-17 → 2008-07-18 (+1d) | 2008-07-17 → 2008-07-18 (+1d) |  | 10d → 27d |
| 194 | create installer release | 2008-07-18 → 2008-08-14 (+27d) | 2008-07-21 → 2008-08-15 (+25d) |  |  |
| 195 | post installer properties file to FTP site |  | 2008-07-17 → 2008-07-18 (+1d) | 1d? → 2d? | 10d → 28d |
| 196 | create gforge release | 2008-07-17 → 2008-07-18 (+1d) | 2008-07-18 → 2008-07-21 (+3d) |  | 9d → 26d |
| 197 | Write Deployment Instructions |  | 2008-07-17 → 2008-07-18 (+1d) | 0.62d? → 1.23d? | 10.38d → 28.38d |
| 198 | Redeploy QA Grid | 2008-07-21 → 2008-08-15 (+25d) | 2008-07-22 → 2008-08-18 (+27d) |  |  |
| 199 | Redeploy Training Grid | 2008-07-21 → 2008-08-15 (+25d) | 2008-07-22 → 2008-08-18 (+27d) |  |  |
| 200 | Redeploy Staging Grid | 2008-07-22 → 2008-08-18 (+27d) | 2008-07-23 → 2008-08-19 (+27d) |  |  |
| 201 | Redeploy Production Grid | 2008-07-23 → 2008-08-19 (+27d) | 2008-07-24 → 2008-08-20 (+27d) |  |  |
| 204 | Send Release Announcement | 2008-07-24 → 2008-08-20 (+27d) | 2008-07-25 → 2008-08-21 (+27d) |  |  |
| 205 | Finish | 2008-07-25 → 2008-08-21 (+27d) | 2008-07-25 → 2008-08-21 (+27d) |  |  |

## Version 7 (saved 2008-09-15)

Note of the change: loe updates

Last finish 2008-08-27 → 2008-08-29 (+2d).

Changed:

| ID | Task | Start | Finish | Duration | Complete | Total float | Other |
| --- | --- | --- | --- | --- | --- | --- | --- |
| 1 | **Gold Compatibility** |  | 2008-07-23 → 2008-08-14 (+22d) | 5d? → 21d? |  | 25d → 9.36d |  |
| 2 | **GME Rewrite** |  | 2008-07-18 → 2008-08-14 (+27d) | 2d? → 21d? |  | 27d → 9.36d |  |
| 5 | Schemas with Cycles |  | 2008-07-18 → 2008-07-28 (+10d) | 1d? → 6.25d? |  | 27d → 23.11d |  |
| 6 | Schemas with Includes/Redefines |  | 2008-07-18 → 2008-07-24 (+6d) | 1d? → 5d? |  | 27d → 24.36d |  |
| 9 | Update/Delete non-production schemas |  | 2008-07-18 → 2008-07-24 (+6d) | 1d? → 5d? |  | 27d → 24.36d |  |
| 10 | Associate Arbitrarty Metadata or Annotations |  | 2008-07-18 → 2008-07-31 (+13d) | 1d? → 10d? |  | 27d → 19.36d |  |
| 11 | Validate that XML conforms to schema in GME |  | 2008-07-18 → 2008-07-24 (+6d) | 1d? → 5d? |  | 27d → 24.36d |  |
| 12 | Non-RFE Development |  | 2008-07-18 → 2008-08-14 (+27d) | 1d? → 20d |  | 27d → 9.36d |  |
| 13 | Finish | 2008-07-18 → 2008-08-14 (+27d) | 2008-07-18 → 2008-08-14 (+27d) |  |  | 27d → 9.36d |  |
| 14 | **caDSR Grid Service Replacement** |  | 2008-07-18 → 2008-08-14 (+27d) | 2d? → 21d? |  | 27d → 9.36d |  |
| 16 | Design |  | 2008-07-18 → 2008-07-24 (+6d) | 1d? → 5d? |  | 27d → 24.36d |  |
| 17 | Development |  | 2008-07-18 → 2008-08-14 (+27d) | 1d? → 20d? |  | 27d → 9.36d |  |
| 18 | Migration of code depenedencies on caDSR grid service (Introduce extensions) |  | 2008-07-18 → 2008-07-24 (+6d) | 1d? → 5d? |  | 27d → 24.36d |  |
| 19 | Developer Testing |  | 2008-07-18 → 2008-07-24 (+6d) | 1d? → 5d? |  | 27d → 24.36d |  |
| 20 | Finish | 2008-07-18 → 2008-08-14 (+27d) | 2008-07-18 → 2008-08-14 (+27d) |  |  | 27d → 9.36d |  |
| 39 | **caCORE Integration** |  | 2008-08-07 → 2008-08-06 (-1d) | 16d → 15d |  | 14d → 16.36d |  |
| 45 | Introduce upgrade to SDK 4.1 |  | 2008-08-07 → 2008-07-24 (-14d) | 15d → 5d |  | 14d → 25.36d |  |
| 48 | Finish | 2008-08-07 → 2008-08-06 (-1d) | 2008-08-07 → 2008-08-06 (-1d) |  |  | 14d → 16.36d |  |
| 49 | **Bug Fixes** |  | 2008-07-18 → 2008-07-23 (+5d) | 2d? → 5d? | 8% → 7% | 28d → 26.36d |  |
| 55 | caDSR Grid Service API does not provide access to semantic metadata (concept codes) |  | 2008-07-18 → 2008-07-21 (+3d) | 1d? → 2d? |  | 28d → 28.36d |  |
| 58 | caDSR Type Browser doesn't let you correct a namespace that is invalid (as opposed to not found) |  | 2008-07-18 → 2008-07-23 (+5d) | 1d? → 4d? |  | 28d → 26.36d |  |
| 75 | Finish | 2008-07-18 → 2008-07-23 (+5d) | 2008-07-18 → 2008-07-23 (+5d) |  |  | 28d → 26.36d |  |
| 91 | **Continuous Integration** |  | 2008-07-18 → 2008-07-24 (+6d) | 2d? → 6d? |  | 28d → 25.36d |  |
| 94 | **Update installer** |  | 2008-07-18 → 2008-07-24 (+6d) | 1d? → 5d? |  | 28d → 25.36d |  |
| 95 | integrate latest portal release |  | 2008-07-18 → 2008-07-21 (+3d) | 1d? → 2d? |  | 28d → 28.36d | resources Scott Oster [50%] → Manav |
| 96 | integrate WF client release? |  |  | 1d? → 0.5d? |  | 28d → 29.86d | resources Scott Oster [50%] → SO/Ravi? |
| 97 | updates for tech stack (tomcat versions, etc) |  | 2008-07-18 → 2008-07-24 (+6d) | 1d? → 5d? |  | 28d → 25.36d |  |
| 98 | Replace cvs with subversion |  |  | 1d? → 0d? |  | 28d → 30.36d |  |
| 158 | **Documentation** |  |  | 4.26d? → 4.64d? |  | 25.74d → 26.72d |  |
| 160 | Update Administrator Guide |  | 2008-07-17 → 2008-07-21 (+4d) | 1d? → 2.5d? |  | 29d → 28.86d |  |
| 162 | Update User Guide |  |  | 0.51d? → 1.28d? |  | 25.74d → 26.72d |  |
| 169 | Test GME | 2008-07-21 → 2008-08-15 (+25d) | 2008-07-21 → 2008-08-15 (+25d) |  |  | 27d → 9.36d |  |
| 170 | Test caDSR Replacement | 2008-07-21 → 2008-08-15 (+25d) | 2008-07-21 → 2008-08-15 (+25d) |  |  | 27d → 9.36d |  |
| 172 | Test release on new tech stack | 2008-07-18 → 2008-07-17 (-1d) | 2008-07-18 → 2008-07-17 (-1d) |  |  | 28d → 30.36d |  |
| 182 | **Deployment** |  | 2008-08-21 → 2008-08-29 (+8d) | 25.28d? → 31.36d? |  | 4.72d → 0d |  |
| 185 | Create 1.3 target_grid configurations |  | 2008-07-21 → 2008-07-22 (+1d) | 1d? → 2d? |  | 27d → 27.36d |  |
| 191 | Update core caGrid Services using Introduce 1.3 |  |  | 0.28d? → 0.86d? |  | 4.72d → 0d |  |
| 193 | publish release IVY repositories |  | 2008-07-18 → 2008-07-22 (+4d) | 1d? → 3d? |  | 27d → 26.36d |  |
| 194 | create installer release |  | 2008-08-15 → 2008-08-18 (+3d) | 1d? → 2d? |  | 4.72d → 0d |  |
| 197 | Write Deployment Instructions |  | 2008-07-18 → 2008-07-21 (+3d) | 1.23d? → 2.92d? |  | 28.38d → 28.44d |  |
| 198 | Redeploy QA Grid | 2008-08-15 → 2008-08-18 (+3d) | 2008-08-18 → 2008-08-21 (+3d) | 1d? → 2.5d? |  | 4.72d → 0d |  |
| 199 | Redeploy Training Grid | 2008-08-15 → 2008-08-18 (+3d) | 2008-08-18 → 2008-08-20 (+2d) | 1d? → 1.92d? |  | 6.72d → 5.58d |  |
| 200 | Redeploy Staging Grid | 2008-08-18 → 2008-08-21 (+3d) | 2008-08-19 → 2008-08-25 (+6d) | 1d? → 2.5d? |  | 4.72d → 0d |  |
| 201 | Redeploy Production Grid | 2008-08-19 → 2008-08-25 (+6d) | 2008-08-20 → 2008-08-28 (+8d) | 1d? → 2.5d? |  | 4.72d → 0d |  |
| 204 | Send Release Announcement | 2008-08-20 → 2008-08-28 (+8d) | 2008-08-21 → 2008-08-29 (+8d) |  |  | 4.72d → 0d |  |
| 205 | Finish | 2008-08-21 → 2008-08-29 (+8d) | 2008-08-21 → 2008-08-29 (+8d) |  |  | 4.72d → 0d |  |

## Version 8 (saved 2008-09-18)

Last finish stays 2008-08-29. Complete tasks 11 → 13.

Removed: 33 Grid-based Policy Enforcement; 34 Start; 35 Determine Policy to be enforced; 36 Design; 37 Development; 38 Finish

Changed:

| ID | Task | Start | Finish | Duration | Complete | Total float | Other |
| --- | --- | --- | --- | --- | --- | --- | --- |
| 68 | Gaards UI throws an error popup that makes the UI unusable | 2008-07-17 → 2008-07-18 (+1d) | 2008-07-17 → 2008-07-18 (+1d) |  |  | 30.36d → 29.36d |  |
| 70 | **WebSSO** |  | 2008-07-17 → 2008-07-18 (+1d) | 1d? → 2d? | 50% → 67% | 29.36d → 28.36d |  |
| 76 | Update Build Process | 2008-07-17 → 2008-07-18 A (+1d) | 2008-07-17 → 2008-07-18 A (+1d) |  | 0% → 100% | 29.36d → none |  |
| 80 | Acegi client | 2008-07-17 A | 2008-07-17 A |  | 0% → 100% | 29.36d → none |  |
| 84 | Finish | 2008-07-17 → 2008-07-18 (+1d) | 2008-07-17 → 2008-07-18 (+1d) |  |  | 29.36d → 28.36d |  |
| 85 | **Continuous Innovation** |  |  |  |  |  | was named Continuous Integration |
| 88 | **Update installer** | 2008-07-18 → 2008-07-17 (-1d) |  | 5d? → 6d? |  |  |  |
| 89 | integrate latest portal release | 2008-07-18 → 2008-07-17 (-1d) | 2008-07-21 → 2008-07-18 (-3d) |  |  | 28.36d → 29.36d |  |
| 90 | integrate WF client release? | 2008-07-18 → 2008-07-17 (-1d) | 2008-07-18 → 2008-07-17 (-1d) |  |  | 29.86d → 30.86d |  |
| 130 | Support multiple authentication profile | 2008-07-17 → 2008-07-18 (+1d) | 2008-07-23 → 2008-07-24 (+1d) |  |  | 25.36d → 24.36d |  |
| 131 | Authentication Profile Service Metadata | 2008-07-17 → 2008-07-18 (+1d) | 2008-07-18 → 2008-07-21 (+3d) |  |  | 28.36d → 27.36d |  |
| 132 | Update GAARDS UI to leverage new Authentication Profile / Trusted IdP metadata | 2008-07-17 → 2008-07-18 (+1d) | 2008-07-17 → 2008-07-18 (+1d) |  |  | 29.36d → 28.36d |  |
| 143 | Move from issuing Proxy Certificates to Issuing short term certificates. | 2008-07-17 → 2008-07-18 (+1d) | 2008-07-30 → 2008-07-31 (+1d) |  |  | 20.36d → 19.36d |  |
| 144 | Enable Dorian Host Certificates to work with new version of IE and Firefox | 2008-07-17 → 2008-07-18 (+1d) | 2008-07-21 → 2008-07-22 (+1d) |  |  | 27.36d → 26.36d |  |
| 145 | Add Account Audting to Dorian | 2008-07-17 → 2008-07-18 (+1d) | 2008-07-30 → 2008-07-31 (+1d) |  |  | 20.36d → 19.36d |  |
| 146 | Reformat GAARDS UI to display properly on the MAC | 2008-07-17 → 2008-07-18 (+1d) | 2008-07-30 → 2008-07-31 (+1d) |  |  | 20.36d → 19.36d |  |
| 165 | Test WebSSO | 2008-07-18 → 2008-07-21 (+3d) | 2008-07-18 → 2008-07-21 (+3d) |  |  | 29.36d → 28.36d |  |
| 191 | Write Deployment Instructions | 2008-07-17 → 2008-07-18 (+1d) |  | 2.92d? → 1.92d? |  |  |  |

## Version 9 (saved 2008-10-17)

Last finish 2008-08-29 → 2008-11-03 (+66d). Complete tasks 13 → 36.

Added:

| ID | Task | Duration | Start | Finish | Predecessors | Constraint | Resources |
| --- | --- | --- | --- | --- | --- | --- | --- |
| 12 | GME has issues with mutliple elements of the same name/type in a complexType | 1d? | 2008-07-17 | 2008-07-17 | 3 |  | Scott Oster [50%] |
| 70 | SDK 4 Data Service wizard can blank copied schema files | 1d | 2008-09-04 A | 2008-09-04 A | 45 | finish no earlier than 2008-09-04 | David Ervin [80%] |
| 71 | A deployed service in a different context (not caGrid) cannot create TransferServiceContext | 1d | 2008-07-17 A | 2008-07-17 A | 45 |  | Shannon Hastings [80%] |
| 72 | Pasting values in to fields on SDK 4 wizard configuration causes exception | 1d | 2008-09-08 A | 2008-09-08 A | 45 | start no earlier than 2008-09-08 | David Ervin [80%] |
| 73 | Introduce service security metadata is not consistent with security descriptor for resource property operations | 1d | 2008-09-10 A | 2008-09-10 A | 45 | start no earlier than 2008-09-10 | Shannon Hastings [80%] |
| 108 | FQP should support caGrid Transfer of results | 6d | 2008-10-09 A | 2008-10-16 A | 103 | start no earlier than 2008-10-09 | David Ervin [80%] |
| 130 | Review Advertisement settings | 5d? | 2008-09-21 A | 2008-09-26 A | 115 | finish no earlier than 2008-09-15 | Scott Oster [50%] |
| 131 | ServiceConstants file shouldn't get completely re-written every save | 1d | 2008-10-16 A | 2008-10-16 A | 115 | start no earlier than 2008-10-16 | Shannon Hastings [80%] |

Changed:

| ID | Task | Start | Finish | Duration | Complete | Total float | Predecessors | Other |
| --- | --- | --- | --- | --- | --- | --- | --- | --- |
| 1 | **Gold Compatibility** | 2008-07-17 A |  |  |  | 9.36d → 56.36d |  |  |
| 2 | **GME Rewrite** | 2008-07-17 A |  |  |  | 9.36d → 55.36d |  |  |
| 3 | Start | 2008-07-17 A | 2008-07-17 A |  | 0% → 100% | 9.36d → none |  |  |
| 14 | Finish |  |  |  |  | 9.36d → 40d | 4, 5, 6, 7, 8, 9, 10, 11, 13 → 4, 5, 6, 7, 8, 9, 10, 11, 13, 12 |  |
| 34 | **caCORE Integration** | 2008-07-17 A |  |  |  | 16.36d → 62.36d |  |  |
| 35 | Start | 2008-07-17 A | 2008-07-17 A |  | 0% → 100% | 16.36d → none |  |  |
| 44 | **Bug Fixes** |  | 2008-07-23 → 2008-09-10 (+49d) | 5d? → 40d? | 7% → 30% | 26.36d → 37.36d |  |  |
| 45 | Start | 2008-07-17 A | 2008-07-17 A |  | 0% → 100% | 27d → none |  |  |
| 46 | SDK 4 data service wizard fails with 'No Domain Model' | 2008-07-17 → 2008-09-05 A (+50d) | 2008-07-17 → 2008-09-05 A (+50d) | 1d? → 1d | 0% → 100% | 30.36d → none |  | constraint none → start no earlier than 2008-09-05 |
| 56 | Introduce error importing Type schemas it generated. | 2008-07-17 → 2008-09-04 A (+49d) | 2008-07-17 → 2008-09-04 A (+49d) |  | 0% → 100% | 30.36d → none |  | constraint none → finish no earlier than 2008-09-04 |
| 59 | When importing a method from another introduce service package names are broken | 2008-07-17 → 2008-09-04 A (+49d) | 2008-07-17 → 2008-09-04 A (+49d) | 1d? → 1d | 0% → 100% | 30.36d → none |  |  |
| 66 | Introduce configure types validator lets you save when there are validation errors | 2008-07-17 → 2008-09-04 A (+49d) | 2008-07-17 → 2008-09-04 A (+49d) | 1d? → 1d | 0% → 100% | 30.36d → none |  |  |
| 74 | Finish | 2008-07-23 → 2008-09-10 (+49d) | 2008-07-23 → 2008-09-10 (+49d) |  |  | 26.36d → 22d | 46, 47, 48, 49, 50, 51, 52, 53, 54, 55, 56, 57, 58, 59, 60, 61, 62, 63, 64, 65, 66, 67, 69, 68 → 46, 47, 48, 49, 50, 51, 52, 53, 54, 55, 56, 57, 58, 59, 60, 61, 62, 63, 64, 65, 66, 67, 68, 69, 70, 71, 73, 72 |  |
| 76 | Start | 2008-07-17 A | 2008-07-17 A |  | 0% → 100% | 29.36d → none |  |  |
| 90 | **Continuous Innovation** | 2008-07-17 A |  |  |  | 25.36d → 71.36d |  |  |
| 91 | Start | 2008-07-17 A | 2008-07-17 A |  | 0% → 100% | 29.36d → none |  |  |
| 102 | **Data Services** | 2008-07-17 A | 2008-08-06 → 2008-10-16 (+71d) | 15d → 66d | 0% → 25% | 15.36d → 10.36d |  |  |
| 103 | Start | 2008-07-17 A | 2008-07-17 A |  | 0% → 100% | 15.36d → none |  |  |
| 106 | FQP should support ws-enumeration transfer of results | 2008-07-17 → 2008-09-26 A (+71d) | 2008-07-30 → 2008-10-09 A (+71d) |  | 0% → 100% | 20.36d → none |  | was named FQP should support BDT transfer of results; constraint none → finish no earlier than 2008-10-09 |
| 113 | Finish | 2008-08-06 → 2008-10-16 (+71d) | 2008-08-06 → 2008-10-16 (+71d) |  |  | 15.36d → 10.36d | 104, 105, 106, 107, 110, 111, 112, 109 → 104, 105, 106, 107, 110, 111, 112, 109, 108 |  |
| 114 | **Introduce** |  | 2008-08-14 → 2008-10-17 (+64d) | 21d? → 67d? | 11% → 44% |  |  |  |
| 125 | Introduce services which support persistence are hard to customize persistence on the resource itself | 2008-07-17 → 2008-09-26 A (+71d) | 2008-07-30 → 2008-10-09 A (+71d) |  | 0% → 100% | 10d → none |  | constraint none → start no earlier than 2008-09-26 |
| 126 | Introduce client code should be more override friendly | 2008-07-17 → 2008-09-16 A (+61d) | 2008-07-30 → 2008-09-29 A (+61d) |  | 0% → 100% | 10d → none |  |  |
| 127 | Introduce clients do not set user credential when returning client handle to stateful resources | 2008-07-17 → 2008-09-05 A (+50d) | 2008-07-23 → 2008-09-11 A (+50d) |  | 0% → 100% | 15d → none |  |  |
| 129 | Problem with Anonymous Security Setting | 2008-08-14 → 2008-09-15 A (+32d) | 2008-08-14 → 2008-09-15 A (+32d) |  | 0% → 100% | 9.36d → none | 132 → 115 |  |
| 132 | Introduce Feature Freeze (milestone) | 2008-08-13 → 2008-10-16 (+64d) | 2008-08-13 → 2008-10-16 (+64d) |  |  |  | 116, 117, 118, 119, 120, 121, 122, 123, 124, 125, 126, 127, 128 → 116, 117, 118, 119, 120, 121, 122, 123, 124, 125, 126, 127, 128, 129, 131, 130 |  |
| 133 | Introduce Upgraders (1.1->1.3) | 2008-08-14 → 2008-10-17 (+64d) | 2008-08-14 → 2008-10-17 (+64d) |  |  |  |  |  |
| 134 | Introduce Upgraders (1.2->1.3) | 2008-08-14 → 2008-10-17 (+64d) | 2008-08-14 → 2008-10-17 (+64d) |  |  |  |  |  |
| 135 | Finish | 2008-08-14 → 2008-10-17 (+64d) | 2008-08-14 → 2008-10-17 (+64d) |  |  |  | 133, 134, 129 → 133, 134 |  |
| 136 | **Security** |  | 2008-08-26 → 2008-10-24 (+59d) | 29d → 72d |  | 1.36d → 4.36d |  |  |
| 137 | Start | 2008-07-17 A | 2008-07-17 A |  | 0% → 100% | 19.36d → none |  |  |
| 145 | Service Security Client needs a way to say to always use credential | 2008-08-08 → 2008-10-08 (+61d) | 2008-08-08 → 2008-10-08 (+61d) |  |  | 1.36d → 4.36d |  | constraint none → start no earlier than 2008-10-08; resources Steve Langella [80%] → Shannon Hastings [80%] |
| 146 | Spring enable Dorian | 2008-08-11 → 2008-10-09 (+59d) | 2008-08-13 → 2008-10-13 (+61d) |  |  | 1.36d → 4.36d |  |  |
| 147 | Implement new Authentication Service interface | 2008-08-14 → 2008-10-14 (+61d) | 2008-08-20 → 2008-10-20 (+61d) |  |  | 1.36d → 4.36d |  |  |
| 148 | Add Authentication Profile Metadata to Dorian. | 2008-08-21 → 2008-10-21 (+61d) | 2008-08-21 → 2008-10-21 (+61d) |  |  | 1.36d → 4.36d |  |  |
| 149 | Extend Trusted Identity Provider information to include information regarding the IdP's Authentication Service | 2008-08-22 → 2008-10-22 (+61d) | 2008-08-25 → 2008-10-23 (+59d) |  |  | 1.36d → 4.36d |  |  |
| 150 | Add Trusted IdP metadata to Dorian | 2008-08-26 → 2008-10-24 (+59d) | 2008-08-26 → 2008-10-24 (+59d) |  |  | 1.36d → 4.36d |  |  |
| 155 | Finish | 2008-08-26 → 2008-10-24 (+59d) | 2008-08-26 → 2008-10-24 (+59d) |  |  | 1.36d → 4.36d |  |  |
| 169 | **Quality Assurance** |  | 2008-08-27 → 2008-10-27 (+61d) | 30d? → 73d? |  | 1.36d → 4.36d |  |  |
| 175 | Test Introduce | 2008-08-15 → 2008-10-20 (+66d) | 2008-08-15 → 2008-10-20 (+66d) |  |  |  |  |  |
| 176 | Test Security | 2008-08-27 → 2008-10-27 (+61d) | 2008-08-27 → 2008-10-27 (+61d) |  |  | 1.36d → 4.36d |  |  |
| 180 | Test Data Services | 2008-08-07 → 2008-10-17 (+71d) | 2008-08-07 → 2008-10-17 (+71d) |  |  | 15.36d → 10.36d |  |  |
| 181 | Test caGrid 1.3 Grid Services | 2008-08-14 → 2008-10-17 (+64d) | 2008-08-15 → 2008-10-20 (+66d) |  |  |  |  |  |
| 182 | Test QA integration scenarios | 2008-08-15 → 2008-10-20 (+66d) | 2008-08-18 → 2008-10-21 (+64d) |  |  |  |  |  |
| 183 | Finish | 2008-08-18 → 2008-10-21 (+64d) | 2008-08-18 → 2008-10-21 (+64d) |  |  |  |  |  |
| 184 | **Deployment** |  | 2008-08-29 → 2008-11-03 (+66d) | 31.36d? → 77.36d? |  |  |  |  |
| 193 | Update core caGrid Services using Introduce 1.3 | 2008-08-14 → 2008-10-17 (+64d) | 2008-08-14 → 2008-10-17 (+64d) |  |  |  |  |  |
| 196 | create installer release | 2008-08-14 → 2008-10-17 (+64d) | 2008-08-18 → 2008-10-21 (+64d) |  |  |  |  |  |
| 200 | Redeploy QA Grid | 2008-08-18 → 2008-10-21 (+64d) | 2008-08-21 → 2008-10-24 (+64d) |  |  |  |  |  |
| 201 | Redeploy Training Grid | 2008-08-18 → 2008-10-21 (+64d) | 2008-08-20 → 2008-10-23 (+64d) |  |  |  |  |  |
| 202 | Redeploy Staging Grid | 2008-08-21 → 2008-10-24 (+64d) | 2008-08-25 → 2008-10-28 (+64d) |  |  |  |  |  |
| 203 | Redeploy Production Grid | 2008-08-25 → 2008-10-28 (+64d) | 2008-08-28 → 2008-10-31 (+64d) |  |  |  |  |  |
| 206 | Send Release Announcement | 2008-08-28 → 2008-10-31 (+64d) | 2008-08-29 → 2008-11-03 (+66d) |  |  |  |  |  |
| 207 | Finish | 2008-08-29 → 2008-11-03 (+66d) | 2008-08-29 → 2008-11-03 (+66d) |  |  |  |  |  |

## Version 10 (saved 2008-10-18)

Last finish 2008-11-03 → 2008-11-17 (+14d). Complete tasks 36 → 43.

Added:

| ID | Task | Duration | Start | Finish | Predecessors |
| --- | --- | --- | --- | --- | --- |
| 184 | Start | 0d | 2008-07-17 | 2008-07-17 |  |
| 188 | Finish | 0d | 2008-07-17 | 2008-07-17 | 185, 186, 187 |
| 191 | Start | 0d | 2008-10-16 | 2008-10-16 |  |
| 192 | Dorian | 1d? | 2008-10-17 | 2008-10-17 |  |
| 193 | Authentication Service | 1d? | 2008-10-17 | 2008-10-17 |  |
| 194 | GTS Master | 1d? | 2008-10-17 | 2008-10-17 |  |
| 195 | GTS Slave | 1d? | 2008-10-17 | 2008-10-17 |  |
| 196 | CDS | 1d? | 2008-10-17 | 2008-10-17 |  |
| 197 | Grouper | 1d? | 2008-10-17 | 2008-10-17 |  |
| 198 | GME | 1d? | 2008-10-17 | 2008-10-17 |  |
| 199 | FQP | 1d? | 2008-10-17 | 2008-10-17 |  |
| 200 | Workflow | 1d? | 2008-10-17 | 2008-10-17 |  |
| 201 | Finish | 0d | 2008-10-17 | 2008-10-17 | 192, 193, 194, 195, 196, 197, 198, 199, 200 |

Removed: 97 Replace cvs with subversion; 98 Common caBIG Ivy Repository; 177 Test WSRF.NET; 178 Test Identifiers; 179 Test Metrics

Changed:

| ID | Task | Start | Finish | Duration | Complete | Total float | Predecessors | Other |
| --- | --- | --- | --- | --- | --- | --- | --- | --- |
| 40 | Introduce upgrade to SDK 4.1 | 2008-07-18 → 2008-07-17 (-1d) | 2008-07-24 → 2008-07-23 (-1d) |  |  | 56d → 83d |  |  |
| 44 | **Bug Fixes** |  |  |  | 30% → 36% | 37.36d → 48d |  |  |
| 47 | When the trasfer resource is being destroyed it tries to delete the cache file. If the cache files does not exist it throws a resource exception. | 2008-07-17 A | 2008-07-17 A |  | 0% → 100% | 61d → none |  |  |
| 61 | Lowercase chars in complexType names from schema can cause compile failure |  | 2008-07-17 → 2008-07-18 (+1d) | 1d? → 1.25d? |  | 61d → 86.75d |  | resources John Eisenschmidt → David Ervin [80%] |
| 68 | Introduce Log Viewer hangs in certain scenarios | 2008-07-17 A | 2008-07-17 A |  | 0% → 100% | 61d → none |  |  |
| 90 | **Continuous Innovation** |  |  |  | 0% → 10% | 71.36d → 82d |  |  |
| 92 | Support common technology stack for caGrid infrastructure | 2008-07-17 A | 2008-07-17 A |  | 0% → 100% | 61d → none |  |  |
| 94 | integrate latest portal release |  |  |  |  | 60d → 86d |  | resources Manav → Manav Kher |
| 95 | integrate WF client release? |  |  |  |  | 61.5d → 87.5d |  | resources SO/Ravi? → Ravi Madduri |
| 99 | Finish |  |  |  |  | 60d → 86d | 92, Replace cvs with subversion, 98, Common caBIG Ivy Repository, 97 → 92, 98, 97 |  |
| 112 | **Introduce** |  |  |  | 44% → 70% | 9.36d → 16d |  |  |
| 115 | Grid Grouper Introduce Authorization Extension | 2008-07-31 A | 2008-08-13 A |  | 0% → 100% | 46d → none |  |  |
| 116 | CSM Introduce Authorization Extension | 2008-07-31 A | 2008-08-13 A |  | 0% → 100% | 46d → none |  |  |
| 117 | ivy support for introduce-created projects |  | 2008-07-30 → 2008-08-07 (+8d) | 10d → 16d |  | 56d → 50d |  | resources Shannon Hastings [80%] → Scott Oster [50%] |
| 122 | Improve Introduce usability when adding extensions or service contexts | 2008-07-17 A | 2008-07-22 A |  | 0% → 100% | 62d → none |  |  |
| 126 | Introduce Service tab should use tooltips in the jtree | 2008-07-17 A | 2008-07-23 A |  | 0% → 100% | 61d → none |  |  |
| 167 | **Quality Assurance** |  | 2008-10-27 → 2008-11-17 (+21d) | 73d? → 88d? |  | 4.36d → 0d |  |  |
| 172 | Test release on new tech stack |  |  |  |  | 76.36d → 87d | 168, Replace cvs with subversion → 168 |  |
| 173 | Test Introduce |  | 2008-10-20 → 2008-10-24 (+4d) | 1d? → 5d |  | 9.36d → 16d |  |  |
| 176 | Test caGrid 1.3 Grid Services | 2008-10-17 → 2008-10-20 (+3d) | 2008-10-20 → 2008-11-14 (+25d) | 1d? → 20d |  | 8.5d → 0d |  |  |
| 177 | Test QA integration scenarios | 2008-10-20 → 2008-11-17 (+28d) | 2008-10-21 → 2008-11-17 (+27d) |  |  | 8.5d → 0d |  |  |
| 178 | Finish | 2008-10-21 → 2008-11-17 (+27d) | 2008-10-21 → 2008-11-17 (+27d) |  |  | 8.5d → 0d |  |  |
| 179 | **Deployment** |  |  | 77.36d? → 77.5d? |  | 0d → 10.5d |  |  |
| 183 | **Create 1.3 release branch in CVS** |  | 2008-07-18 → 2008-07-17 (-1d) | 2d? → 1d |  |  |  |  |
| 185 | Update project versions |  |  | 1d? → 1d |  |  | 180 → 184 |  |
| 186 | update eclipse projects | 2008-07-18 → 2008-07-17 (-1d) | 2008-07-18 → 2008-07-17 (-1d) | 1d? → 1d |  | 75.36d → 87d | 180 → 184 |  |
| 187 | remove any projects which wont be released in 1.3 | 2008-07-18 → 2008-07-17 (-1d) | 2008-07-18 → 2008-07-17 (-1d) | 1d? → 1d |  | 75.36d → 87d | 180 → 184 |  |
| 190 | **Update core caGrid Services using Introduce 1.3** | 2008-10-17 → 2008-10-16 (-1d) |  | 0.86d? → 1d? |  |  |  |  |
| 204 | create installer release | 2008-10-17 → 2008-10-20 (+3d) |  |  |  | 0d → 10.5d |  |  |
| 208 | Redeploy QA Grid | 2008-10-21 → 2008-10-22 (+1d) |  |  |  | 0d → 10.5d |  |  |
| 209 | Redeploy Training Grid | 2008-10-21 → 2008-10-22 (+1d) |  |  |  | 5.58d → 16.08d |  |  |
| 211 | Redeploy Production Grid | 2008-10-28 → 2008-10-29 (+1d) |  |  |  | 0d → 10.5d |  |  |

## Version 11 (saved 2008-10-20)

Note of the change: major rework -- split into development and transition. dates are almost calculating correctly (less the delta caused by incorrect estimates / pm error)

Last finish 2008-11-17 → 2009-02-10 (+85d). Complete tasks 43 → 53.

Added:

| ID | Task | Duration | Start | Finish | Predecessors | Constraint | Resources |
| --- | --- | --- | --- | --- | --- | --- | --- |
| 1 | **caGrid 1.3 Development** | 96d? | 2008-07-17 A | 2008-11-27 |  |  |  |
| 76 | Enter key on dorian login window is not mapped to the login button | 1d | 2008-09-11 A | 2008-09-11 A | 47 |  | Steve Langella [80%] |
| 97 | Start | 0d | 2008-11-24 | 2008-11-24 | 175 |  |  |
| 105 | Start | 0d | 2008-11-07 | 2008-11-07 | 147 | start no earlier than 2008-07-17 |  |
| 115 | Finish | 0d | 2008-11-10 | 2008-11-10 | 114, 106, 107, 108, 109, 110, 111, 112, 113 | start no earlier than 2008-07-17 |  |
| 175 | Code Freeze | 0d | 2008-11-24 | 2008-11-24 | 16, 23, 35, 45, 77, 92, 128, 150, 170, 174 |  |  |
| 176 | Finish | 0d | 2008-11-27 | 2008-11-27 | 116 |  |  |
| 177 | **caGrid 1.3 Transition** | 67d? | 2008-11-10 | 2009-02-10 |  |  |  |
| 178 | Start | 0d | 2008-11-27 | 2008-11-27 | 176 |  |  |
| 225 | Finish | 0d | 2009-02-10 | 2009-02-10 | 224 |  |  |

Changed:

| ID | Task | Start | Finish | Duration | Complete | Total float | Predecessors | Other |
| --- | --- | --- | --- | --- | --- | --- | --- | --- |
| 2 | Start | 2008-10-16 → 2008-07-17 (-91d) | 2008-10-16 → 2008-07-17 (-91d) |  |  | 1d → 149d |  |  |
| 3 | **Gold Compatibility** |  |  |  | 0% → 27% | 67d → 98d |  |  |
| 4 | **GME Rewrite** |  |  |  | 0% → 48% | 66d → 98d |  |  |
| 6 | MySQL 5.0 Support | 2008-07-18 A | 2008-07-18 A |  | 0% → 100% | 85d → none |  |  |
| 7 | Schemas with Cycles | 2008-07-18 A | 2008-07-28 A |  | 0% → 100% | 79.75d → none |  |  |
| 8 | Schemas with Includes/Redefines | 2008-07-18 A | 2008-07-24 A |  | 0% → 100% | 81d → none |  |  |
| 9 | URI Valid as Namespace | 2008-07-18 A | 2008-07-18 A |  | 0% → 100% | 85d → none |  |  |
| 10 | Metadata and WSDL reflect service operations | 2008-07-18 A |  |  | 0% → 50% | 85d → 117d |  |  |
| 11 | Update/Delete non-production schemas | 2008-07-18 A |  |  | 0% → 75% | 81d → 113d |  |  |
| 14 | GME has issues with mutliple elements of the same name/type in a complexType | 2008-07-17 A | 2008-07-17 A |  | 0% → 100% | 86d → none |  |  |
| 15 | Non-RFE Development | 2008-07-18 A |  |  | 0% → 40% | 66d → 98d |  |  |
| 17 | **caDSR Grid Service Replacement** | 2008-07-17 A |  |  | 0% → 4% | 66d → 98d |  |  |
| 19 | Design | 2008-07-18 A |  |  | 0% → 25% | 70.36d → 113d |  |  |
| 24 | **Make Core Services Gold Compatible** | 2008-07-17 A | 2008-07-23 → 2008-07-25 (+2d) | 5d? → 7d? | 0% → 6% | 83d → 112d |  |  |
| 26 | Identify Services to be made Gold Compatible | 2008-07-18 A |  |  | 0% → 90% | 86d → 112d |  |  |
| 27 | **Register Object and Metadata Models** | 2008-07-17 → 2008-07-18 (+1d) | 2008-07-23 → 2008-07-25 (+2d) |  |  | 83d → 112d |  |  |
| 28 | Start | 2008-07-17 → 2008-07-18 (+1d) | 2008-07-17 → 2008-07-18 (+1d) |  |  | 72.36d → 112d | 25 → 26 |  |
| 29 | CQL | 2008-07-17 → 2008-07-21 (+4d) | 2008-07-23 → 2008-07-25 (+2d) |  |  | 72.36d → 112d |  |  |
| 30 | CQL Results | 2008-07-17 → 2008-07-21 (+4d) | 2008-07-18 → 2008-07-22 (+4d) |  |  | 75.36d → 115d |  |  |
| 31 | Service Metadata | 2008-07-17 → 2008-07-21 (+4d) | 2008-07-18 → 2008-07-22 (+4d) |  |  | 75.36d → 115d |  |  |
| 32 | Security Metadata | 2008-07-17 → 2008-07-21 (+4d) | 2008-07-18 → 2008-07-22 (+4d) |  |  | 75.36d → 115d |  |  |
| 33 | Data Services Object Model | 2008-07-17 → 2008-07-21 (+4d) | 2008-07-18 → 2008-07-22 (+4d) |  |  | 75.36d → 115d |  |  |
| 34 | Finish | 2008-07-23 → 2008-07-25 (+2d) | 2008-07-23 → 2008-07-25 (+2d) |  |  | 72.36d → 112d |  |  |
| 35 | Finish | 2008-07-23 → 2008-07-25 (+2d) | 2008-07-23 → 2008-07-25 (+2d) |  |  | 83d → 112d |  |  |
| 46 | **Bug Fixes** |  | 2008-09-10 → 2008-09-11 (+1d) | 40d? → 41d? | 36% → 38% | 48d → 78d |  |  |
| 77 | Finish | 2008-09-10 → 2008-09-11 (+1d) | 2008-09-10 → 2008-09-11 (+1d) |  |  | 48d → 78d | 48, 49, 50, 51, 52, 53, 54, 55, 56, 57, 58, 59, 60, 61, 62, 63, 64, 65, 66, 67, 68, 69, 70, 71, 72, 73, 75, 74 → 48, 49, 50, 51, 52, 53, 54, 55, 56, 57, 58, 59, 60, 61, 62, 63, 64, 65, 66, 67, 68, 69, 70, 71, 72, 73, 74, 76, 75 |  |
| 93 | **Continuous Innovation** |  | 2008-07-24 → 2008-11-27 (+126d) | 6d? → 96d? | 10% → 5% | 82d → 26d |  |  |
| 94 | Start |  |  |  |  |  | none → 2 |  |
| 96 | **Update installer** | 2008-07-17 → 2008-11-24 (+130d) | 2008-07-24 → 2008-11-27 (+126d) | 6d? → 3d |  | 82d → 26d |  |  |
| 98 | integrate latest portal release | 2008-07-17 → 2008-11-25 (+131d) | 2008-07-18 → 2008-11-26 (+131d) | 2d? → 2d |  | 86d → 27d | none → 97 |  |
| 99 | integrate WF client release? | 2008-07-17 → 2008-11-25 (+131d) | 2008-07-17 → 2008-11-26 (+132d) | 0.5d? → 2d |  | 87.5d → 27d | none → 97 |  |
| 100 | updates for tech stack (tomcat versions, etc) | 2008-07-18 → 2008-11-25 (+130d) | 2008-07-24 → 2008-11-27 (+126d) | 5d? → 3d |  | 82d → 26d | none → 97 |  |
| 101 | Finish | 2008-10-17 → 2008-11-27 (+41d) | 2008-10-17 → 2008-11-27 (+41d) |  |  | 0d → 26d | 106, 107, 108, 109, 110, 111, 112, 113, 114 → 98, 99, 100 |  |
| 102 | Remove old EVS grid service |  |  | 1d? → 1d |  | 86d → 120d |  |  |
| 103 | Remove old caDSR grid service |  |  | 1d? → 1d |  | 86d → 120d |  |  |
| 104 | **Update core caGrid Services using Introduce 1.3** | 2008-10-16 → 2008-11-07 (+22d) | 2008-10-17 → 2008-11-10 (+24d) |  |  | 0d → 39d | 147, 207 → none | resources Shannon Hastings [80%]; Steve Langella [80%]; Scott Oster [50%]; David Ervin [80%] → David Ervin [80%]; Shannon Hastings [80%]; Steve Langella [80%]; Scott Oster [50%] |
| 106 | Dorian | 2008-10-17 → 2008-11-10 (+24d) | 2008-10-17 → 2008-11-10 (+24d) |  |  | 0d → 39d | none → 105 | constraint none → start no earlier than 2008-07-17 |
| 107 | Authentication Service | 2008-10-17 → 2008-11-10 (+24d) | 2008-10-17 → 2008-11-10 (+24d) |  |  | 0d → 39d | none → 105 | constraint none → start no earlier than 2008-07-17 |
| 108 | GTS Master | 2008-10-17 → 2008-11-10 (+24d) | 2008-10-17 → 2008-11-10 (+24d) |  |  | 0d → 39d | none → 105 | constraint none → start no earlier than 2008-07-17 |
| 109 | GTS Slave | 2008-10-17 → 2008-11-10 (+24d) | 2008-10-17 → 2008-11-10 (+24d) |  |  | 0d → 39d | none → 105 | constraint none → start no earlier than 2008-07-17 |
| 110 | CDS | 2008-10-17 → 2008-11-10 (+24d) | 2008-10-17 → 2008-11-10 (+24d) |  |  | 0d → 39d | none → 105 | constraint none → start no earlier than 2008-07-17 |
| 111 | Grouper | 2008-10-17 → 2008-11-10 (+24d) | 2008-10-17 → 2008-11-10 (+24d) |  |  | 0d → 39d | none → 105 | constraint none → start no earlier than 2008-07-17 |
| 112 | GME | 2008-10-17 → 2008-11-10 (+24d) | 2008-10-17 → 2008-11-10 (+24d) |  |  | 0d → 39d | none → 105 | constraint none → start no earlier than 2008-07-17 |
| 113 | FQP | 2008-10-17 → 2008-11-10 (+24d) | 2008-10-17 → 2008-11-10 (+24d) |  |  | 0d → 39d | none → 105 | constraint none → start no earlier than 2008-07-17 |
| 114 | Workflow | 2008-10-17 → 2008-11-10 (+24d) | 2008-10-17 → 2008-11-10 (+24d) |  |  | 0d → 39d | none → 105 | constraint none → start no earlier than 2008-07-17 |
| 116 | Finish | 2008-07-18 → 2008-11-27 (+132d) | 2008-07-18 → 2008-11-27 (+132d) |  |  | 86d → 26d | 95, 103, 102 → 95, 101, 102, 103, 115 |  |
| 129 | **Introduce** |  | 2008-10-17 → 2008-11-10 (+24d) | 67d? → 83d? |  | 16d → 36d |  |  |
| 147 | Introduce Feature Freeze (milestone) | 2008-10-16 → 2008-11-07 (+22d) | 2008-10-16 → 2008-11-07 (+22d) |  |  | 0d → 36d |  | constraint none → finish no earlier than 2008-11-07 |
| 148 | Introduce Upgraders (1.1->1.3) | 2008-10-17 → 2008-11-10 (+24d) | 2008-10-17 → 2008-11-10 (+24d) |  |  | 16d → 36d |  |  |
| 149 | Introduce Upgraders (1.2->1.3) | 2008-10-17 → 2008-11-10 (+24d) | 2008-10-17 → 2008-11-10 (+24d) |  |  | 16d → 36d |  |  |
| 150 | Finish | 2008-10-17 → 2008-11-10 (+24d) | 2008-10-17 → 2008-11-10 (+24d) |  |  | 16d → 36d |  |  |
| 151 | **Security** |  | 2008-10-24 → 2008-11-24 (+31d) | 72d → 93d | 4% → 24% | 15d → 26d |  |  |
| 153 | Support multiple authentication profile | 2008-07-18 → 2008-10-06 A (+80d) | 2008-07-24 → 2008-10-10 A (+78d) |  | 0% → 100% | 81d → none |  |  |
| 154 | Authentication Profile Service Metadata | 2008-07-18 → 2008-10-13 A (+87d) | 2008-07-21 → 2008-10-14 A (+85d) |  | 0% → 100% | 84d → none |  |  |
| 156 | Develop system integration tests for the Authentication Service | 2008-07-17 A → 2008-10-15 A (+90d) | 2008-07-21 A → 2008-10-17 A (+88d) |  |  |  |  |  |
| 157 | Develop system integration tests for the GTS | 2008-07-22 → 2008-10-20 (+90d) | 2008-08-04 → 2008-10-31 (+88d) |  |  | 58d → 41d |  |  |
| 158 | SyncGTS needs to use service property for sync description | 2008-08-05 → 2008-11-03 (+90d) | 2008-08-05 → 2008-11-03 (+90d) |  |  | 58d → 41d |  |  |
| 159 | API to discover trusted IDs (Use case for caB2B security requirements) | 2008-08-06 → 2008-11-04 A (+90d) | 2008-08-07 → 2008-11-05 A (+90d) |  | 0% → 100% | 58d → none |  |  |
| 160 | Service Security Client needs a way to say to always use credential | 2008-10-08 → 2008-11-06 (+29d) | 2008-10-08 → 2008-11-06 (+29d) |  |  | 15d → 35d |  |  |
| 161 | Spring enable Dorian | 2008-10-09 → 2008-11-07 (+29d) | 2008-10-13 → 2008-11-11 (+29d) |  |  | 15d → 35d |  |  |
| 162 | Implement new Authentication Service interface | 2008-10-14 → 2008-11-12 A (+29d) | 2008-10-20 → 2008-11-18 A (+29d) |  | 0% → 100% | 15d → none |  |  |
| 163 | Add Authentication Profile Metadata to Dorian. | 2008-10-21 → 2008-11-19 (+29d) | 2008-10-21 → 2008-11-19 (+29d) |  |  | 15d → 26d |  |  |
| 164 | Extend Trusted Identity Provider information to include information regarding the IdP's Authentication Service | 2008-10-22 → 2008-11-20 (+29d) | 2008-10-23 → 2008-11-21 (+29d) |  |  | 15d → 26d |  |  |
| 165 | Add Trusted IdP metadata to Dorian | 2008-10-24 → 2008-11-24 (+31d) | 2008-10-24 → 2008-11-24 (+31d) |  |  | 15d → 26d |  |  |
| 170 | Finish | 2008-10-24 → 2008-11-24 (+31d) | 2008-10-24 → 2008-11-24 (+31d) |  |  | 15d → 26d |  |  |
| 179 | **Documentation** | 2008-07-17 → 2008-11-27 (+133d) | 2008-07-23 → 2008-12-04 (+134d) |  |  | 83.36d → 48.36d |  |  |
| 180 | Start | 2008-07-17 → 2008-11-27 (+133d) | 2008-07-17 → 2008-11-27 (+133d) |  |  | 83.36d → 48.36d | none → 178 |  |
| 181 | Update Administrator Guide | 2008-07-17 → 2008-11-28 (+134d) | 2008-07-21 → 2008-12-02 (+134d) |  |  | 85.5d → 50.5d |  |  |
| 182 | Update Install Guide | 2008-07-17 → 2008-11-28 (+134d) | 2008-07-18 → 2008-12-01 (+136d) |  |  | 86.74d → 51.74d |  |  |
| 183 | Update User Guide | 2008-07-17 → 2008-11-28 (+134d) | 2008-07-18 → 2008-12-01 (+136d) |  |  | 83.36d → 48.36d |  |  |

| ID | Task | Start | Finish | Duration | Total float | Predecessors | Other |
| --- | --- | --- | --- | --- | --- | --- | --- |
| 184 | Update design documents | 2008-07-18 → 2008-12-01 (+136d) | 2008-07-21 → 2008-12-02 (+134d) |  | 83.36d → 48.36d |  |  |
| 185 | Update caGrid overview | 2008-07-21 → 2008-12-02 (+134d) | 2008-07-22 → 2008-12-03 (+134d) |  | 83.36d → 48.36d |  |  |
| 186 | Update wiki | 2008-07-22 → 2008-12-03 (+134d) | 2008-07-23 → 2008-12-04 (+134d) |  | 83.36d → 48.36d |  |  |
| 187 | Finish | 2008-07-23 → 2008-12-04 (+134d) | 2008-07-23 → 2008-12-04 (+134d) |  | 83.36d → 48.36d |  |  |
| 188 | **Quality Assurance** | 2008-07-17 → 2008-11-10 (+116d) | 2008-11-17 → 2009-02-02 (+77d) | 88d? → 61d? | 0d → 6d |  |  |
| 189 | Start | 2008-07-17 → 2009-01-05 (+172d) | 2008-07-17 → 2009-01-05 (+172d) |  | 67d → 0d | none → 178 | constraint none → start no earlier than 2009-01-05 |
| 190 | Redeploy QA Grid | 2008-10-22 → 2009-01-05 (+75d) | 2008-10-24 → 2009-01-09 (+77d) | 2.5d? → 5d | 10.5d → 21d | 214 → 189 | resources Quality Assurance → none |
| 191 | Test GME | 2008-08-15 → 2009-01-12 (+150d) | 2008-08-15 → 2009-01-12 (+150d) |  | 66d → 21d | 189, 16 → 16, 190 |  |
| 192 | Test caDSR Replacement | 2008-08-15 → 2009-01-05 (+143d) | 2008-08-15 → 2009-01-05 (+143d) |  | 66d → 26d |  |  |
| 193 | Test WebSSO | 2008-07-21 → 2009-01-05 (+168d) | 2008-07-21 → 2009-01-05 (+168d) |  | 85d → 26d |  |  |
| 194 | Test release on new tech stack | 2008-07-17 → 2009-01-05 (+172d) | 2008-07-17 → 2009-01-05 (+172d) |  | 87d → 26d |  |  |
| 195 | Test Introduce | 2008-10-20 → 2008-11-10 (+21d) | 2008-10-24 → 2008-11-14 (+21d) |  | 16d → 62d | 189, 150 → 147 |  |
| 196 | Test Security | 2008-10-27 → 2009-01-05 (+70d) | 2008-10-27 → 2009-01-05 (+70d) |  | 15d → 26d |  |  |
| 197 | Test Data Services | 2008-10-17 → 2009-01-05 (+80d) | 2008-10-17 → 2009-01-05 (+80d) |  | 21d → 26d |  |  |
| 198 | Test caGrid 1.3 Grid Services | 2008-10-20 → 2009-01-05 (+77d) | 2008-11-14 → 2009-01-05 (+52d) | 20d → 1d? |  | 189, 104 → 189 |  |
| 199 | Test QA integration scenarios | 2008-11-17 → 2009-01-06 (+50d) | 2008-11-17 → 2009-02-02 (+77d) | 1d? → 20d |  |  |  |
| 200 | Finish | 2008-11-17 → 2009-02-02 (+77d) | 2008-11-17 → 2009-02-02 (+77d) |  |  |  |  |
| 201 | **Deployment** | 2008-07-17 → 2008-11-27 (+133d) | 2008-11-03 → 2009-02-10 (+99d) | 77.5d? → 53d? | 10.5d → 0d |  |  |
| 202 | Start | 2008-07-17 → 2008-11-27 (+133d) | 2008-07-17 → 2008-11-27 (+133d) |  | 76.5d → 47.08d | none → 178 |  |
| 203 | Create release notes | 2008-07-18 → 2008-12-01 (+136d) | 2008-07-18 → 2008-12-01 (+136d) |  | 84d → 49d |  |  |
| 204 | Create 1.3 target_grid configurations | 2008-07-21 → 2008-12-02 (+134d) | 2008-07-22 → 2008-12-03 (+134d) |  | 84d → 49d |  |  |
| 205 | **Create 1.3 release branch in CVS** | 2008-07-17 → 2009-02-02 (+200d) | 2008-07-17 → 2009-02-03 (+201d) |  | 65d → 5d |  |  |
| 206 | Start | 2008-07-17 → 2009-02-02 (+200d) | 2008-07-17 → 2009-02-02 (+200d) |  | 65d → 5d | none → 200 |  |
| 207 | Update project versions | 2008-07-17 → 2009-02-03 (+201d) | 2008-07-17 → 2009-02-03 (+201d) |  | 65d → 5d |  |  |
| 208 | update eclipse projects | 2008-07-17 → 2009-02-03 (+201d) | 2008-07-17 → 2009-02-03 (+201d) |  | 87d → 5d |  |  |
| 209 | remove any projects which wont be released in 1.3 | 2008-07-17 → 2009-02-03 (+201d) | 2008-07-17 → 2009-02-03 (+201d) |  | 87d → 5d |  |  |
| 210 | Finish | 2008-07-17 → 2009-02-03 (+201d) | 2008-07-17 → 2009-02-03 (+201d) |  | 87d → 5d |  |  |
| 211 | Update LICENSE | 2008-07-17 → 2008-11-28 (+134d) | 2008-07-17 → 2008-11-28 (+134d) |  | 76.5d → 47.08d |  |  |
| 212 | Validate core services' metadata | 2008-07-17 → 2008-11-28 (+134d) | 2008-07-18 → 2008-12-01 (+136d) |  | 85d → 50d |  |  |
| 213 | publish release IVY repositories | 2008-07-18 → 2008-12-01 (+136d) | 2008-07-22 → 2008-12-03 (+134d) |  | 83d → 48d |  |  |
| 214 | create installer release | 2008-10-20 → 2008-12-01 (+42d) | 2008-10-21 → 2008-12-02 (+42d) |  | 10.5d → 47.08d | 211, 104 → 211 |  |
| 215 | post installer properties file to FTP site | 2008-07-17 → 2008-11-28 (+134d) | 2008-07-18 → 2008-12-01 (+136d) |  | 86d → 51d |  |  |
| 216 | create gforge release | 2008-07-18 → 2008-12-01 (+136d) | 2008-07-21 → 2008-12-02 (+134d) |  | 84d → 49d |  |  |
| 217 | Write Deployment Instructions | 2008-07-18 → 2008-12-01 (+136d) | 2008-07-21 → 2008-12-02 (+134d) |  | 85.08d → 50.08d |  |  |
| 218 | Redeploy Training Grid | 2008-10-22 → 2008-12-03 (+42d) | 2008-10-23 → 2008-12-04 (+42d) |  | 16.08d → 47.08d |  |  |
| 219 | Redeploy Staging Grid | 2008-10-24 → 2009-02-03 (+102d) | 2008-10-28 → 2009-02-05 (+100d) |  | 10.5d → 0d | 190 → 200 |  |
| 220 | Redeploy Production Grid | 2008-10-29 → 2009-02-05 (+99d) | 2008-10-31 → 2009-02-09 (+101d) |  | 10.5d → 0d |  |  |
| 221 | Update Zope / Plome | 2008-07-17 → 2008-11-28 (+134d) | 2008-07-17 → 2008-11-28 (+134d) |  | 86d → 51d |  |  |
| 222 | Update gforge | 2008-07-17 → 2008-11-28 (+134d) | 2008-07-17 → 2008-11-28 (+134d) |  | 86d → 51d |  |  |
| 223 | Send Release Announcement | 2008-10-31 → 2009-02-10 (+102d) | 2008-11-03 → 2009-02-10 (+99d) |  | 10.5d → 0d |  |  |
| 224 | Finish | 2008-11-03 → 2009-02-10 (+99d) | 2008-11-03 → 2009-02-10 (+99d) |  | 10.5d → 0d |  |  |

## Version 12 (saved 2008-10-21)

Last finish stays 2009-02-10. Complete tasks 53 → 57.

Removed: 125 DCQL (FQP) should support query modifiers; 134 ivy support for introduce-created projects; 136 Change the way schemas are loaded and resolved by introduce.; 137 Introduce extension for creating cagrid core services; 138 Introduce Software Update needs re-engineered

Changed:

| ID | Task | Start | Finish | Duration | Complete | Total float | Predecessors | Other |
| --- | --- | --- | --- | --- | --- | --- | --- | --- |
| 1 | **caGrid 1.3 Development** |  | 2008-11-27 → 2009-01-02 (+36d) | 96d? → 122d? | 33% → 42% | 53d → 27d |  |  |
| 93 | **Continuous Innovation** |  | 2008-11-27 → 2008-12-09 (+12d) | 96d? → 103.75d? |  | 26d → 18.25d |  |  |
| 96 | **Update installer** | 2008-11-24 → 2008-12-04 (+10d) | 2008-11-27 → 2008-12-09 (+12d) |  |  | 26d → 18.25d |  |  |
| 97 | Start | 2008-11-24 → 2008-12-04 (+10d) | 2008-11-24 → 2008-12-04 (+10d) |  |  | 26d → 18.25d |  |  |
| 98 | integrate latest portal release | 2008-11-25 → 2008-12-04 (+9d) | 2008-11-26 → 2008-12-08 (+12d) |  |  | 27d → 19.25d |  |  |
| 99 | integrate WF client release? | 2008-11-25 → 2008-12-04 (+9d) | 2008-11-26 → 2008-12-08 (+12d) |  |  | 27d → 19.25d |  |  |
| 100 | updates for tech stack (tomcat versions, etc) | 2008-11-25 → 2008-12-04 (+9d) | 2008-11-27 → 2008-12-09 (+12d) |  |  | 26d → 18.25d |  |  |
| 101 | Finish | 2008-11-27 → 2008-12-09 (+12d) | 2008-11-27 → 2008-12-09 (+12d) |  |  | 26d → 18.25d |  |  |
| 116 | Finish | 2008-11-27 → 2008-12-09 (+12d) | 2008-11-27 → 2008-12-09 (+12d) |  |  | 26d → 18.25d |  |  |
| 117 | **Data Services** |  |  |  | 25% → 53% |  |  |  |
| 120 | FQP should support delegation | 2008-07-17 A |  |  | 0% → 50% |  |  |  |
| 122 | FQP should support ws-notification | 2008-07-17 A |  |  | 0% → 95% |  |  |  |
| 124 | DCQL fails when some target services are down | 2008-07-17 A |  |  | 0% → 95% |  |  |  |
| 127 | Finish |  |  |  |  |  | 119, 120, 121, 122, DCQL (FQP) should support query modifiers, 125, 126, 124, 123 → 119, 120, 121, 122, 125, 126, 124, 123 |  |
| 128 | **Introduce** |  | 2008-11-10 → 2008-12-04 (+24d) | 83d? → 100.75d? | 70% → 89% | 36d → 18.25d |  |  |
| 133 | Need a way to hook in pre-deployment validation checks to enforce policy | 2008-07-17 A |  |  | 0% → 80% | 108d → 102.75d |  |  |
| 142 | Introduce Feature Freeze (milestone) |  |  |  |  | 36d → 30.75d | 130, 131, 132, ivy support for introduce-created projects, 133, Change the way schemas are loaded and resolved by introduce., Introduce extension for creating cagrid core services, Introduce Software Update needs re-engineered, 134, 135, 136, 137, 138, 139, 141, 140 → 130, 131, 132, 133, 134, 135, 136, 137, 138, 139, 141, 140 |  |
| 143 | Introduce Upgraders (1.1->1.3) |  | 2008-11-10 → 2008-11-18 (+8d) | 1d? → 6.25d? |  | 36d → 30.75d |  |  |
| 144 | Introduce Upgraders (1.2->1.3) | 2008-11-10 A | 2008-11-10 → 2008-12-04 (+24d) | 1d? → 18.75d? | 0% → 80% | 36d → 18.25d |  |  |
| 145 | Finish | 2008-11-10 → 2008-12-04 (+24d) | 2008-11-10 → 2008-12-04 (+24d) |  |  | 36d → 18.25d |  |  |
| 146 | **Security** |  |  |  | 24% → 31% |  |  |  |
| 150 | Update GAARDS UI to leverage new Authentication Profile / Trusted IdP metadata | 2008-07-18 A | 2008-07-18 A |  | 0% → 100% | 117d → none |  |  |
| 158 | Add Authentication Profile Metadata to Dorian. | 2008-11-19 A | 2008-11-19 A |  | 0% → 100% | 26d → none |  |  |
| 159 | Extend Trusted Identity Provider information to include information regarding the IdP's Authentication Service | 2008-11-20 A | 2008-11-21 A |  | 0% → 100% | 26d → none |  |  |
| 160 | Add Trusted IdP metadata to Dorian | 2008-11-24 A | 2008-11-24 A |  | 0% → 100% | 26d → none |  |  |
| 170 | Code Freeze | 2008-11-24 → 2008-12-04 (+10d) | 2008-11-24 → 2008-12-04 (+10d) |  |  | 26d → 18.25d |  |  |
| 171 | Finish | 2008-11-27 → 2009-01-02 (+36d) | 2008-11-27 → 2009-01-02 (+36d) |  |  | 26d → 0d |  | constraint none → finish no earlier than 2009-01-02 |
| 173 | Start | 2008-11-27 → 2009-01-02 (+36d) | 2008-11-27 → 2009-01-02 (+36d) |  |  | 26d → 0d |  |  |
| 174 | **Documentation** | 2008-11-27 → 2009-01-02 (+36d) | 2008-12-04 → 2009-01-09 (+36d) |  |  | 48.36d → 22.36d |  |  |
| 175 | Start | 2008-11-27 → 2009-01-02 (+36d) | 2008-11-27 → 2009-01-02 (+36d) |  |  | 48.36d → 22.36d |  |  |
| 176 | Update Administrator Guide | 2008-11-28 → 2009-01-05 (+38d) | 2008-12-02 → 2009-01-07 (+36d) |  |  | 50.5d → 24.5d |  |  |
| 177 | Update Install Guide | 2008-11-28 → 2009-01-05 (+38d) | 2008-12-01 → 2009-01-06 (+36d) |  |  | 51.74d → 25.74d |  |  |
| 178 | Update User Guide | 2008-11-28 → 2009-01-05 (+38d) | 2008-12-01 → 2009-01-06 (+36d) |  |  | 48.36d → 22.36d |  |  |
| 179 | Update design documents | 2008-12-01 → 2009-01-06 (+36d) | 2008-12-02 → 2009-01-07 (+36d) |  |  | 48.36d → 22.36d |  |  |
| 180 | Update caGrid overview | 2008-12-02 → 2009-01-07 (+36d) | 2008-12-03 → 2009-01-08 (+36d) |  |  | 48.36d → 22.36d |  |  |
| 181 | Update wiki | 2008-12-03 → 2009-01-08 (+36d) | 2008-12-04 → 2009-01-09 (+36d) |  |  | 48.36d → 22.36d |  |  |
| 182 | Finish | 2008-12-04 → 2009-01-09 (+36d) | 2008-12-04 → 2009-01-09 (+36d) |  |  | 48.36d → 22.36d |  |  |
| 196 | **Deployment** | 2008-11-27 → 2009-01-02 (+36d) |  | 53d? → 27d? |  |  |  |  |
| 197 | Start | 2008-11-27 → 2009-01-02 (+36d) | 2008-11-27 → 2009-01-02 (+36d) |  |  | 47.08d → 21.08d |  |  |
| 198 | Create release notes | 2008-12-01 → 2009-01-06 (+36d) | 2008-12-01 → 2009-01-06 (+36d) |  |  | 49d → 23d |  |  |
| 199 | Create 1.3 target_grid configurations | 2008-12-02 → 2009-01-07 (+36d) | 2008-12-03 → 2009-01-08 (+36d) |  |  | 49d → 23d |  |  |
| 206 | Update LICENSE | 2008-11-28 → 2009-01-05 (+38d) | 2008-11-28 → 2009-01-05 (+38d) |  |  | 47.08d → 21.08d |  |  |
| 207 | Validate core services' metadata | 2008-11-28 → 2009-01-05 (+38d) | 2008-12-01 → 2009-01-06 (+36d) |  |  | 50d → 24d |  |  |
| 208 | publish release IVY repositories | 2008-12-01 → 2009-01-06 (+36d) | 2008-12-03 → 2009-01-08 (+36d) |  |  | 48d → 22d |  |  |
| 209 | create installer release | 2008-12-01 → 2009-01-06 (+36d) | 2008-12-02 → 2009-01-07 (+36d) |  |  | 47.08d → 21.08d |  |  |
| 210 | post installer properties file to FTP site | 2008-11-28 → 2009-01-05 (+38d) | 2008-12-01 → 2009-01-06 (+36d) |  |  | 51d → 25d |  |  |
| 211 | create gforge release | 2008-12-01 → 2009-01-06 (+36d) | 2008-12-02 → 2009-01-07 (+36d) |  |  | 49d → 23d |  |  |
| 212 | Write Deployment Instructions | 2008-12-01 → 2009-01-06 (+36d) | 2008-12-02 → 2009-01-07 (+36d) |  |  | 50.08d → 24.08d |  |  |
| 213 | Redeploy Training Grid | 2008-12-03 → 2009-01-08 (+36d) | 2008-12-04 → 2009-01-09 (+36d) |  |  | 47.08d → 21.08d |  |  |
| 216 | Update Zope / Plome | 2008-11-28 → 2009-01-05 (+38d) | 2008-11-28 → 2009-01-05 (+38d) |  |  | 51d → 25d |  |  |
| 217 | Update gforge | 2008-11-28 → 2009-01-05 (+38d) | 2008-11-28 → 2009-01-05 (+38d) |  |  | 51d → 25d |  |  |

## Version 13 (saved 2008-10-31)

Last finish stays 2009-02-10. Complete tasks 57 → 60.

Changed:

| ID | Task | Start | Finish | Complete | Total float |
| --- | --- | --- | --- | --- | --- |
| 1 | **caGrid 1.3 Development** |  |  | 42% → 43% |  |
| 117 | **Data Services** |  |  | 53% → 63% |  |
| 122 | FQP should support ws-notification |  | 2008-07-23 A | 95% → 100% | 114d → none |
| 125 | Add additional utilities for working with query results | 2008-07-17 A | 2008-07-23 A | 0% → 100% | 114d → none |
| 128 | **Introduce** |  |  | 89% → 91% |  |
| 133 | Need a way to hook in pre-deployment validation checks to enforce policy |  | 2008-07-30 A | 80% → 100% | 102.75d → none |

## Version 14 (saved 2008-11-06)

Last finish stays 2009-02-10. Complete tasks 60 → 63.

Added:

| ID | Task | Duration | Start | Finish | Predecessors | Resources |
| --- | --- | --- | --- | --- | --- | --- |
| 77 | SDK 3.2 query processor makes potentially slow probing query | 1d | 2008-07-17 A | 2008-07-17 A | 47 | David Ervin [80%] |
| 78 | Haste storyTearDown() never gets in some situations | 1d | 2008-07-17 A | 2008-07-17 A | 47 | David Ervin [80%] |

Changed:

| ID | Task | Start | Finish | Complete | Total float | Predecessors |
| --- | --- | --- | --- | --- | --- | --- |
| 1 | **caGrid 1.3 Development** |  |  | 43% → 44% |  |  |
| 46 | **Bug Fixes** |  |  | 38% → 41% |  |  |
| 79 | Finish |  |  |  |  | 48, 49, 50, 51, 52, 53, 54, 55, 56, 57, 58, 59, 60, 61, 62, 63, 64, 65, 66, 67, 68, 69, 70, 71, 72, 73, 74, 76, 75 → 48, 49, 50, 51, 52, 53, 54, 55, 56, 57, 58, 59, 60, 61, 62, 63, 64, 65, 66, 67, 68, 69, 70, 71, 72, 73, 74, 75, 76, 78, 77 |
| 80 | **WebSSO** |  |  | 67% → 78% |  |  |
| 88 | Create an Installer | 2008-07-17 A |  | 0% → 60% |  |  |
| 92 | Support out-of-box integration with Liferay (caGrid Portal 2.x) | 2008-07-17 A |  | 0% → 80% |  |  |
| 119 | **Data Services** |  |  | 63% → 67% |  |  |
| 128 | silent exceptions (no service properties from custom query processor) when adding a custom query processor using Introduce data extension | 2008-07-17 A | 2008-07-18 A | 0% → 100% | 117d → none |  |

## Version 15 (saved 2008-12-03)

Last finish stays 2009-02-10. Complete tasks 63 → 66.

Changed:

| ID | Task | Start | Finish | Complete | Total float |
| --- | --- | --- | --- | --- | --- |
| 1 | **caGrid 1.3 Development** |  |  | 44% → 46% |  |
| 3 | **Gold Compatibility** |  |  | 27% → 35% |  |
| 17 | **caDSR Grid Service Replacement** |  |  | 4% → 26% |  |
| 18 | Start | 2008-07-17 A | 2008-07-17 A | 0% → 100% | 98d → none |
| 19 | Design |  | 2008-07-24 A | 25% → 100% | 113d → none |
| 20 | Development | 2008-07-18 A |  | 0% → 20% |  |
| 46 | **Bug Fixes** |  |  | 41% → 44% |  |
| 57 | Grid Grouper Authorization not configured but service can be deployed | 2008-07-17 A | 2008-07-17 A | 0% → 100% | 118d → none |

## Version 16 (saved 2008-12-04)

Note of the change: updated per dev call

Last finish stays 2009-02-10. Complete tasks 66 → 71.

Added:

| ID | Task | Duration | Start | Finish | Predecessors | Resources |
| --- | --- | --- | --- | --- | --- | --- |
| 100 | Refactor Installer (Desktop only, no Server/Service) | 10d | 2008-12-04 A | 2008-12-18 | 99 | Shannon Hastings [80%] |

Changed:

| ID | Task | Start | Finish | Duration | Complete | Total float | Predecessors |
| --- | --- | --- | --- | --- | --- | --- | --- |
| 1 | **caGrid 1.3 Development** |  |  |  | 46% → 48% |  |  |
| 95 | **Continuous Innovation** |  | 2008-12-09 → 2008-12-22 (+13d) | 103.75d? → 112.75d? | 5% → 14% | 18.25d → 9.25d |  |
| 98 | **Update installer** | 2008-12-04 A | 2008-12-09 → 2008-12-22 (+13d) | 3d → 12d | 0% → 18% | 18.25d → 9.25d |  |
| 99 | Start | 2008-12-04 A | 2008-12-04 A |  | 0% → 100% | 18.25d → none |  |
| 101 | integrate latest portal release | 2008-12-04 → 2008-12-18 (+14d) | 2008-12-08 → 2008-12-22 (+14d) |  |  | 19.25d → 9.25d | 99 → 100 |
| 104 | Finish | 2008-12-09 → 2008-12-22 (+13d) | 2008-12-09 → 2008-12-22 (+13d) |  |  | 18.25d → 9.25d |  |
| 119 | Finish | 2008-12-09 → 2008-12-22 (+13d) | 2008-12-09 → 2008-12-22 (+13d) |  |  | 18.25d → 9.25d |  |
| 131 | **Introduce** |  | 2008-12-04 A |  | 91% → 100% | 18.25d → none |  |
| 145 | Introduce Feature Freeze (milestone) | 2008-11-07 A | 2008-11-07 A |  | 0% → 100% | 30.75d → none |  |
| 146 | Introduce Upgraders (1.1->1.3) | 2008-11-10 A | 2008-11-18 A |  | 0% → 100% | 30.75d → none |  |
| 147 | Introduce Upgraders (1.2->1.3) |  | 2008-12-04 A |  | 80% → 100% | 18.25d → none |  |
| 148 | Finish | 2008-12-04 A | 2008-12-04 A |  | 0% → 100% | 18.25d → none |  |

## Version 17 (saved 2009-02-03)

Last finish 2009-02-10 → 2009-03-03 (+21d). Complete tasks 71 → 123.

Removed: 169 Incubation; 170 Start; 171 WSRF.NET (support); 172 FInish

Changed:

| ID | Task | Start | Finish | Duration | Complete | Total float | Predecessors | Other |
| --- | --- | --- | --- | --- | --- | --- | --- | --- |
| 1 | **caGrid 1.3 Development** |  |  |  | 48% → 72% | 27d → 42d |  |  |
| 3 | **Gold Compatibility** |  |  |  | 35% → 87% | 98d → 143d |  |  |
| 4 | **GME Rewrite** |  | 2008-08-14 A |  | 48% → 100% | 98d → none |  |  |
| 10 | Metadata and WSDL reflect service operations |  | 2008-07-18 A |  | 50% → 100% | 117d → none |  |  |
| 11 | Update/Delete non-production schemas |  | 2008-07-24 A |  | 75% → 100% | 113d → none |  |  |
| 12 | Associate Arbitrarty Metadata or Annotations | 2008-07-18 A | 2008-07-31 A |  | 0% → 100% | 108d → none |  |  |
| 13 | Validate that XML conforms to schema in GME | 2008-07-18 A | 2008-07-24 A |  | 0% → 100% | 113d → none |  |  |
| 15 | Non-RFE Development |  | 2008-08-14 A |  | 40% → 100% | 98d → none |  |  |
| 16 | Finish | 2008-08-14 A | 2008-08-14 A |  | 0% → 100% | 98d → none |  |  |
| 17 | **caDSR Grid Service Replacement** |  | 2008-08-14 A |  | 26% → 100% | 98d → none |  |  |
| 20 | Development |  | 2008-08-14 A |  | 20% → 100% | 98d → none |  |  |
| 21 | Migration of code depenedencies on caDSR grid service (Introduce extensions) | 2008-07-18 A | 2008-07-24 A |  | 0% → 100% | 113d → none |  |  |
| 22 | Developer Testing | 2008-07-18 A | 2008-07-24 A |  | 0% → 100% | 113d → none |  |  |
| 23 | Finish | 2008-08-14 A | 2008-08-14 A |  | 0% → 100% | 98d → none |  |  |
| 80 | **WebSSO** |  |  |  | 78% → 92% | 117d → 162d |  |  |
| 88 | Create an Installer | 2008-07-17 A → 2008-07-17 |  |  | 60% → 0% | 118d → 163d |  |  |
| 89 | Author System Tests for WebSSO | 2008-07-17 A | 2008-07-17 A |  | 0% → 100% | 118d → none |  |  |
| 92 | Support out-of-box integration with Liferay (caGrid Portal 2.x) |  | 2008-07-17 A |  | 80% → 100% | 118d → none |  |  |
| 93 | Enhance existing documentation | 2008-07-17 A | 2008-07-17 A |  | 0% → 100% | 118d → none |  |  |
| 94 | Finish | 2008-07-18 A | 2008-07-18 A |  | 0% → 100% | 117d → none |  |  |
| 95 | **Continuous Innovation** |  | 2008-12-22 A |  | 14% → 100% | 9.25d → none |  |  |
| 98 | **Update installer** |  | 2008-12-22 A |  | 18% → 100% | 9.25d → none |  |  |
| 100 | Refactor Installer (Desktop only, no Server/Service) |  | 2008-12-18 A |  | 30% → 100% | 9.25d → none |  |  |
| 101 | integrate latest portal release | 2008-12-18 A | 2008-12-22 A |  | 0% → 100% | 9.25d → none |  |  |
| 102 | integrate WF client release? | 2008-12-04 A | 2008-12-08 A |  | 0% → 100% | 19.25d → none |  |  |
| 103 | updates for tech stack (tomcat versions, etc) | 2008-12-04 A | 2008-12-09 A |  | 0% → 100% | 18.25d → none |  |  |
| 104 | Finish | 2008-12-22 A | 2008-12-22 A |  | 0% → 100% | 9.25d → none |  |  |
| 105 | Remove old EVS grid service | 2008-07-18 A | 2008-07-18 A |  | 0% → 100% | 120d → none |  |  |
| 106 | Remove old caDSR grid service | 2008-07-18 A | 2008-07-18 A |  | 0% → 100% | 120d → none |  |  |
| 107 | **Update core caGrid Services using Introduce 1.3** | 2008-11-07 A | 2008-11-10 A |  | 0% → 100% | 39d → none |  |  |
| 108 | Start | 2008-11-07 A | 2008-11-07 A |  | 0% → 100% | 39d → none |  |  |
| 109 | Dorian | 2008-11-10 A | 2008-11-10 A |  | 0% → 100% | 39d → none |  |  |
| 110 | Authentication Service | 2008-11-10 A | 2008-11-10 A |  | 0% → 100% | 39d → none |  |  |
| 111 | GTS Master | 2008-11-10 A | 2008-11-10 A |  | 0% → 100% | 39d → none |  |  |
| 112 | GTS Slave | 2008-11-10 A | 2008-11-10 A |  | 0% → 100% | 39d → none |  |  |
| 113 | CDS | 2008-11-10 A | 2008-11-10 A |  | 0% → 100% | 39d → none |  |  |
| 114 | Grouper | 2008-11-10 A | 2008-11-10 A |  | 0% → 100% | 39d → none |  |  |
| 115 | GME | 2008-11-10 A | 2008-11-10 A |  | 0% → 100% | 39d → none |  |  |
| 116 | FQP | 2008-11-10 A | 2008-11-10 A |  | 0% → 100% | 39d → none |  |  |
| 117 | Workflow | 2008-11-10 A | 2008-11-10 A |  | 0% → 100% | 39d → none |  |  |
| 118 | Finish | 2008-11-10 A | 2008-11-10 A |  | 0% → 100% | 39d → none |  |  |
| 119 | Finish | 2008-12-22 A | 2008-12-22 A |  | 0% → 100% | 9.25d → none |  |  |
| 127 | DCQL fails when some target services are down |  | 2008-07-23 A |  | 95% → 100% | 143d → none |  |  |
| 130 | Finish | 2008-10-16 A | 2008-10-16 A |  | 0% → 100% | 82d → none |  |  |
| 149 | **Security** |  |  |  | 31% → 79% | 55d → 71d |  |  |
| 164 | Move from issuing Proxy Certificates to Issuing short term certificates. | 2008-07-18 A | 2008-07-31 A |  | 0% → 100% | 137d → none |  |  |
| 165 | Enable Dorian Host Certificates to work with new version of IE and Firefox | 2008-07-18 A | 2008-07-22 A |  | 0% → 100% | 144d → none |  |  |
| 166 | Add Account Audting to Dorian | 2008-07-18 A | 2008-07-31 A |  | 0% → 100% | 137d → none |  |  |
| 167 | Reformat GAARDS UI to display properly on the MAC | 2008-07-18 A | 2008-07-31 A |  | 0% → 100% | 137d → none |  |  |
| 168 | Finish | 2008-11-24 A | 2008-11-24 A |  | 0% → 100% | 55d → none |  |  |
| 169 | Code Freeze | 2008-12-04 A | 2008-12-04 A |  | 0% → 100% | 48.25d → none | 16, 23, 35, 45, 79, 94, 130, 148, 168, FInish → 16, 23, 35, 45, 79, 94, 130, 148, 168 |  |
| 170 | Finish | 2009-01-02 A | 2009-01-02 A |  | 0% → 100% | 0d → none |  |  |
| 171 | **caGrid 1.3 Transition** | 2008-11-10 → 2009-01-02 A (+53d) | 2009-02-10 → 2009-03-03 (+21d) | 67d? → 42d? | 0% → 9% |  |  |  |
| 173 | **Documentation** | 2009-01-02 A |  |  |  | 22.36d → 37.36d |  |  |
| 174 | Start | 2009-01-02 A | 2009-01-02 A |  | 0% → 100% | 22.36d → none |  |  |
| 182 | **Quality Assurance** | 2008-11-10 → 2009-01-26 A (+77d) | 2009-02-02 → 2009-02-23 (+21d) | 61d? → 21d? |  |  |  |  |
| 183 | Start | 2009-01-05 → 2009-01-26 A (+21d) | 2009-01-05 → 2009-01-26 A (+21d) |  | 0% → 100% | 0d → none |  | constraint start no earlier than 2009-01-05 → start no earlier than 2009-01-26 |
| 184 | Redeploy QA Grid | 2009-01-05 → 2009-02-16 (+42d) | 2009-01-09 → 2009-02-20 (+42d) |  |  | 21d → 6d |  | constraint none → start no earlier than 2009-02-16 |
| 185 | Test GME | 2009-01-12 → 2009-02-23 (+42d) | 2009-01-12 → 2009-02-23 (+42d) |  |  | 21d → 6d |  |  |
| 186 | Test caDSR Replacement | 2009-01-05 → 2009-01-26 (+21d) | 2009-01-05 → 2009-01-26 (+21d) |  |  |  |  |  |
| 187 | Test WebSSO | 2009-01-05 → 2009-01-26 (+21d) | 2009-01-05 → 2009-01-26 (+21d) |  |  |  |  |  |
| 188 | Test release on new tech stack | 2009-01-05 → 2009-01-26 (+21d) | 2009-01-05 → 2009-01-26 (+21d) |  |  |  |  |  |
| 189 | Test Introduce | 2008-11-10 → 2009-01-26 (+77d) | 2008-11-14 → 2009-01-30 (+77d) |  |  | 62d → 22d | 145 → 183, 145 |  |
| 190 | Test Security | 2009-01-05 → 2009-01-26 (+21d) | 2009-01-05 → 2009-01-26 (+21d) |  |  |  |  |  |
| 191 | Test Data Services | 2009-01-05 → 2009-01-26 (+21d) | 2009-01-05 → 2009-01-26 (+21d) |  |  |  |  |  |
| 192 | Test caGrid 1.3 Grid Services | 2009-01-05 → 2009-01-26 (+21d) | 2009-01-05 → 2009-01-26 (+21d) |  |  | 0d → 0.5d |  |  |
| 193 | Test QA integration scenarios | 2009-01-06 → 2009-01-27 (+21d) | 2009-02-02 → 2009-02-23 (+21d) |  |  | 0d → 0.5d |  |  |
| 194 | Finish | 2009-02-02 → 2009-02-23 (+21d) | 2009-02-02 → 2009-02-23 (+21d) |  |  | 0d → 0.5d |  |  |
| 195 | **Deployment** | 2009-01-02 → 2009-01-26 A (+24d) | 2009-02-10 → 2009-03-03 (+21d) |  | 0% → 23% |  |  |  |
| 196 | Start | 2009-01-02 → 2009-01-26 A (+24d) | 2009-01-02 → 2009-01-26 A (+24d) |  | 0% → 100% | 21.08d → none |  | constraint none → start no earlier than 2009-01-26 |

| ID | Task | Start | Finish | Complete | Total float |
| --- | --- | --- | --- | --- | --- |
| 197 | Create release notes | 2009-01-06 → 2009-01-27 (+21d) | 2009-01-06 → 2009-01-27 (+21d) |  | 23d → 25d |
| 198 | Create 1.3 target_grid configurations | 2009-01-07 → 2009-01-28 A (+21d) | 2009-01-08 → 2009-01-29 A (+21d) | 0% → 100% | 23d → none |
| 199 | **Create 1.3 release branch in CVS** | 2009-02-02 → 2009-02-23 A (+21d) | 2009-02-03 → 2009-02-24 A (+21d) | 0% → 100% | 5d → none |
| 200 | Start | 2009-02-02 → 2009-02-23 A (+21d) | 2009-02-02 → 2009-02-23 A (+21d) | 0% → 100% | 5d → none |
| 201 | Update project versions | 2009-02-03 → 2009-02-24 A (+21d) | 2009-02-03 → 2009-02-24 A (+21d) | 0% → 100% | 5d → none |
| 202 | update eclipse projects | 2009-02-03 → 2009-02-24 A (+21d) | 2009-02-03 → 2009-02-24 A (+21d) | 0% → 100% | 5d → none |
| 203 | remove any projects which wont be released in 1.3 | 2009-02-03 → 2009-02-24 A (+21d) | 2009-02-03 → 2009-02-24 A (+21d) | 0% → 100% | 5d → none |
| 204 | Finish | 2009-02-03 → 2009-02-24 A (+21d) | 2009-02-03 → 2009-02-24 A (+21d) | 0% → 100% | 5d → none |
| 205 | Update LICENSE | 2009-01-05 → 2009-01-26 A (+21d) | 2009-01-05 → 2009-01-26 A (+21d) | 0% → 100% | 21.08d → none |
| 206 | Validate core services' metadata | 2009-01-05 → 2009-01-26 (+21d) | 2009-01-06 → 2009-01-27 (+21d) |  | 24d → 24.5d |
| 207 | publish release IVY repositories | 2009-01-06 → 2009-01-27 (+21d) | 2009-01-08 → 2009-01-29 (+21d) |  | 22d → 22.5d |
| 208 | create installer release | 2009-01-06 → 2009-01-27 (+21d) | 2009-01-07 → 2009-01-28 (+21d) |  | 21.08d → 21.58d |
| 209 | post installer properties file to FTP site | 2009-01-05 → 2009-01-26 (+21d) | 2009-01-06 → 2009-01-27 (+21d) |  |  |
| 210 | create gforge release | 2009-01-06 → 2009-01-27 (+21d) | 2009-01-07 → 2009-01-28 (+21d) |  | 23d → 23.5d |
| 211 | Write Deployment Instructions | 2009-01-06 → 2009-01-27 (+21d) | 2009-01-07 → 2009-01-28 (+21d) |  |  |
| 212 | Redeploy Training Grid | 2009-01-08 → 2009-01-29 (+21d) | 2009-01-09 → 2009-01-30 (+21d) |  | 21.08d → 21.58d |
| 213 | Redeploy Staging Grid | 2009-02-03 → 2009-02-24 (+21d) | 2009-02-05 → 2009-02-26 (+21d) |  | 0d → 0.5d |
| 214 | Redeploy Production Grid | 2009-02-05 → 2009-02-26 (+21d) | 2009-02-09 → 2009-03-02 (+21d) |  | 0d → 0.5d |
| 215 | Update Zope / Plome | 2009-01-05 → 2009-01-26 A (+21d) | 2009-01-05 → 2009-01-26 (+21d) | 0% → 50% | 25d → 25.5d |
| 216 | Update gforge | 2009-01-05 → 2009-01-26 (+21d) | 2009-01-05 → 2009-01-26 (+21d) |  | 25d → 25.5d |
| 217 | Send Release Announcement | 2009-02-10 → 2009-03-03 A (+21d) | 2009-02-10 → 2009-03-03 (+21d) | 0% → 50% |  |
| 218 | Finish | 2009-02-10 → 2009-03-03 (+21d) | 2009-02-10 → 2009-03-03 (+21d) |  |  |
| 219 | Finish | 2009-02-10 → 2009-03-03 (+21d) | 2009-02-10 → 2009-03-03 (+21d) |  |  |

## Version 18 (saved 2009-04-02)

Note of the change: updated post-release

Last finish stays 2009-03-03. Complete tasks 123 → 163.

Changed:

| ID | Task | Start | Finish | Complete | Total float |
| --- | --- | --- | --- | --- | --- |
| 1 | **caGrid 1.3 Development** |  |  | 72% → 79% |  |
| 27 | **Register Object and Metadata Models** | 2008-07-18 A |  |  |  |
| 28 | Start | 2008-07-18 A | 2008-07-18 A | 0% → 100% | 157d → none |
| 120 | **Data Services** |  | 2008-10-16 A | 67% → 100% | 98d → none |
| 122 | CQL/CQL2 Integration in SDK | 2008-07-17 A | 2008-08-06 A | 0% → 100% | 149d → none |
| 123 | FQP should support delegation |  | 2008-07-23 A | 50% → 100% | 159d → none |
| 149 | **Security** |  | 2008-11-24 A | 79% → 100% | 71d → none |
| 155 | Develop system integration tests for the GTS | 2008-10-20 A | 2008-10-31 A | 0% → 100% | 86d → none |
| 156 | SyncGTS needs to use service property for sync description | 2008-11-03 A | 2008-11-03 A | 0% → 100% | 86d → none |
| 158 | Service Security Client needs a way to say to always use credential | 2008-11-06 A | 2008-11-06 A | 0% → 100% | 80d → none |
| 159 | Spring enable Dorian | 2008-11-07 A | 2008-11-11 A | 0% → 100% | 80d → none |
| 171 | **caGrid 1.3 Transition** |  |  | 9% → 99% |  |
| 173 | **Documentation** |  | 2009-01-09 A | 0% → 100% | 37.36d → none |
| 175 | Update Administrator Guide | 2009-01-05 A | 2009-01-07 A | 0% → 100% | 39.5d → none |
| 176 | Update Install Guide | 2009-01-05 A | 2009-01-06 A | 0% → 100% | 40.74d → none |
| 177 | Update User Guide | 2009-01-05 A | 2009-01-06 A | 0% → 100% | 37.36d → none |
| 178 | Update design documents | 2009-01-06 A | 2009-01-07 A | 0% → 100% | 37.36d → none |
| 179 | Update caGrid overview | 2009-01-07 A | 2009-01-08 A | 0% → 100% | 37.36d → none |
| 180 | Update wiki | 2009-01-08 A | 2009-01-09 A | 0% → 100% | 37.36d → none |
| 181 | Finish | 2009-01-09 A | 2009-01-09 A | 0% → 100% | 37.36d → none |
| 182 | **Quality Assurance** |  | 2009-02-23 A | 0% → 100% | 6d → none |
| 184 | Redeploy QA Grid | 2009-02-16 A | 2009-02-20 A | 0% → 100% | 6d → none |
| 185 | Test GME | 2009-02-23 A | 2009-02-23 A | 0% → 100% | 6d → none |
| 186 | Test caDSR Replacement | 2009-01-26 A | 2009-01-26 A | 0% → 100% | 26d → none |
| 187 | Test WebSSO | 2009-01-26 A | 2009-01-26 A | 0% → 100% | 26d → none |
| 188 | Test release on new tech stack | 2009-01-26 A | 2009-01-26 A | 0% → 100% | 26d → none |
| 189 | Test Introduce | 2009-01-26 A | 2009-01-30 A | 0% → 100% | 22d → none |
| 190 | Test Security | 2009-01-26 A | 2009-01-26 A | 0% → 100% | 26d → none |
| 191 | Test Data Services | 2009-01-26 A | 2009-01-26 A | 0% → 100% | 26d → none |
| 192 | Test caGrid 1.3 Grid Services | 2009-01-26 A | 2009-01-26 A | 0% → 100% | 0.5d → none |
| 193 | Test QA integration scenarios | 2009-01-27 A | 2009-02-23 A | 0% → 100% | 0.5d → none |
| 194 | Finish | 2009-02-23 A | 2009-02-23 A | 0% → 100% | 0.5d → none |
| 195 | **Deployment** |  | 2009-03-03 A | 23% → 100% | 0d → none |
| 197 | Create release notes | 2009-01-27 A | 2009-01-27 A | 0% → 100% | 25d → none |
| 206 | Validate core services' metadata | 2009-01-26 A | 2009-01-27 A | 0% → 100% | 24.5d → none |
| 207 | publish release IVY repositories | 2009-01-27 A | 2009-01-29 A | 0% → 100% | 22.5d → none |
| 208 | create installer release | 2009-01-27 A | 2009-01-28 A | 0% → 100% | 21.58d → none |
| 209 | post installer properties file to FTP site | 2009-01-26 A | 2009-01-27 A | 0% → 100% | 25d → none |
| 210 | create gforge release | 2009-01-27 A | 2009-01-28 A | 0% → 100% | 23.5d → none |
| 211 | Write Deployment Instructions | 2009-01-27 A | 2009-01-28 A | 0% → 100% | 24.08d → none |
| 212 | Redeploy Training Grid | 2009-01-29 A | 2009-01-30 A | 0% → 100% | 21.58d → none |
| 213 | Redeploy Staging Grid | 2009-02-24 A | 2009-02-26 A | 0% → 100% | 0.5d → none |
| 214 | Redeploy Production Grid | 2009-02-26 A | 2009-03-02 A | 0% → 100% | 0.5d → none |
| 215 | Update Zope / Plome |  | 2009-01-26 A | 50% → 100% | 25.5d → none |
| 216 | Update gforge | 2009-01-26 A | 2009-01-26 A | 0% → 100% | 25.5d → none |
| 217 | Send Release Announcement |  | 2009-03-03 A | 50% → 100% | 0d → none |
| 218 | Finish | 2009-03-03 A | 2009-03-03 A | 0% → 100% | 0d → none |
| 219 | Finish | 2009-03-03 A | 2009-03-03 A | 0% → 100% | 0d → none |
