# caGrid_Portal-2-1

How a schedule from MS Project changed from version to version. A marks actual dates.

## Version 1 (saved 2008-11-07)

| ID | WBS | Task | Duration | Start | Finish | Predecessors | Total float | Constraint |
| --- | --- | --- | --- | --- | --- | --- | --- | --- |
| 1 | 1.0 | **caGrid Portal 2.2** | 38.4d? | 2008-11-05 | 2008-12-29 |  | 0d |  |
| 2 |  | Start | 0d | 2008-11-05 | 2008-11-05 |  | 0d | start no earlier than 2008-11-05 |
| 3 | 1.2 | **Bug Fixes** | 1d? | 2008-11-05 | 2008-11-05 |  | 28.3d |  |
| 4 |  | Start | 0d | 2008-11-05 | 2008-11-05 | 2 | 15.8d |  |
| 5 |  | training grid syncgts URLs need to be updated | 1d | 2008-11-05 | 2008-11-05 | 4 | 28.3d |  |
| 6 |  | Portal does not delete local user account when deleting liferay user account | 1d? | 2008-11-05 | 2008-11-05 | 4 | 28.3d |  |
| 9 |  | Finish | 0d | 2008-11-05 | 2008-11-05 | 5, 6 | 28.3d |  |
| 10 | 1.3 | **Enhancements** | 29.3d? | 2008-11-05 | 2008-12-16 |  | 0d |  |
| 11 |  | Start | 0d | 2008-11-05 | 2008-11-05 | 2 | 0d |  |
| 12 |  | Page Loading Performance Enhancements | 1d? | 2008-11-05 | 2008-11-12 | 11 | 0d |  |
| 13 |  | Upgrade to Latest Liferay | 1d? | 2008-11-12 | 2008-11-13 | 12 | 0d |  |
| 14 |  | Tech Stack Update to Latest Spring and Hibernate | 1d? | 2008-11-13 | 2008-11-14 | 13 | 0d |  |
| 15 |  | Aggregation Performance Enhancements | 1d? | 2008-11-14 | 2008-12-09 | 14 | 0d |  |
| 16 |  | Refactor Build Process to Support IVY | 1d? | 2008-12-09 | 2008-12-10 | 15 | 0d |  |
| 17 |  | Deployment Refactor to Support non-Root Context | 1d? | 2008-12-10 | 2008-12-11 | 16 | 0d |  |
| 18 |  | Community Portlets: Use Cases and SOPs | 1d? | 2008-12-11 | 2008-12-12 | 17 | 0d |  |
| 19 |  | Investigate Feasibility and Performance of WSRP | 1d? | 2008-12-12 | 2008-12-15 | 18 | 0d |  |
| 20 |  | Support Usability Analysis | 1d? | 2008-12-15 | 2008-12-16 | 19 | 0d |  |
| 21 |  | Finish | 0d | 2008-12-16 | 2008-12-16 | 12, 13, 14, 15, 16, 17, 18, 19, 20 | 0d |  |
| 22 | 1.4 | **Documentation** | 7.6d | 2008-12-16 | 2008-12-25 |  | 0d |  |
| 23 |  | Start | 0d | 2008-12-16 | 2008-12-16 | 9, 21 | 0d | start no earlier than 2008-09-22 |
| 24 |  | Update Admin Guide | 4d | 2008-12-16 | 2008-12-22 | 23 | 3.6d |  |
| 25 |  | Update Install Guide | 3d | 2008-12-16 | 2008-12-22 | 23 | 3.3d |  |
| 26 |  | Update User Guide | 5d | 2008-12-16 | 2008-12-25 | 23 | 0d |  |
| 27 |  | Release Notes | 0.5d | 2008-12-23 | 2008-12-23 | 23 | 2.1d |  |
| 28 |  | Finish | 0d | 2008-12-25 | 2008-12-25 | 24, 25, 26, 27 | 0d |  |
| 29 | 1.5 | **QA** | 3d? | 2008-12-16 | 2008-12-19 |  | 0.6d |  |
| 30 |  | Start | 0d | 2008-12-16 | 2008-12-16 | 9, 21 | 0.6d |  |
| 31 |  | QA Iteration 1 (December) | 1d? | 2008-12-16 | 2008-12-17 | 30 | 0.6d |  |
| 32 |  | QA Iteration 2 (January) | 1d? | 2008-12-17 | 2008-12-18 | 31 | 0.6d |  |
| 33 |  | QA Iteration 3 (February) | 1d? | 2008-12-18 | 2008-12-19 | 32 | 0.6d |  |
| 34 |  | Finish | 0d | 2008-12-19 | 2008-12-19 | 33 | 0.6d |  |
| 35 | 1.6 | **Deployment** | 6.1d | 2008-12-19 | 2008-12-29 |  | 0d |  |
| 36 |  | Start | 0d | 2008-12-19 | 2008-12-19 | 34 | 0.6d |  |
| 37 |  | Stage | 1d | 2008-12-19 | 2008-12-22 | 36 | 0.6d |  |
| 38 |  | App Scan | 3d | 2008-12-22 | 2008-12-25 | 37 | 0.6d |  |
| 39 |  | Production | 1d | 2008-12-25 | 2008-12-26 | 38, 28 | 0d |  |
| 40 |  | Update gforge | 0.5d | 2008-12-19 | 2008-12-19 | 36 | 5.6d |  |
| 41 |  | Send Release Announcement | 0.5d | 2008-12-26 | 2008-12-29 | 39 | 0d |  |
| 42 |  | Finish | 0d | 2008-12-29 | 2008-12-29 | 41 | 0d |  |
| 43 |  | Finish | 0d | 2008-12-29 | 2008-12-29 | 42 | 0d |  |

## Version 2 (saved 2008-11-12)

Last finish 2008-12-29 → 2009-02-19 (+52d). Complete tasks 0 → 2.

Removed: 15 Aggregation Performance Enhancements

Changed:

| ID | Task | Start | Finish | Duration | Complete | Total float | Predecessors |
| --- | --- | --- | --- | --- | --- | --- | --- |
| 1 | **caGrid Portal 2.2** | 2008-11-05 A | 2008-12-29 → 2009-02-19 (+52d) | 38.4d? → 72.6d? |  |  |  |
| 3 | **Bug Fixes** | 2008-11-05 A |  | 1d? → 0.5d |  | 28.3d → 63d |  |
| 4 | Start | 2008-11-05 A | 2008-11-05 A |  | 0% → 100% | 15.8d → none |  |
| 5 | training grid syncgts URLs need to be updated |  |  | 1d → 0.5d |  | 28.3d → 63d |  |
| 6 | Portal does not delete local user account when deleting liferay user account |  |  | 1d? → 0.5d |  | 28.3d → 63d |  |
| 8 | **Enhancements** | 2008-11-05 A | 2008-12-16 → 2009-02-06 (+52d) | 29.3d? → 63.5d |  |  |  |
| 9 | Start | 2008-11-05 A | 2008-11-05 A |  | 0% → 100% | 0d → none |  |
| 10 | Page Loading Performance Enhancements |  | 2008-11-12 → 2008-11-26 (+14d) | 1d? → 10d |  |  |  |
| 11 | Upgrade to Latest Liferay | 2008-11-12 → 2008-11-26 (+14d) | 2008-11-13 → 2008-12-04 (+21d) | 1d? → 5d |  |  |  |
| 12 | Tech Stack Update to Latest Spring and Hibernate | 2008-11-13 → 2008-12-04 (+21d) | 2008-11-14 → 2008-12-11 (+27d) | 1d? → 5d |  |  |  |
| 13 | Refactor Build Process to Support IVY | 2008-12-09 → 2008-12-11 (+2d) | 2008-12-10 → 2008-12-26 (+16d) | 1d? → 10d |  |  | Aggregation Performance Enhancements → 12 |
| 14 | Deployment Refactor to Support non-Root Context | 2008-12-10 → 2008-12-26 (+16d) | 2008-12-11 → 2008-12-31 (+20d) | 1d? → 3d |  |  |  |
| 15 | Community Portlets: Use Cases and SOPs | 2008-12-11 → 2008-12-31 (+20d) | 2008-12-12 → 2009-01-16 (+35d) | 1d? → 11d |  |  |  |
| 16 | Investigate Feasibility and Performance of WSRP | 2008-12-12 → 2009-01-16 (+35d) | 2008-12-15 → 2009-01-30 (+46d) | 1d? → 10d |  |  |  |
| 17 | Support Usability Analysis | 2008-12-15 → 2009-01-30 (+46d) | 2008-12-16 → 2009-02-06 (+52d) | 1d? → 5d |  |  |  |
| 18 | Finish | 2008-12-16 → 2009-02-06 (+52d) | 2008-12-16 → 2009-02-06 (+52d) |  |  |  | 10, 11, 12, Aggregation Performance Enhancements, 13, 14, 15, 16, 17 → 10, 11, 12, 13, 14, 15, 16, 17 |
| 19 | **Documentation** | 2008-12-16 → 2009-02-06 (+52d) | 2008-12-25 → 2009-02-18 (+55d) |  |  |  |  |
| 20 | Start | 2008-12-16 → 2009-02-06 (+52d) | 2008-12-16 → 2009-02-06 (+52d) |  |  |  |  |
| 21 | Update Admin Guide | 2008-12-16 → 2009-02-06 (+52d) | 2008-12-22 → 2009-02-12 (+52d) |  |  |  |  |
| 22 | Update Install Guide | 2008-12-16 → 2009-02-06 (+52d) | 2008-12-22 → 2009-02-12 (+52d) |  |  |  |  |
| 23 | Update User Guide | 2008-12-16 → 2009-02-06 (+52d) | 2008-12-25 → 2009-02-18 (+55d) |  |  |  |  |
| 24 | Release Notes | 2008-12-23 → 2009-02-13 (+52d) | 2008-12-23 → 2009-02-13 (+52d) |  |  |  |  |
| 25 | Finish | 2008-12-25 → 2009-02-18 (+55d) | 2008-12-25 → 2009-02-18 (+55d) |  |  |  |  |
| 26 | **QA** | 2008-12-16 → 2009-02-06 (+52d) | 2008-12-19 → 2009-02-11 (+54d) |  |  |  |  |
| 27 | Start | 2008-12-16 → 2009-02-06 (+52d) | 2008-12-16 → 2009-02-06 (+52d) |  |  |  |  |
| 28 | QA Iteration 1 (December) | 2008-12-16 → 2009-02-06 (+52d) | 2008-12-17 → 2009-02-09 (+54d) |  |  |  |  |
| 29 | QA Iteration 2 (January) | 2008-12-17 → 2009-02-09 (+54d) | 2008-12-18 → 2009-02-10 (+54d) |  |  |  |  |
| 30 | QA Iteration 3 (February) | 2008-12-18 → 2009-02-10 (+54d) | 2008-12-19 → 2009-02-11 (+54d) |  |  |  |  |
| 31 | Finish | 2008-12-19 → 2009-02-11 (+54d) | 2008-12-19 → 2009-02-11 (+54d) |  |  |  |  |
| 32 | **Deployment** | 2008-12-19 → 2009-02-11 (+54d) | 2008-12-29 → 2009-02-19 (+52d) |  |  |  |  |
| 33 | Start | 2008-12-19 → 2009-02-11 (+54d) | 2008-12-19 → 2009-02-11 (+54d) |  |  |  |  |
| 34 | Stage | 2008-12-19 → 2009-02-11 (+54d) | 2008-12-22 → 2009-02-12 (+52d) |  |  |  |  |
| 35 | App Scan | 2008-12-22 → 2009-02-12 (+52d) | 2008-12-25 → 2009-02-17 (+54d) |  |  |  |  |
| 36 | Production | 2008-12-25 → 2009-02-18 (+55d) | 2008-12-26 → 2009-02-19 (+55d) |  |  |  |  |
| 37 | Update gforge | 2008-12-19 → 2009-02-11 (+54d) | 2008-12-19 → 2009-02-11 (+54d) |  |  |  |  |
| 38 | Send Release Announcement | 2008-12-26 → 2009-02-19 (+55d) | 2008-12-29 → 2009-02-19 (+52d) |  |  |  |  |
| 39 | Finish | 2008-12-29 → 2009-02-19 (+52d) | 2008-12-29 → 2009-02-19 (+52d) |  |  |  |  |
| 40 | Finish | 2008-12-29 → 2009-02-19 (+52d) | 2008-12-29 → 2009-02-19 (+52d) |  |  |  |  |

## Version 3 (saved 2008-12-03)

Last finish 2009-02-19 → 2009-03-06 (+15d). Complete tasks 2 → 5.

Changed:

| ID | Task | Start | Finish | Duration | Complete | Total float |
| --- | --- | --- | --- | --- | --- | --- |
| 1 | **caGrid Portal 2.2** |  | 2009-02-19 → 2009-03-06 (+15d) | 72.6d? → 84d | 0% → 16% |  |
| 8 | **Enhancements** |  |  |  | 0% → 17% |  |
| 10 | Page Loading Performance Enhancements | 2008-11-05 A | 2008-11-26 A |  | 0% → 100% | 0d → none |
| 26 | **QA** | 2009-02-06 A | 2009-02-11 → 2009-02-27 (+16d) | 3d? → 15d | 0% → 33% | 0.6d → 0d |
| 27 | Start | 2009-02-06 A | 2009-02-06 A |  | 0% → 100% | 0.6d → none |
| 28 | QA Iteration 1 (December) | 2009-02-06 A | 2009-02-09 → 2009-02-13 A (+4d) | 1d? → 5d | 0% → 100% | 0.6d → none |
| 29 | QA Iteration 2 (January) | 2009-02-09 → 2009-02-13 (+4d) | 2009-02-10 → 2009-02-20 (+10d) | 1d? → 5d |  | 0.6d → 0d |
| 30 | QA Iteration 3 (February) | 2009-02-10 → 2009-02-20 (+10d) | 2009-02-11 → 2009-02-27 (+16d) | 1d? → 5d |  | 0.6d → 0d |
| 31 | Finish | 2009-02-11 → 2009-02-27 (+16d) | 2009-02-11 → 2009-02-27 (+16d) |  |  | 0.6d → 0d |
| 32 | **Deployment** | 2009-02-11 → 2009-02-27 (+16d) | 2009-02-19 → 2009-03-06 (+15d) | 6.1d → 5.5d |  |  |
| 33 | Start | 2009-02-11 → 2009-02-27 (+16d) | 2009-02-11 → 2009-02-27 (+16d) |  |  | 0.6d → 0d |
| 34 | Stage | 2009-02-11 → 2009-02-27 (+16d) | 2009-02-12 → 2009-03-02 (+18d) |  |  | 0.6d → 0d |
| 35 | App Scan | 2009-02-12 → 2009-03-02 (+18d) | 2009-02-17 → 2009-03-05 (+16d) |  |  | 0.6d → 0d |
| 36 | Production | 2009-02-18 → 2009-03-05 (+15d) | 2009-02-19 → 2009-03-06 (+15d) |  |  |  |
| 37 | Update gforge | 2009-02-11 → 2009-02-27 (+16d) | 2009-02-11 → 2009-02-27 (+16d) |  |  | 5.6d → 5d |
| 38 | Send Release Announcement | 2009-02-19 → 2009-03-06 (+15d) | 2009-02-19 → 2009-03-06 (+15d) |  |  |  |
| 39 | Finish | 2009-02-19 → 2009-03-06 (+15d) | 2009-02-19 → 2009-03-06 (+15d) |  |  |  |
| 40 | Finish | 2009-02-19 → 2009-03-06 (+15d) | 2009-02-19 → 2009-03-06 (+15d) |  |  |  |

## Version 4 (saved 2009-01-02)

Last finish 2009-03-06 → 2009-02-26 (-8d).

Changed:

| ID | Task | Start | Finish | Duration | Complete | Total float | Other |
| --- | --- | --- | --- | --- | --- | --- | --- |
| 1 | **caGrid Portal 2.2** |  | 2009-03-06 → 2009-02-26 (-8d) | 84d → 77.6d | 16% → 20% |  |  |
| 8 | **Enhancements** |  | 2009-02-06 → 2009-02-13 (+7d) | 63.5d → 68.5d | 17% → 23% |  |  |
| 10 | Page Loading Performance Enhancements |  | 2008-11-26 A → 2008-12-04 A (+8d) | 10d → 15d |  |  |  |
| 11 | Upgrade to Latest Liferay | 2008-11-26 → 2008-12-04 (+8d) | 2008-12-04 → 2008-12-11 (+7d) |  |  |  |  |
| 12 | Tech Stack Update to Latest Spring and Hibernate | 2008-12-04 → 2008-12-11 (+7d) | 2008-12-11 → 2008-12-18 (+7d) |  |  |  |  |
| 13 | Refactor Build Process to Support IVY | 2008-12-11 → 2008-12-18 (+7d) | 2008-12-26 → 2009-01-05 (+10d) |  |  |  |  |
| 14 | Deployment Refactor to Support non-Root Context | 2008-12-26 → 2009-01-05 (+10d) | 2008-12-31 → 2009-01-08 (+8d) |  |  |  |  |
| 15 | Community Portlets: Use Cases and SOPs | 2008-12-31 → 2009-01-08 (+8d) | 2009-01-16 → 2009-01-23 (+7d) |  |  |  |  |
| 16 | Investigate Feasibility and Performance of WSRP | 2009-01-16 → 2009-01-23 (+7d) | 2009-01-30 → 2009-02-06 (+7d) |  |  |  |  |
| 17 | Support Usability Analysis | 2009-01-30 → 2009-02-06 (+7d) | 2009-02-06 → 2009-02-13 (+7d) |  |  |  |  |
| 18 | Finish | 2009-02-06 → 2009-02-13 (+7d) | 2009-02-06 → 2009-02-13 (+7d) |  |  |  |  |
| 19 | **Documentation** | 2009-02-06 → 2009-02-13 (+7d) | 2009-02-18 → 2009-02-25 (+7d) |  |  |  |  |
| 20 | Start | 2009-02-06 → 2009-02-13 (+7d) | 2009-02-06 → 2009-02-13 (+7d) |  |  |  |  |
| 21 | Update Admin Guide | 2009-02-06 → 2009-02-13 (+7d) | 2009-02-12 → 2009-02-19 (+7d) |  |  |  |  |
| 22 | Update Install Guide | 2009-02-06 → 2009-02-13 (+7d) | 2009-02-12 → 2009-02-19 (+7d) |  |  |  |  |
| 23 | Update User Guide | 2009-02-06 → 2009-02-13 (+7d) | 2009-02-18 → 2009-02-25 (+7d) |  |  |  |  |
| 24 | Release Notes | 2009-02-13 → 2009-02-20 (+7d) | 2009-02-13 → 2009-02-20 (+7d) |  |  |  |  |
| 25 | Finish | 2009-02-18 → 2009-02-25 (+7d) | 2009-02-18 → 2009-02-25 (+7d) |  |  |  |  |
| 26 | **QA** | 2009-02-06 A → 2008-11-05 A (-93d) | 2009-02-27 → 2009-02-13 (-14d) | 15d → 69d |  | 0d → 3.1d |  |
| 27 | Start | 2009-02-06 A → 2008-11-05 A (-93d) | 2009-02-06 A → 2008-11-05 A (-93d) |  |  |  | resources none → 2 |
| 28 | QA Iteration 1 (December) | 2009-02-06 A → 2008-12-08 A (-60d) | 2009-02-13 A → 2008-12-12 A (-63d) |  |  |  |  |
| 29 | QA Iteration 2 (January) | 2009-02-13 → 2009-01-12 (-32d) | 2009-02-20 → 2009-01-16 (-35d) |  |  | 0d → 18.1d | constraint none → start no earlier than 2009-01-12 |
| 30 | QA Iteration 3 (February) | 2009-02-20 → 2009-02-09 (-11d) | 2009-02-27 → 2009-02-13 (-14d) |  |  | 0d → 3.1d | constraint none → start no earlier than 2009-02-09 |
| 31 | Finish | 2009-02-27 → 2009-02-13 (-14d) | 2009-02-27 → 2009-02-13 (-14d) |  |  | 0d → 3.1d |  |
| 32 | **Deployment** | 2009-02-27 → 2009-02-13 (-14d) | 2009-03-06 → 2009-02-26 (-8d) | 5.5d → 8.6d |  |  |  |
| 33 | Start | 2009-02-27 → 2009-02-13 (-14d) | 2009-02-27 → 2009-02-13 (-14d) |  |  | 0d → 3.1d |  |
| 34 | Stage | 2009-02-27 → 2009-02-16 (-11d) | 2009-03-02 → 2009-02-16 (-14d) |  |  | 0d → 3.1d |  |
| 35 | App Scan | 2009-03-02 → 2009-02-17 (-13d) | 2009-03-05 → 2009-02-19 (-14d) |  |  | 0d → 3.1d |  |
| 36 | Production | 2009-03-05 → 2009-02-25 (-8d) | 2009-03-06 → 2009-02-26 (-8d) |  |  |  |  |
| 37 | Update gforge | 2009-02-27 → 2009-02-16 (-11d) | 2009-02-27 → 2009-02-16 (-11d) |  |  | 5d → 8.1d |  |
| 38 | Send Release Announcement | 2009-03-06 → 2009-02-26 (-8d) | 2009-03-06 → 2009-02-26 (-8d) |  |  |  |  |
| 39 | Finish | 2009-03-06 → 2009-02-26 (-8d) | 2009-03-06 → 2009-02-26 (-8d) |  |  |  |  |
| 40 | Finish | 2009-03-06 → 2009-02-26 (-8d) | 2009-03-06 → 2009-02-26 (-8d) |  |  |  |  |

## Version 5 (saved 2009-01-05)

Note of the change: *** empty log message ***

Last finish stays 2009-02-26.

Changed:

| ID | Task | Start | Complete |
| --- | --- | --- | --- |
| 1 | **caGrid Portal 2.2** |  | 20% → 27% |
| 8 | **Enhancements** |  | 23% → 34% |
| 13 | Refactor Build Process to Support IVY | 2008-12-18 A | 0% → 70% |

## Version 6 (saved 2009-01-26)

Last finish 2009-02-26 → 2009-02-23 (-3d). Complete tasks 5 → 8.

Added:

| ID | Task | Duration | Start | Finish | Predecessors | Resources |
| --- | --- | --- | --- | --- | --- | --- |
| 16 | Wireframes and Use Cases for Notification Framework | 2d | 2009-01-21 | 2009-01-23 | 15 | Manav Kher [90%] |

Removed: 14 Deployment Refactor to Support non-Root Context; 17 Support Usability Analysis

Changed:

| ID | Task | Start | Finish | Duration | Complete | Total float | Predecessors | Other |
| --- | --- | --- | --- | --- | --- | --- | --- | --- |
| 1 | **caGrid Portal 2.2** |  | 2009-02-26 → 2009-02-23 (-3d) | 77.6d → 74.5d | 27% → 48% |  |  |  |
| 8 | **Enhancements** |  | 2009-02-13 → 2009-01-23 (-21d) | 68.5d → 53.5d | 34% → 71% | 0d → -14d |  |  |
| 11 | Upgrade to Liferay 5.0.1 | 2008-12-04 A | 2008-12-11 A |  | 0% → 100% | 7d → none |  | was named Upgrade to Latest Liferay |
| 12 | Tech Stack Update to Latest Spring and Hibernate | 2008-12-11 A | 2008-12-18 A |  | 0% → 100% | 7d → none |  |  |
| 13 | Refactor Build Process to Support IVY |  | 2009-01-05 A |  | 70% → 100% | 0d → none |  |  |
| 14 | Community Portlets: Use Cases and SOPs | 2009-01-08 → 2009-01-05 (-3d) | 2009-01-23 → 2009-01-19 (-4d) | 11d → 10d |  | 0d → -14d | Deployment Refactor to Support non-Root Context → 13 |  |
| 15 | Investigate LOE for Sect 508 Compiance | 2009-01-23 → 2009-01-19 (-4d) | 2009-02-06 → 2009-01-21 (-16d) | 10d → 2d |  | 0d → -14d |  | was named Investigate Feasibility and Performance of WSRP |
| 17 | Finish | 2009-02-13 → 2009-01-23 (-21d) | 2009-02-13 → 2009-01-23 (-21d) |  |  | 0d → -14d | 10, 11, 12, 13, Deployment Refactor to Support non-Root Context, 14, 15, Support Usability Analysis → 10, 11, 12, 13, 14, 16 |  |
| 18 | **Documentation** | 2009-02-13 → 2009-02-09 (-4d) | 2009-02-25 → 2009-02-18 (-7d) |  |  | 0d → -24.5d |  |  |
| 19 | Start | 2009-02-13 → 2009-02-09 (-4d) | 2009-02-13 → 2009-02-09 (-4d) |  |  | 0d → -24.5d |  | constraint start no earlier than 2008-09-22 → start no earlier than 2009-02-09 |
| 20 | Update Admin Guide | 2009-02-13 → 2009-02-09 (-4d) | 2009-02-19 → 2009-02-12 (-7d) |  |  | 3.6d → -20.9d |  |  |
| 21 | Update Install Guide | 2009-02-13 → 2009-02-09 (-4d) | 2009-02-19 → 2009-02-13 (-6d) |  |  | 3.3d → -21.2d |  |  |
| 22 | Update User Guide | 2009-02-13 → 2009-02-09 (-4d) | 2009-02-25 → 2009-02-18 (-7d) |  |  | 0d → -24.5d |  |  |
| 23 | Release Notes | 2009-02-20 → 2009-02-16 (-4d) | 2009-02-20 → 2009-02-16 (-4d) |  |  | 2.1d → -22.4d |  |  |
| 24 | Finish | 2009-02-25 → 2009-02-18 (-7d) | 2009-02-25 → 2009-02-18 (-7d) |  |  | 0d → -24.5d |  |  |
| 31 | **Deployment** |  | 2009-02-26 → 2009-02-23 (-3d) | 8.6d → 5.5d |  |  |  |  |
| 35 | Production | 2009-02-25 → 2009-02-20 (-5d) | 2009-02-26 → 2009-02-20 (-6d) |  |  |  |  |  |
| 37 | Send Release Announcement | 2009-02-26 → 2009-02-23 (-3d) | 2009-02-26 → 2009-02-23 (-3d) |  |  |  |  |  |
| 38 | Finish | 2009-02-26 → 2009-02-23 (-3d) | 2009-02-26 → 2009-02-23 (-3d) |  |  |  |  |  |
| 39 | Finish | 2009-02-26 → 2009-02-23 (-3d) | 2009-02-26 → 2009-02-23 (-3d) |  |  |  |  |  |

## Version 7 (saved 2009-02-04)

Last finish stays 2009-02-23. Complete tasks 8 → 13.

Changed:

| ID | Task | Start | Finish | Duration | Complete | Total float | Predecessors |
| --- | --- | --- | --- | --- | --- | --- | --- |
| 1 | **caGrid Portal 2.2** |  |  |  | 48% → 59% |  |  |
| 2 | Start | 2008-11-05 A | 2008-11-05 A |  | 0% → 100% | 72.6d → none |  |
| 3 | **Bug Fixes** |  |  |  | 0% → 50% |  |  |
| 5 | training grid syncgts URLs need to be updated | 2008-11-05 A | 2008-11-05 A |  | 0% → 100% | 63d → none |  |
| 8 | **Enhancements** |  | 2009-01-23 → 2009-02-03 (+11d) | 53.5d → 61d | 71% → 80% | -14d → 0d |  |
| 14 | Community Portlets: Use Cases and SOPs | 2009-01-05 → 2008-11-05 (-61d) | 2009-01-19 → 2008-11-19 (-61d) |  |  | -14d → 29.5d | 13 → 9, 13 |
| 15 | Investigate LOE for Sect 508 Compiance | 2009-01-19 → 2008-11-05 A (-75d) | 2009-01-21 → 2008-11-06 A (-76d) |  | 0% → 100% | -14d → none | 14 → 9, 14 |
| 16 | Wireframes and Use Cases for Notification Framework | 2009-01-21 → 2009-02-01 A (+11d) | 2009-01-23 → 2009-02-03 A (+11d) |  | 0% → 100% | -14d → none | 15 → 9, 15 |
| 17 | Finish | 2009-01-23 → 2009-02-03 (+11d) | 2009-01-23 → 2009-02-03 (+11d) |  |  | -14d → -21.5d |  |
| 25 | **QA** |  |  |  | 33% → 67% |  |  |
| 28 | QA Iteration 2 (January) | 2009-01-12 A | 2009-01-16 A |  | 0% → 100% | 15d → none |  |
