# caGrid_Portal-2-1

How a schedule from MS Project changed from version to version. A marks actual dates.

## Version 1 (saved 2008-08-08)

| ID | WBS | Task | Duration | Start | Finish | Predecessors | Total float | Constraint |
| --- | --- | --- | --- | --- | --- | --- | --- | --- |
| 1 | 1.0 | **caGrid Portal 2.0.3** | 8.75d? | 2008-07-31 | 2008-08-12 |  | 0d |  |
| 2 |  | Start | 0d | 2008-07-31 | 2008-07-31 |  | 0d |  |
| 3 | 1.2 | **Bug Fixes** | 1d? | 2008-07-31 | 2008-07-31 | 2 | 0d |  |
| 4 |  | Start | 0d | 2008-07-31 | 2008-07-31 |  | 0d |  |
| 5 |  | RuntimeException thrown in Portal 2.0.2 | 1d? | 2008-07-31 | 2008-07-31 | 4 | 0d |  |
| 6 |  | Problem with RFE 12079 implementation for Portal | 1d? | 2008-07-31 | 2008-07-31 | 4 | 0d |  |
| 7 |  | Finish | 0d | 2008-07-31 | 2008-07-31 | 5, 6 | 0d |  |
| 8 | 1.3 | **Enhancements** | 1d? | 2008-07-31 | 2008-07-31 | 2 | 0d |  |
| 9 |  | Start | 0d | 2008-07-31 | 2008-07-31 |  | 0d |  |
| 10 |  | User developed Portlets | 1d? | 2008-07-31 | 2008-07-31 | 9 | 0d |  |
| 11 |  | Portal needs participant admin UI | 1d? | 2008-07-31 | 2008-07-31 | 9 | 0d |  |
| 12 |  | Provide interface to make participant information update requests. | 1d? | 2008-07-31 | 2008-07-31 | 9 | 0d |  |
| 13 |  | Portal EVS autocompleter should allow user to select where in the metadata the match shold occur. | 1d? | 2008-07-31 | 2008-07-31 | 9 | 0d |  |
| 14 |  | Finish | 0d | 2008-07-31 | 2008-07-31 | 12, 13, 11, 10 | 0d |  |
| 15 | 1.4 | **Documentation** | 2d | 2008-07-31 | 2008-08-04 |  | 9.25d |  |
| 16 |  | Start | 0d | 2008-07-31 | 2008-07-31 | 7, 14 | 9.25d |  |
| 17 |  | Documentation for User-developed Portlets | 2d | 2008-08-01 | 2008-08-04 | 16 | 9.25d |  |
| 18 |  | Update Admin Guide | 1.5d | 2008-08-01 | 2008-08-04 | 16 | 9.75d |  |
| 19 |  | Update Install Guide | 1.5d | 2008-08-01 | 2008-08-04 | 16 | 9.75d |  |
| 20 |  | Update User Guide | 1.5d | 2008-08-01 | 2008-08-04 | 16 | 9.75d |  |
| 21 |  | Release Notes | 0.5d | 2008-08-01 | 2008-08-01 | 16 | 10.75d |  |
| 22 |  | Finish | 0d | 2008-08-04 | 2008-08-04 | 18, 19, 20, 21, 17 | 9.25d |  |
| 23 | 1.5 | **QA** | 2.5d | 2008-07-31 | 2008-08-05 | 2 | 0d |  |
| 24 |  | Start | 0d | 2008-07-31 | 2008-07-31 | 7, 14 | 0d |  |
| 25 |  | Support QA during testing | 2.5d | 2008-08-01 | 2008-08-05 | 24 | 0d |  |
| 26 |  | Finish | 0d | 2008-08-05 | 2008-08-05 | 25 | 0d |  |
| 27 | 1.6 | **Deployment** | 5.25d | 2008-08-05 | 2008-08-12 | 2 | 0d |  |
| 28 |  | Start | 0d | 2008-08-05 | 2008-08-05 | 26 | 0d |  |
| 29 |  | Stage | 1d | 2008-08-05 | 2008-08-06 | 28 | 0d |  |
| 30 |  | App Scan | 3d | 2008-08-06 | 2008-08-11 | 29 | 0d |  |
| 31 |  | Production | 1d | 2008-08-11 | 2008-08-12 | 30 | 0d |  |
| 32 |  | Update Plome | 0.25d | 2008-08-05 | 2008-08-05 | 28 | 8.5d |  |
| 33 |  | Update gforge | 0.5d | 2008-08-05 | 2008-08-05 | 28 | 8.25d |  |
| 34 |  | Send Release Announcement | 0.25d | 2008-08-12 | 2008-08-12 | 31 | 0d |  |
| 35 |  | Finish | 0d | 2008-08-12 | 2008-08-12 | 34 | 0d |  |
| 36 |  | Finish | 0d | 2008-08-12 | 2008-08-12 | 35 | 0d |  |
| 37 | 2.0 | **caGrid Portal 2.0.4** | 10.25d? | 2008-08-01 | 2008-08-18 |  | 0d |  |
| 38 |  | Start | 0d | 2008-08-12 | 2008-08-12 | 36 | 0d | start no earlier than 2008-07-31 |
| 39 | 2.3 | **Bug Fixes** | 0d | 2008-08-12 | 2008-08-12 |  | 1d |  |
| 40 |  | Start | 0d | 2008-08-12 | 2008-08-12 | 38 | 1d |  |
| 41 |  | Finish | 0d | 2008-08-12 | 2008-08-12 | 40 | 1d |  |
| 42 | 2.4 | **Enhancements** | 1d? | 2008-08-12 | 2008-08-13 |  | 0d |  |
| 43 |  | Start | 0d | 2008-08-12 | 2008-08-12 | 38 | 0d |  |
| 44 |  | Service Diagnostics Portlet | 1d? | 2008-08-12 | 2008-08-13 | 43 | 0d |  |
| 45 |  | GAARDS UI Integration | 1d? | 2008-08-12 | 2008-08-13 | 43 | 0d |  |
| 46 |  | Federated Query Builder Enhancements | 1d? | 2008-08-12 | 2008-08-13 | 43 | 0d |  |
| 47 |  | Shared Query Enhancements | 1d? | 2008-08-12 | 2008-08-13 | 43 | 0d |  |
| 48 |  | Notification Framework | 1d? | 2008-08-12 | 2008-08-13 | 43 | 0d |  |
| 49 |  | Provide RSS feed for newly discovered services | 1d? | 2008-08-12 | 2008-08-13 | 43 | 0d |  |
| 50 |  | Workflow Integration | 1d? | 2008-08-12 | 2008-08-13 | 43 | 0d |  |
| 51 |  | Support Parameterized Queries | 1d? | 2008-08-12 | 2008-08-13 | 43 | 0d |  |
| 52 |  | WebSSO Integration | 1d? | 2008-08-12 | 2008-08-13 | 43 | 0d |  |
| 53 |  | address xss issues in portal input fields | 1d? | 2008-08-12 | 2008-08-13 | 43 | 0d |  |
| 54 |  | Finish | 0d | 2008-08-13 | 2008-08-13 | 44, 45, 46, 47, 48, 49, 50, 51, 53, 52 | 0d |  |
| 55 | 2.5 | **Documentation** | 1d? | 2008-08-13 | 2008-08-14 |  | 1.5d |  |
| 56 |  | Start | 0d | 2008-08-13 | 2008-08-13 | 41, 54 | 1.5d | start no earlier than 2008-07-31 |
| 57 |  | Update Admin Guide | 1d? | 2008-08-13 | 2008-08-14 | 56 | 1.5d | start no earlier than 2008-08-01 |
| 58 |  | Update Install Guide | 1d? | 2008-08-13 | 2008-08-14 | 56 | 1.5d | start no earlier than 2008-08-01 |
| 59 |  | Update User Guide | 1d? | 2008-08-13 | 2008-08-14 | 56 | 1.5d | start no earlier than 2008-08-01 |
| 60 |  | Release Notes | 1d? | 2008-08-13 | 2008-08-14 | 56 | 1.5d | start no earlier than 2008-08-01 |
| 61 |  | Finish | 0d | 2008-08-14 | 2008-08-14 | 57, 58, 59, 60 | 1.5d | start no earlier than 2008-08-01 |
| 62 | 2.6 | **QA** | 2.5d | 2008-08-13 | 2008-08-18 |  | 0d |  |
| 63 |  | Start | 0d | 2008-08-13 | 2008-08-13 | 41, 54 | 0d | start no earlier than 2008-07-31 |
| 64 |  | Support QA during testing | 2.5d | 2008-08-13 | 2008-08-18 | 63 | 0d | start no earlier than 2008-08-01 |
| 65 |  | Finish | 0d | 2008-08-18 | 2008-08-18 | 64 | 0d | start no earlier than 2008-08-01 |
| 66 | 2.7 | **Deployment** | 5.25d | 2008-08-01 | 2008-08-11 |  | 5d |  |
| 67 |  | Start | 0d | 2008-08-01 | 2008-08-01 |  | 5d | start no earlier than 2008-08-01 |
| 68 |  | Stage | 1d | 2008-08-04 | 2008-08-04 | 67 | 5d | start no earlier than 2008-08-04 |
| 69 |  | App Scan | 3d | 2008-08-05 | 2008-08-07 | 68 | 5d | start no earlier than 2008-08-05 |
| 70 |  | Production | 1d | 2008-08-08 | 2008-08-08 | 69 | 5d | start no earlier than 2008-08-06 |

| ID | Task | Duration | Start | Finish | Predecessors | Total float | Constraint |
| --- | --- | --- | --- | --- | --- | --- | --- |
| 71 | Update Plome | 0.25d | 2008-08-04 | 2008-08-04 | 67 | 10d | start no earlier than 2008-08-04 |
| 72 | Update gforge | 0.5d | 2008-08-04 | 2008-08-04 | 67 | 9.75d | start no earlier than 2008-08-04 |
| 73 | Send Release Announcement | 0.25d | 2008-08-11 | 2008-08-11 | 70 | 5d | start no earlier than 2008-08-07 |
| 74 | Finish | 0d | 2008-08-11 | 2008-08-11 | 73 | 5d | start no earlier than 2008-08-07 |
| 75 | Finish | 0d | 2008-08-11 | 2008-08-11 | 74 | 5d | start no earlier than 2008-08-07 |

## Version 2 (saved 2008-08-26)

Note of the change: updated resources

Last finish stays 2008-08-18.

Changed:

| ID | Task | Other |
| --- | --- | --- |
| 5 | RuntimeException thrown in Portal 2.0.2 | resources none → Manav Kher [90%] |
| 6 | Problem with RFE 12079 implementation for Portal | resources none → Manav Kher [90%] |
| 10 | User developed Portlets | resources none → Manav Kher [90%] |
| 11 | Portal needs participant admin UI | resources none → Manav Kher [90%] |
| 12 | Provide interface to make participant information update requests. | resources none → Manav Kher [90%] |
| 13 | Portal EVS autocompleter should allow user to select where in the metadata the match shold occur. | resources none → Manav Kher [90%] |
| 17 | Documentation for User-developed Portlets | resources none → Manav Kher [90%] |
| 18 | Update Admin Guide | resources none → Carolyln Klinger |
| 19 | Update Install Guide | resources none → Carolyln Klinger |
| 20 | Update User Guide | resources none → Carolyln Klinger |
| 21 | Release Notes | resources none → Manav Kher [90%] |
| 25 | Support QA during testing | resources none → Manav Kher [90%] |
| 29 | Stage | resources none → Systems |
| 30 | App Scan | resources none → Systems |
| 31 | Production | resources none → Systems |
| 32 | Update Plome | resources none → John Eisenschmidt |
| 33 | Update gforge | resources none → John Eisenschmidt; Manav Kher [90%] |
| 34 | Send Release Announcement | resources none → John Eisenschmidt |

## Version 3 (saved 2008-08-27)

Note of the change: updated during status meeting

Last finish stays 2008-08-18. Complete tasks 0 → 7.

Added:

| ID | Task | Duration | Start | Finish | Predecessors | Resources |
| --- | --- | --- | --- | --- | --- | --- |
| 11 | Admin UI for Banning/Unbanning | 1d? | 2008-07-31 A | 2008-07-31 A | 9 | Manav Kher [90%] |
| 12 | Service Diagnostic Portlet | 1d? | 2008-07-31 A | 2008-07-31 | 9 | Manav Kher [90%] |

Changed:

| ID | Task | Start | Finish | Complete | Total float |
| --- | --- | --- | --- | --- | --- |
| 1 | **caGrid Portal 2.0.3** | 2008-07-31 A |  | 0% → 20% | 0d → 3.5d |
| 2 | Start | 2008-07-31 A | 2008-07-31 A | 0% → 100% | 0d → none |
| 3 | **Bug Fixes** | 2008-07-31 A | 2008-07-31 A | 0% → 100% | 0d → none |
| 4 | Start | 2008-07-31 A | 2008-07-31 A | 0% → 100% | 0d → none |
| 5 | RuntimeException thrown in Portal 2.0.2 | 2008-07-31 A | 2008-07-31 A | 0% → 100% | 0d → none |
| 6 | Problem with RFE 12079 implementation for Portal | 2008-07-31 A | 2008-07-31 A | 0% → 100% | 0d → none |
| 7 | Finish | 2008-07-31 A | 2008-07-31 A | 0% → 100% | 0d → none |
| 8 | **Enhancements** | 2008-07-31 A |  | 0% → 73% | 0d → 11.25d |
| 9 | Start | 2008-07-31 A | 2008-07-31 A | 0% → 100% | 0d → none |
| 10 | User developed Portlets | 2008-07-31 A |  | 0% → 50% |  |

## Version 4 (saved 2008-08-27)

Note of the change: updated tasks and dates

Last finish 2008-08-18 → 2008-09-29 (+42d). Complete tasks 7 → 8.

Added:

| ID | Task | Duration | Start | Finish | Predecessors | Resources |
| --- | --- | --- | --- | --- | --- | --- |
| 11 | Discovery Results should show reasearch center information | 1d | 2008-07-31 A | 2008-07-31 A | 9 | Manav Kher [90%] |

Removed: 43 Service Diagnostics Portlet; 49 Workflow Integration; 51 WebSSO Integration

Changed:

| ID | Task | Start | Finish | Duration | Complete | Total float | Predecessors |
| --- | --- | --- | --- | --- | --- | --- | --- |
| 1 | **caGrid Portal 2.0.3** |  | 2008-08-12 → 2008-09-23 (+42d) | 8.75d? → 38.55d | 20% → 29% |  |  |
| 3 | **Bug Fixes** |  | 2008-07-31 A → 2008-08-06 A (+6d) | 1d? → 5d |  |  |  |
| 5 | RuntimeException thrown in Portal 2.0.2 |  | 2008-07-31 A → 2008-08-06 A (+6d) | 1d? → 5d |  |  |  |
| 6 | Problem with RFE 12079 implementation for Portal |  | 2008-07-31 A → 2008-08-06 A (+6d) | 1d? → 5d |  |  |  |
| 8 | **Enhancements** |  | 2008-07-31 → 2008-09-11 (+42d) | 1d? → 30.8d | 73% → 22% | 11.25d → 0d |  |
| 10 | User developed Portlets |  | 2008-07-31 → 2008-08-22 (+22d) | 1d? → 12d | 50% → 4% | 0d → 14.3d |  |
| 12 | Admin UI for Banning/Unbanning |  | 2008-07-31 A → 2008-08-06 A (+6d) | 1d? → 5d |  |  |  |
| 13 | Service Diagnostic Portlet |  | 2008-07-31 → 2008-09-11 (+42d) | 1d? → 15d | 70% → 5% | 11.25d → 0d |  |
| 14 | Finish | 2008-07-31 → 2008-09-11 (+42d) | 2008-07-31 → 2008-09-11 (+42d) |  |  |  | 10, 51, 52, 53 → 10, 11, 12, 13 |
| 15 | **Documentation** | 2008-07-31 → 2008-09-11 (+42d) | 2008-08-04 → 2008-09-19 (+46d) | 2d → 5.5d |  | 9.25d → 5.75d |  |
| 16 | Start | 2008-07-31 → 2008-09-11 (+42d) | 2008-07-31 → 2008-09-11 (+42d) |  |  | 9.25d → 5.75d |  |
| 17 | Documentation for User-developed Portlets | 2008-08-01 → 2008-09-16 (+46d) | 2008-08-04 → 2008-09-18 (+45d) |  |  | 9.25d → 6.25d |  |
| 18 | Update Admin Guide | 2008-08-01 → 2008-09-11 (+41d) | 2008-08-04 → 2008-09-15 (+42d) |  |  |  |  |
| 19 | Update Install Guide | 2008-08-01 → 2008-09-11 (+41d) | 2008-08-04 → 2008-09-16 (+43d) |  |  | 9.75d → 8.45d |  |
| 20 | Update User Guide | 2008-08-01 → 2008-09-11 (+41d) | 2008-08-04 → 2008-09-17 (+44d) |  |  | 9.75d → 7.15d |  |
| 21 | Release Notes | 2008-08-01 → 2008-09-18 (+48d) | 2008-08-01 → 2008-09-19 (+49d) |  |  | 10.75d → 5.75d |  |
| 22 | Finish | 2008-08-04 → 2008-09-19 (+46d) | 2008-08-04 → 2008-09-19 (+46d) |  |  | 9.25d → 5.75d |  |
| 23 | **QA** | 2008-07-31 → 2008-09-11 (+42d) | 2008-08-05 → 2008-09-16 (+42d) |  |  |  |  |
| 24 | Start | 2008-07-31 → 2008-09-11 (+42d) | 2008-07-31 → 2008-09-11 (+42d) |  |  |  |  |
| 25 | Support QA during testing | 2008-08-01 → 2008-09-11 (+41d) | 2008-08-05 → 2008-09-16 (+42d) |  |  |  |  |
| 26 | Finish | 2008-08-05 → 2008-09-16 (+42d) | 2008-08-05 → 2008-09-16 (+42d) |  |  |  |  |
| 27 | **Deployment** | 2008-08-05 → 2008-09-16 (+42d) | 2008-08-12 → 2008-09-23 (+42d) |  |  |  |  |
| 28 | Start | 2008-08-05 → 2008-09-16 (+42d) | 2008-08-05 → 2008-09-16 (+42d) |  |  |  |  |
| 29 | Stage | 2008-08-05 → 2008-09-16 (+42d) | 2008-08-06 → 2008-09-17 (+42d) |  |  |  |  |
| 30 | App Scan | 2008-08-06 → 2008-09-17 (+42d) | 2008-08-11 → 2008-09-22 (+42d) |  |  |  |  |
| 31 | Production | 2008-08-11 → 2008-09-22 (+42d) | 2008-08-12 → 2008-09-23 (+42d) |  |  |  |  |
| 32 | Update Plome | 2008-08-05 → 2008-09-16 (+42d) | 2008-08-05 → 2008-09-16 (+42d) |  |  |  |  |
| 33 | Update gforge | 2008-08-05 → 2008-09-16 (+42d) | 2008-08-05 → 2008-09-16 (+42d) |  |  |  |  |
| 34 | Send Release Announcement | 2008-08-12 → 2008-09-23 (+42d) | 2008-08-12 → 2008-09-23 (+42d) |  |  |  |  |
| 35 | Finish | 2008-08-12 → 2008-09-23 (+42d) | 2008-08-12 → 2008-09-23 (+42d) |  |  |  |  |
| 36 | Finish | 2008-08-12 → 2008-09-23 (+42d) | 2008-08-12 → 2008-09-23 (+42d) |  |  |  |  |
| 37 | **caGrid Portal 2.0.4** |  | 2008-08-18 → 2008-09-29 (+42d) | 10.25d? → 40.05d? |  |  |  |
| 38 | Start | 2008-08-12 → 2008-09-23 (+42d) | 2008-08-12 → 2008-09-23 (+42d) |  |  |  |  |
| 39 | **Bug Fixes** | 2008-08-12 → 2008-09-23 (+42d) | 2008-08-12 → 2008-09-23 (+42d) |  |  |  |  |
| 40 | Start | 2008-08-12 → 2008-09-23 (+42d) | 2008-08-12 → 2008-09-23 (+42d) |  |  |  |  |
| 41 | Finish | 2008-08-12 → 2008-09-23 (+42d) | 2008-08-12 → 2008-09-23 (+42d) |  |  |  |  |
| 42 | **Enhancements** | 2008-08-12 → 2008-09-23 (+42d) | 2008-08-13 → 2008-09-24 (+42d) |  |  |  |  |
| 43 | Start | 2008-08-12 → 2008-09-23 (+42d) | 2008-08-12 → 2008-09-23 (+42d) |  |  |  |  |
| 44 | GAARDS UI Integration | 2008-08-12 → 2008-09-23 (+42d) | 2008-08-13 → 2008-09-24 (+42d) |  |  |  |  |
| 45 | Federated Query Builder Enhancements | 2008-08-12 → 2008-09-23 (+42d) | 2008-08-13 → 2008-09-24 (+42d) |  |  |  |  |
| 46 | Shared Query Enhancements | 2008-08-12 → 2008-09-23 (+42d) | 2008-08-13 → 2008-09-24 (+42d) |  |  |  |  |
| 47 | Notification Framework | 2008-08-12 → 2008-09-23 (+42d) | 2008-08-13 → 2008-09-24 (+42d) |  |  |  |  |
| 48 | Provide RSS feed for newly discovered services | 2008-08-12 → 2008-09-23 (+42d) | 2008-08-13 → 2008-09-24 (+42d) |  |  |  |  |
| 49 | Support Parameterized Queries | 2008-08-12 → 2008-09-23 (+42d) | 2008-08-13 → 2008-09-24 (+42d) |  |  |  |  |
| 50 | address xss issues in portal input fields | 2008-08-12 → 2008-09-23 (+42d) | 2008-08-13 → 2008-09-24 (+42d) |  |  |  |  |
| 51 | Portal needs participant admin UI | 2008-07-31 → 2008-09-23 (+54d) | 2008-07-31 → 2008-09-24 (+55d) |  |  |  | 9 → 43 |
| 52 | Provide interface to make participant information update requests. | 2008-07-31 → 2008-09-23 (+54d) | 2008-07-31 → 2008-09-24 (+55d) |  |  |  | 9 → 43 |
| 53 | Portal EVS autocompleter should allow user to select where in the metadata the match shold occur. | 2008-07-31 → 2008-09-23 (+54d) | 2008-07-31 → 2008-09-24 (+55d) |  |  |  | 9 → 43 |
| 54 | Finish | 2008-08-13 → 2008-09-24 (+42d) | 2008-08-13 → 2008-09-24 (+42d) |  |  |  | Service Diagnostics Portlet, 44, 45, 46, 47, 48, Workflow Integration, 49, 50, WebSSO Integration → 44, 45, 46, 47, 48, 49, 50, 51, 52, 53 |
| 55 | **Documentation** | 2008-08-13 → 2008-09-24 (+42d) | 2008-08-14 → 2008-09-25 (+42d) |  |  |  |  |
| 56 | Start | 2008-08-13 → 2008-09-24 (+42d) | 2008-08-13 → 2008-09-24 (+42d) |  |  |  |  |
| 57 | Update Admin Guide | 2008-08-13 → 2008-09-24 (+42d) | 2008-08-14 → 2008-09-25 (+42d) |  |  |  |  |
| 58 | Update Install Guide | 2008-08-13 → 2008-09-24 (+42d) | 2008-08-14 → 2008-09-25 (+42d) |  |  |  |  |
| 59 | Update User Guide | 2008-08-13 → 2008-09-24 (+42d) | 2008-08-14 → 2008-09-25 (+42d) |  |  |  |  |
| 60 | Release Notes | 2008-08-13 → 2008-09-24 (+42d) | 2008-08-14 → 2008-09-25 (+42d) |  |  |  |  |
| 61 | Finish | 2008-08-14 → 2008-09-25 (+42d) | 2008-08-14 → 2008-09-25 (+42d) |  |  |  |  |
| 62 | **QA** | 2008-08-13 → 2008-09-24 (+42d) | 2008-08-18 → 2008-09-29 (+42d) |  |  |  |  |
| 63 | Start | 2008-08-13 → 2008-09-24 (+42d) | 2008-08-13 → 2008-09-24 (+42d) |  |  |  |  |
| 64 | Support QA during testing | 2008-08-13 → 2008-09-24 (+42d) | 2008-08-18 → 2008-09-29 (+42d) |  |  |  |  |
| 65 | Finish | 2008-08-18 → 2008-09-29 (+42d) | 2008-08-18 → 2008-09-29 (+42d) |  |  |  |  |

## Version 5 (saved 2008-09-09)

Last finish 2008-09-29 → 2008-10-01 (+2d). Complete tasks 8 → 9.

Added:

| ID | Task | Duration | Start | Finish | Predecessors | Resources |
| --- | --- | --- | --- | --- | --- | --- |
| 7 | Portal is overloading GME service | 1d | 2008-07-31 A | 2008-07-31 A | 4 | Manav Kher [90%] |
| 15 | Aggregation Performance Enhancements Design | 2d | 2008-09-11 A | 2008-09-15 A | 14 | Manav Kher [90%] |

Changed:

| ID | Task | Start | Finish | Duration | Complete | Total float | Predecessors |
| --- | --- | --- | --- | --- | --- | --- | --- |
| 1 | **caGrid Portal 2.0.3** |  | 2008-09-23 → 2008-09-25 (+2d) | 38.55d → 40.55d | 29% → 59% |  |  |
| 3 | **Bug Fixes** |  | 2008-08-06 A → 2008-08-06 |  | 100% → 99% | none → 27.8d |  |
| 8 | Finish | 2008-07-31 A → 2008-08-06 (+6d) | 2008-07-31 A → 2008-08-06 (+6d) |  | 100% → 0% | none → 27.8d | 5, 6 → 5, 7, 6 |
| 9 | **Enhancements** |  | 2008-09-11 → 2008-09-15 (+4d) | 30.8d → 32.8d | 22% → 72% |  |  |
| 11 | User developed Portlets |  |  |  | 4% → 50% | 14.3d → 16.3d |  |
| 14 | Service Diagnostic Portlet |  |  |  | 5% → 75% | 0d → 2d |  |
| 16 | Finish | 2008-09-11 → 2008-09-15 (+4d) | 2008-09-11 → 2008-09-15 (+4d) |  |  |  | 11, 12, 13, 14 → 11, 12, 13, 15, 14 |
| 17 | **Documentation** | 2008-09-11 → 2008-09-15 (+4d) | 2008-09-19 → 2008-09-23 (+4d) | 5.5d → 6.2d |  | 5.75d → 5.05d |  |
| 18 | Start | 2008-09-11 → 2008-09-15 (+4d) | 2008-09-11 → 2008-09-15 (+4d) |  |  |  |  |
| 19 | Documentation for User-developed Portlets | 2008-09-16 → 2008-09-22 (+6d) | 2008-09-18 → 2008-09-23 (+5d) |  |  | 6.25d → 5.05d |  |
| 20 | Update Admin Guide | 2008-09-11 → 2008-09-15 (+4d) | 2008-09-15 → 2008-09-17 (+2d) |  |  |  |  |
| 21 | Update Install Guide | 2008-09-11 → 2008-09-15 (+4d) | 2008-09-16 → 2008-09-18 (+2d) |  |  |  |  |
| 22 | Update User Guide | 2008-09-11 → 2008-09-15 (+4d) | 2008-09-17 → 2008-09-19 (+2d) |  |  |  |  |
| 23 | Release Notes | 2008-09-18 → 2008-09-22 (+4d) | 2008-09-19 → 2008-09-23 (+4d) |  |  |  |  |
| 24 | Finish | 2008-09-19 → 2008-09-23 (+4d) | 2008-09-19 → 2008-09-23 (+4d) |  |  | 5.75d → 5.05d |  |
| 25 | **QA** | 2008-09-11 → 2008-09-15 (+4d) | 2008-09-16 → 2008-09-18 (+2d) |  |  |  |  |
| 26 | Start | 2008-09-11 → 2008-09-15 (+4d) | 2008-09-11 → 2008-09-15 (+4d) |  |  |  |  |
| 27 | Support QA during testing | 2008-09-11 → 2008-09-15 (+4d) | 2008-09-16 → 2008-09-18 (+2d) |  |  |  |  |
| 28 | Finish | 2008-09-16 → 2008-09-18 (+2d) | 2008-09-16 → 2008-09-18 (+2d) |  |  |  |  |
| 29 | **Deployment** | 2008-09-16 → 2008-09-18 (+2d) | 2008-09-23 → 2008-09-25 (+2d) |  |  |  |  |
| 30 | Start | 2008-09-16 → 2008-09-18 (+2d) | 2008-09-16 → 2008-09-18 (+2d) |  |  |  |  |
| 31 | Stage | 2008-09-16 → 2008-09-18 (+2d) | 2008-09-17 → 2008-09-19 (+2d) |  |  |  |  |
| 32 | App Scan | 2008-09-17 → 2008-09-19 (+2d) | 2008-09-22 → 2008-09-24 (+2d) |  |  |  |  |
| 33 | Production | 2008-09-22 → 2008-09-24 (+2d) | 2008-09-23 → 2008-09-25 (+2d) |  |  |  |  |
| 34 | Update Plome | 2008-09-16 → 2008-09-18 (+2d) | 2008-09-16 → 2008-09-18 (+2d) |  |  |  |  |
| 35 | Update gforge | 2008-09-16 → 2008-09-18 (+2d) | 2008-09-16 → 2008-09-18 (+2d) |  |  |  |  |
| 36 | Send Release Announcement | 2008-09-23 → 2008-09-25 (+2d) | 2008-09-23 → 2008-09-25 (+2d) |  |  |  |  |
| 37 | Finish | 2008-09-23 → 2008-09-25 (+2d) | 2008-09-23 → 2008-09-25 (+2d) |  |  |  |  |
| 38 | Finish | 2008-09-23 → 2008-09-25 (+2d) | 2008-09-23 → 2008-09-25 (+2d) |  |  |  |  |
| 39 | **caGrid Portal 2.0.4** |  | 2008-09-29 → 2008-10-01 (+2d) | 40.05d? → 42.05d? |  |  |  |
| 40 | Start | 2008-09-23 → 2008-09-25 (+2d) | 2008-09-23 → 2008-09-25 (+2d) |  |  |  |  |
| 41 | **Bug Fixes** | 2008-09-23 → 2008-09-25 (+2d) | 2008-09-23 → 2008-09-25 (+2d) |  |  |  |  |
| 42 | Start | 2008-09-23 → 2008-09-25 (+2d) | 2008-09-23 → 2008-09-25 (+2d) |  |  |  |  |
| 43 | Finish | 2008-09-23 → 2008-09-25 (+2d) | 2008-09-23 → 2008-09-25 (+2d) |  |  |  |  |
| 44 | **Enhancements** | 2008-09-23 → 2008-09-25 (+2d) | 2008-09-24 → 2008-09-26 (+2d) |  |  |  |  |
| 45 | Start | 2008-09-23 → 2008-09-25 (+2d) | 2008-09-23 → 2008-09-25 (+2d) |  |  |  |  |
| 46 | GAARDS UI Integration | 2008-09-23 → 2008-09-25 (+2d) | 2008-09-24 → 2008-09-26 (+2d) |  |  |  |  |
| 47 | Federated Query Builder Enhancements | 2008-09-23 → 2008-09-25 (+2d) | 2008-09-24 → 2008-09-26 (+2d) |  |  |  |  |
| 48 | Shared Query Enhancements | 2008-09-23 → 2008-09-25 (+2d) | 2008-09-24 → 2008-09-26 (+2d) |  |  |  |  |
| 49 | Notification Framework | 2008-09-23 → 2008-09-25 (+2d) | 2008-09-24 → 2008-09-26 (+2d) |  |  |  |  |
| 50 | Provide RSS feed for newly discovered services | 2008-09-23 → 2008-09-25 (+2d) | 2008-09-24 → 2008-09-26 (+2d) |  |  |  |  |
| 51 | Support Parameterized Queries | 2008-09-23 → 2008-09-25 (+2d) | 2008-09-24 → 2008-09-26 (+2d) |  |  |  |  |
| 52 | address xss issues in portal input fields | 2008-09-23 → 2008-09-25 (+2d) | 2008-09-24 → 2008-09-26 (+2d) |  |  |  |  |
| 53 | Portal needs participant admin UI | 2008-09-23 → 2008-09-25 (+2d) | 2008-09-24 → 2008-09-26 (+2d) |  |  |  |  |
| 54 | Provide interface to make participant information update requests. | 2008-09-23 → 2008-09-25 (+2d) | 2008-09-24 → 2008-09-26 (+2d) |  |  |  |  |
| 55 | Portal EVS autocompleter should allow user to select where in the metadata the match shold occur. | 2008-09-23 → 2008-09-25 (+2d) | 2008-09-24 → 2008-09-26 (+2d) |  |  |  |  |
| 56 | Finish | 2008-09-24 → 2008-09-26 (+2d) | 2008-09-24 → 2008-09-26 (+2d) |  |  |  |  |
| 57 | **Documentation** | 2008-09-24 → 2008-09-26 (+2d) | 2008-09-25 → 2008-09-29 (+4d) |  |  |  |  |
| 58 | Start | 2008-09-24 → 2008-09-26 (+2d) | 2008-09-24 → 2008-09-26 (+2d) |  |  |  |  |
| 59 | Update Admin Guide | 2008-09-24 → 2008-09-26 (+2d) | 2008-09-25 → 2008-09-29 (+4d) |  |  |  |  |
| 60 | Update Install Guide | 2008-09-24 → 2008-09-26 (+2d) | 2008-09-25 → 2008-09-29 (+4d) |  |  |  |  |
| 61 | Update User Guide | 2008-09-24 → 2008-09-26 (+2d) | 2008-09-25 → 2008-09-29 (+4d) |  |  |  |  |
| 62 | Release Notes | 2008-09-24 → 2008-09-26 (+2d) | 2008-09-25 → 2008-09-29 (+4d) |  |  |  |  |
| 63 | Finish | 2008-09-25 → 2008-09-29 (+4d) | 2008-09-25 → 2008-09-29 (+4d) |  |  |  |  |
| 64 | **QA** | 2008-09-24 → 2008-09-26 (+2d) | 2008-09-29 → 2008-10-01 (+2d) |  |  |  |  |
| 65 | Start | 2008-09-24 → 2008-09-26 (+2d) | 2008-09-24 → 2008-09-26 (+2d) |  |  |  |  |
| 66 | Support QA during testing | 2008-09-24 → 2008-09-26 (+2d) | 2008-09-29 → 2008-10-01 (+2d) |  |  |  |  |
| 67 | Finish | 2008-09-29 → 2008-10-01 (+2d) | 2008-09-29 → 2008-10-01 (+2d) |  |  |  |  |

## Version 6 (saved 2008-09-10)

Note of the change: updated schedule

Last finish 2008-10-01 → 2008-10-23 (+22d). Complete tasks 9 → 10.

Changed:

| ID | Task | Start | Finish | Duration | Complete | Total float | Other |
| --- | --- | --- | --- | --- | --- | --- | --- |
| 1 | **caGrid Portal 2.0.3 (hence forth 2.1)** |  | 2008-09-25 → 2008-10-20 (+25d) | 40.55d → 57.25d | 59% → 66% |  | was named caGrid Portal 2.0.3 |
| 9 | **Enhancements** |  |  |  | 72% → 89% | 0d → 14.2d |  |
| 11 | User developed Portlets |  | 2008-08-22 A |  | 50% → 100% | 16.3d → none |  |
| 17 | **Documentation** | 2008-09-15 → 2008-09-22 (+7d) | 2008-09-23 → 2008-09-30 (+7d) | 6.2d → 7d |  | 5.05d → 16.75d |  |
| 18 | Start | 2008-09-15 → 2008-09-22 (+7d) | 2008-09-15 → 2008-09-22 (+7d) |  |  | 5.75d → 18.25d | constraint none → start no earlier than 2008-09-22 |
| 19 | Documentation for User-developed Portlets | 2008-09-22 → 2008-09-29 (+7d) | 2008-09-23 → 2008-09-30 (+7d) |  |  | 5.05d → 16.75d |  |
| 20 | Update Admin Guide | 2008-09-15 → 2008-09-22 (+7d) | 2008-09-17 → 2008-09-23 (+6d) |  |  | 9.75d → 22.25d |  |
| 21 | Update Install Guide | 2008-09-15 → 2008-09-22 (+7d) | 2008-09-18 → 2008-09-24 (+6d) |  |  | 8.45d → 20.95d |  |
| 22 | Update User Guide | 2008-09-15 → 2008-09-22 (+7d) | 2008-09-19 → 2008-09-26 (+7d) |  |  | 7.15d → 19.65d |  |
| 23 | Release Notes | 2008-09-22 → 2008-09-29 (+7d) | 2008-09-23 → 2008-09-29 (+6d) |  |  | 5.75d → 18.25d |  |
| 24 | Finish | 2008-09-23 → 2008-09-30 (+7d) | 2008-09-23 → 2008-09-30 (+7d) |  |  | 5.05d → 16.75d |  |
| 25 | **QA** | 2008-09-15 → 2008-09-29 (+14d) | 2008-09-18 → 2008-10-03 (+15d) | 2.5d → 5d |  | 0d → 5d |  |
| 26 | Start | 2008-09-15 → 2008-09-29 (+14d) | 2008-09-15 → 2008-09-29 (+14d) |  |  | 0d → 5d | constraint none → start no earlier than 2008-09-29 |
| 27 | Support QA during testing | 2008-09-15 → 2008-09-29 (+14d) | 2008-09-18 → 2008-10-03 (+15d) | 2.5d → 5d |  | 0d → 5d |  |
| 28 | Finish | 2008-09-18 → 2008-10-03 (+15d) | 2008-09-18 → 2008-10-03 (+15d) |  |  | 0d → 5d |  |
| 29 | **Deployment** | 2008-09-18 → 2008-10-13 (+25d) | 2008-09-25 → 2008-10-20 (+25d) |  |  |  |  |
| 30 | Start | 2008-09-18 → 2008-10-13 (+25d) | 2008-09-18 → 2008-10-13 (+25d) |  |  |  | constraint none → start no earlier than 2008-10-13 |
| 31 | Stage | 2008-09-18 → 2008-10-13 (+25d) | 2008-09-19 → 2008-10-13 (+24d) |  |  |  |  |
| 32 | App Scan | 2008-09-19 → 2008-10-14 (+25d) | 2008-09-24 → 2008-10-16 (+22d) |  |  |  |  |
| 33 | Production | 2008-09-24 → 2008-10-17 (+23d) | 2008-09-25 → 2008-10-17 (+22d) |  |  |  |  |
| 34 | Update Plome | 2008-09-18 → 2008-10-13 (+25d) | 2008-09-18 → 2008-10-13 (+25d) |  |  |  |  |
| 35 | Update gforge | 2008-09-18 → 2008-10-13 (+25d) | 2008-09-18 → 2008-10-13 (+25d) |  |  |  |  |
| 36 | Send Release Announcement | 2008-09-25 → 2008-10-20 (+25d) | 2008-09-25 → 2008-10-20 (+25d) |  |  |  |  |
| 37 | Finish | 2008-09-25 → 2008-10-20 (+25d) | 2008-09-25 → 2008-10-20 (+25d) |  |  |  |  |
| 38 | Finish | 2008-09-25 → 2008-10-20 (+25d) | 2008-09-25 → 2008-10-20 (+25d) |  |  |  |  |
| 39 | **caGrid Portal 2.0.4** |  | 2008-10-01 → 2008-10-23 (+22d) | 42.05d? → 58.75d? |  |  |  |
| 40 | Start | 2008-09-25 → 2008-10-20 (+25d) | 2008-09-25 → 2008-10-20 (+25d) |  |  |  |  |
| 41 | **Bug Fixes** | 2008-09-25 → 2008-10-20 (+25d) | 2008-09-25 → 2008-10-20 (+25d) |  |  |  |  |
| 42 | Start | 2008-09-25 → 2008-10-20 (+25d) | 2008-09-25 → 2008-10-20 (+25d) |  |  |  |  |
| 43 | Finish | 2008-09-25 → 2008-10-20 (+25d) | 2008-09-25 → 2008-10-20 (+25d) |  |  |  |  |
| 44 | **Enhancements** | 2008-09-25 → 2008-10-20 (+25d) | 2008-09-26 → 2008-10-21 (+25d) |  |  |  |  |
| 45 | Start | 2008-09-25 → 2008-10-20 (+25d) | 2008-09-25 → 2008-10-20 (+25d) |  |  |  |  |
| 46 | GAARDS UI Integration | 2008-09-25 → 2008-10-20 (+25d) | 2008-09-26 → 2008-10-21 (+25d) |  |  |  |  |
| 47 | Federated Query Builder Enhancements | 2008-09-25 → 2008-10-20 (+25d) | 2008-09-26 → 2008-10-21 (+25d) |  |  |  |  |
| 48 | Shared Query Enhancements | 2008-09-25 → 2008-10-20 (+25d) | 2008-09-26 → 2008-10-21 (+25d) |  |  |  |  |
| 49 | Notification Framework | 2008-09-25 → 2008-10-20 (+25d) | 2008-09-26 → 2008-10-21 (+25d) |  |  |  |  |
| 50 | Provide RSS feed for newly discovered services | 2008-09-25 → 2008-10-20 (+25d) | 2008-09-26 → 2008-10-21 (+25d) |  |  |  |  |
| 51 | Support Parameterized Queries | 2008-09-25 → 2008-10-20 (+25d) | 2008-09-26 → 2008-10-21 (+25d) |  |  |  |  |
| 52 | address xss issues in portal input fields | 2008-09-25 → 2008-10-20 (+25d) | 2008-09-26 → 2008-10-21 (+25d) |  |  |  |  |
| 53 | Portal needs participant admin UI | 2008-09-25 → 2008-10-20 (+25d) | 2008-09-26 → 2008-10-21 (+25d) |  |  |  |  |
| 54 | Provide interface to make participant information update requests. | 2008-09-25 → 2008-10-20 (+25d) | 2008-09-26 → 2008-10-21 (+25d) |  |  |  |  |
| 55 | Portal EVS autocompleter should allow user to select where in the metadata the match shold occur. | 2008-09-25 → 2008-10-20 (+25d) | 2008-09-26 → 2008-10-21 (+25d) |  |  |  |  |
| 56 | Finish | 2008-09-26 → 2008-10-21 (+25d) | 2008-09-26 → 2008-10-21 (+25d) |  |  |  |  |
| 57 | **Documentation** | 2008-09-26 → 2008-10-21 (+25d) | 2008-09-29 → 2008-10-22 (+23d) |  |  |  |  |
| 58 | Start | 2008-09-26 → 2008-10-21 (+25d) | 2008-09-26 → 2008-10-21 (+25d) |  |  |  |  |
| 59 | Update Admin Guide | 2008-09-26 → 2008-10-21 (+25d) | 2008-09-29 → 2008-10-22 (+23d) |  |  |  |  |
| 60 | Update Install Guide | 2008-09-26 → 2008-10-21 (+25d) | 2008-09-29 → 2008-10-22 (+23d) |  |  |  |  |
| 61 | Update User Guide | 2008-09-26 → 2008-10-21 (+25d) | 2008-09-29 → 2008-10-22 (+23d) |  |  |  |  |
| 62 | Release Notes | 2008-09-26 → 2008-10-21 (+25d) | 2008-09-29 → 2008-10-22 (+23d) |  |  |  |  |
| 63 | Finish | 2008-09-29 → 2008-10-22 (+23d) | 2008-09-29 → 2008-10-22 (+23d) |  |  |  |  |
| 64 | **QA** | 2008-09-26 → 2008-10-21 (+25d) | 2008-10-01 → 2008-10-23 (+22d) |  |  |  |  |
| 65 | Start | 2008-09-26 → 2008-10-21 (+25d) | 2008-09-26 → 2008-10-21 (+25d) |  |  |  |  |
| 66 | Support QA during testing | 2008-09-26 → 2008-10-21 (+25d) | 2008-10-01 → 2008-10-23 (+22d) |  |  |  |  |
| 67 | Finish | 2008-10-01 → 2008-10-23 (+22d) | 2008-10-01 → 2008-10-23 (+22d) |  |  |  |  |

## Version 7 (saved 2008-10-06)

Last finish stays 2008-10-23. Complete tasks 10 → 23.

Added:

| ID | Task | Duration | Start | Finish | Predecessors | Resources |
| --- | --- | --- | --- | --- | --- | --- |
| 8 | ConceptHierarchyNode.description field length is too short | 1d | 2008-08-01 A | 2008-08-01 A | 7 | Manav Kher [90%] |
| 9 | Simple discovery for CDE returns invalid results | 1d | 2008-08-04 A | 2008-08-04 A | 8 | Manav Kher [90%] |
| 10 | Service details Portlet caches information | 1d | 2008-08-05 A | 2008-08-05 A | 9 | Manav Kher [90%] |
| 11 | DCQL Aggregate query UI is not showing all services as targets | 1d | 2008-08-06 A | 2008-08-06 A | 10 | Manav Kher [90%] |
| 20 | Service Status should be highlighted for non Active Services in the Portal | 1d | 2008-09-15 A | 2008-09-16 A | 19 | Manav Kher [90%] |
| 21 | Better Sorting/Visibility of Active and Inactive Services in the Portal | 1d | 2008-09-16 A | 2008-09-17 A | 20 | Manav Kher [90%] |
| 22 | Display Portal Version Number | 1d | 2008-09-17 A | 2008-09-18 A | 21 | Manav Kher [90%] |
| 23 | Portal should by default build against the training tier | 1d | 2008-09-18 A | 2008-09-19 A | 22 | Manav Kher [90%] |

Changed:

| ID | Task | Start | Finish | Duration | Complete | Total float | Predecessors |
| --- | --- | --- | --- | --- | --- | --- | --- |
| 1 | **caGrid Portal 2.0.3 (hence forth 2.1)** |  |  |  | 66% → 87% |  |  |
| 12 | Finish |  |  |  |  | 27.8d → 55.75d | 5, 7, 6 → 5, 6, 11, 7, 8, 9, 10 |
| 13 | **Enhancements** |  | 2008-09-15 → 2008-09-19 (+4d) | 32.8d → 36.8d | 89% → 99% | 14.2d → 23.95d |  |
| 18 | Service Diagnostic Portlet |  | 2008-09-11 A |  | 75% → 100% | 2d → none |  |
| 24 | Finish | 2008-09-15 → 2008-09-19 (+4d) | 2008-09-15 → 2008-09-19 (+4d) |  |  | 14.2d → 23.95d | 15, 16, 17, 19, 18 → 15, 16, 17, 18, 19, 20, 21, 23, 22 |
| 25 | **Documentation** | 2008-09-22 A | 2008-09-30 → 2008-10-01 (+1d) | 7d → 7.6d | 0% → 86% | 16.75d → 16.15d |  |
| 26 | Start | 2008-09-22 A | 2008-09-22 A |  | 0% → 100% | 18.25d → none |  |
| 27 | Documentation for User-developed Portlets | 2008-09-29 A | 2008-09-30 A |  | 0% → 100% | 16.75d → none |  |
| 28 | Update Admin Guide | 2008-09-22 A | 2008-09-23 → 2008-09-25 (+2d) | 1.5d → 4d | 0% → 75% | 22.25d → 19.75d |  |
| 29 | Update Install Guide | 2008-09-22 A | 2008-09-24 → 2008-09-26 (+2d) | 1.5d → 3d | 0% → 75% | 20.95d → 19.45d |  |
| 30 | Update User Guide | 2008-09-22 A | 2008-09-26 → 2008-10-01 (+5d) | 1.5d → 5d | 0% → 95% | 19.65d → 16.15d |  |
| 31 | Release Notes | 2008-09-29 A | 2008-09-29 A |  | 0% → 100% | 18.25d → none |  |
| 32 | Finish | 2008-09-30 → 2008-10-01 (+1d) | 2008-09-30 → 2008-10-01 (+1d) |  |  | 16.75d → 16.15d |  |
| 33 | **QA** | 2008-09-29 A |  |  | 0% → 50% |  |  |
| 34 | Start | 2008-09-29 A | 2008-09-29 A |  | 0% → 100% | 5d → none |  |
| 35 | Support QA during testing | 2008-09-29 A |  |  | 0% → 50% |  |  |

## Version 8 (saved 2008-10-23)

Last finish stays 2008-10-23. Complete tasks 23 → 33.

Removed: 42 Update Plome

Changed:

| ID | Task | Start | Finish | Complete | Total float |
| --- | --- | --- | --- | --- | --- |
| 1 | **caGrid Portal 2.0.3 (hence forth 2.1)** |  |  | 87% → 94% |  |
| 3 | **Bug Fixes** |  | 2008-08-06 A | 99% → 100% | 55.75d → none |
| 12 | Finish | 2008-08-06 A | 2008-08-06 A | 0% → 100% | 55.75d → none |
| 13 | **Enhancements** |  | 2008-09-19 A | 99% → 100% | 23.95d → none |
| 24 | Finish | 2008-09-19 A | 2008-09-19 A | 0% → 100% | 23.95d → none |
| 25 | **Documentation** |  | 2008-10-01 A | 86% → 100% | 16.15d → none |
| 28 | Update Admin Guide |  | 2008-09-25 A | 75% → 100% | 19.75d → none |
| 29 | Update Install Guide |  | 2008-09-26 A | 75% → 100% | 19.45d → none |
| 30 | Update User Guide |  | 2008-10-01 A | 95% → 100% | 16.15d → none |
| 32 | Finish | 2008-10-01 A | 2008-10-01 A | 0% → 100% | 16.15d → none |
| 33 | **QA** |  | 2008-10-03 A | 50% → 100% | 5d → none |
| 35 | Support QA during testing |  | 2008-10-03 A | 50% → 100% | 5d → none |
| 36 | Finish | 2008-10-03 A | 2008-10-03 A | 0% → 100% | 5d → none |
| 37 | **Deployment** | 2008-10-13 A |  | 0% → 24% | 0d → 3.5d |
| 38 | Start | 2008-10-13 A | 2008-10-13 A | 0% → 100% | 0d → none |
| 39 | Stage | 2008-10-13 A | 2008-10-13 A | 0% → 100% | 0d → none |
| 42 | Update gforge | 2008-10-13 A |  | 0% → 75% |  |

## Version 9 (saved 2008-11-06)

Note of the change: updated/finalized/closed out

Last finish 2008-10-23 → 2008-10-20 (-3d). Complete tasks 33 → 39.

Removed: 46 caGrid Portal 2.0.4; 47 Start; 48 Bug Fixes; 49 Start; 50 Finish; 51 Enhancements; 52 Start; 53 GAARDS UI Integration; 54 Federated Query Builder Enhancements; 55 Shared Query Enhancements; 56 Notification Framework; 57 Provide RSS feed for newly discovered services; 58 Support Parameterized Queries; 59 address xss issues in portal input fields; 60 Portal needs participant admin UI; 61 Provide interface to make participant information update requests.; 62 Portal EVS autocompleter should allow user to select where in the metadata the match shold occur.; 63 Finish; 64 Documentation; 65 Start; 66 Update Admin Guide; 67 Update Install Guide; 68 Update User Guide; 69 Release Notes; 70 Finish; 71 QA; 72 Start; 73 Support QA during testing; 74 Finish; 75 Deployment; 76 Start; 77 Stage; 78 App Scan; 79 Production; 80 Update Plome; 81 Update gforge; 82 Send Release Announcement; 83 Finish; 84 Finish

Changed:

| ID | Task | Start | Finish | Complete | Total float |
| --- | --- | --- | --- | --- | --- |
| 1 | **caGrid Portal 2.0.3 (hence forth 2.1)** |  | 2008-10-20 A | 94% → 100% | 3.5d → none |
| 37 | **Deployment** |  | 2008-10-20 A | 24% → 100% | 3.5d → none |
| 40 | App Scan | 2008-10-14 A | 2008-10-16 A | 0% → 100% | 0d → none |
| 41 | Production | 2008-10-17 A | 2008-10-17 A | 0% → 100% | 0d → none |
| 42 | Update gforge |  | 2008-10-13 A | 75% → 100% | 8.25d → none |
| 43 | Send Release Announcement | 2008-10-20 A | 2008-10-20 A | 0% → 100% | 0d → none |
| 44 | Finish | 2008-10-20 A | 2008-10-20 A | 0% → 100% | 0d → none |
| 45 | Finish | 2008-10-20 A | 2008-10-20 A | 0% → 100% | 0d → none |
